# ODS02_IIWAKAI: CONSTRUCCIÓN DE PLATAFORMAS Y CIMENTACIONES DE AEROGENERADORES DEL PARQUE EÓLICO WINDPESHI.

Schedule from MS Project, 2026-07-15 to 2027-09-07, status date 2026-08-28, costs in $, A marks actual dates.

## Calendars

- IIWAKAI: Mon 09:00-13:00, 15:00-19:00; Tue-Sat 07:00-12:00, 13:00-17:00; Sun off. Exceptions (off unless hours are given): 2026-07-20, 2026-08-07, 2026-08-17, 2026-10-12, 2026-11-02, 2026-11-16, 2026-12-08, 2026-12-25, 2027-01-01, 2027-01-11, 2027-03-22, 2027-03-25 to 2027-03-26, 2027-05-10, 2027-05-31, 2027-06-07, 2027-07-05, 2027-07-12, 2027-07-20, 2027-08-16.

## Resources

| Resource |
| --- |
| MOV |

## Schedule

| ID | WBS | Task | Type | Duration | Start | Finish | Predecessors | Complete | Remaining | Baseline start | Baseline finish | Baseline duration | Total slack | Free slack | Text20 | Text21 | Text30 |
| --- | --- | --- | --- | --- | --- | --- | --- | --- | --- | --- | --- | --- | --- | --- | --- | --- | --- |
| 1 | 1 | HITO 1: ACTA DE INICIO | milestone | 0d | 2026-07-15 A | 2026-07-15 A |  | 100% |  | 2026-07-15 | 2026-07-15 | 0d |  |  | Día 0 | Día 0 | Día 0 |
| 2 | 2 | **PRELIMINARES GENERALES** |  | 45d | 2026-07-15 A | 2026-09-03 |  | 85% | 6.75d | 2026-07-15 | 2026-08-06 | 21d | 0d |  | Día 0 | Día 40 | Día 0 |
| 3 | 2.1 | ENTREGA DE DOCUMENTOS HABILITADORES | milestone | 0d | 2026-07-15 A | 2026-07-15 A | 1 | 100% |  | 2026-07-15 | 2026-07-15 | 0d |  |  | Día 0 | Día 0 | Día 0 |
| 4 | 2.2 | ENTREGA DE DOCUMENTACIÓN DE EJECUCION DEL PROYECTO | milestone | 0d | 2026-07-15 A | 2026-07-15 A | 1 | 100% |  | 2026-07-15 | 2026-07-15 | 0d |  |  | Día 0 | Día 0 | Día 0 |
| 5 | 2.3 | REVISIÓN Y RECEPCIÓN DE INGENIERIA |  | 45d | 2026-07-15 A | 2026-09-03 |  | 85% | 6.75d | 2026-07-15 | 2026-08-06 | 21d | 0d |  | Día 0 | Día 40 | Día 0 |
| 6 | 3 | **SOCIALIZACIÓN CON COMUNIDADES** |  | 32.25d | 2026-07-15 A | 2026-08-21 |  |  | 32.25d | 2026-07-15 | 2026-08-18 | 30d | 238.75d |  | Día 0 | Día 28,6666666666667 | Día 0 |
| 7 | 3.1 | REUNIONES RIO PATAJATAMA | milestone | 0d | 2026-07-15 A | 2026-07-15 A | 3, 4 | 100% |  | 2026-07-15 | 2026-07-15 | 0d |  |  |  | Día 0 | Día 0 |
| 8 | 3.2 | REUNIONES RIO ROMANA | milestone | 0d | 2026-07-15 A | 2026-07-15 A | 3, 4 | 100% |  | 2026-07-15 | 2026-07-15 | 0d |  |  |  | Día 0 | Día 0 |
| 9 | 3.3 | REUNIONES RIO UTKAP | milestone | 0d | 2026-07-15 A | 2026-07-15 A | 3, 4 | 100% |  | 2026-07-15 | 2026-07-15 | 0d |  |  |  | Día 0 | Día 0 |
| 10 | 3.4 | REUNIONES RIO CALINCHON | milestone | 0d | 2026-07-15 A | 2026-07-15 A | 3, 4 | 100% |  | 2026-07-15 | 2026-07-15 | 0d |  |  |  | Día 0 | Día 0 |
| 11 | 3.5 | REUNIONES RIO CAÑAVERAL | milestone | 0d | 2026-07-15 A | 2026-07-15 A | 3, 4 | 100% |  | 2026-07-15 | 2026-07-15 | 0d |  |  |  | Día 0 | Día 0 |
| 12 | 3.6 | REUNIONES RIO KAMUSHIPA | milestone | 0d | 2026-07-15 A | 2026-07-15 A | 3, 4 | 100% |  | 2026-07-15 | 2026-07-15 | 0d |  |  |  | Día 0 | Día 0 |
| 13 | 3.7 | REUNIONES RIO FLOR DE LA FRONTERA | milestone | 0d | 2026-07-15 A | 2026-07-15 A | 3, 4 | 100% |  | 2026-07-15 | 2026-07-15 | 0d |  |  |  | Día 0 | Día 0 |
| 14 | 3.8 | REUNIONES RIO JAIKA KALINCHON | milestone | 0d | 2026-07-15 A | 2026-07-15 A | 3, 4 | 100% |  | 2026-07-15 | 2026-07-15 | 0d |  |  |  | Día 0 | Día 0 |
| 15 | 3.9 | REUNIONES RIO MASHUMANA | milestone | 0d | 2026-07-15 A | 2026-07-15 A | 3, 4 | 100% |  | 2026-07-15 | 2026-07-15 | 0d |  |  |  | Día 0 | Día 0 |
| 16 | 3.10 | REUNIONES RIO MASHUMANA WANE | milestone | 0d | 2026-07-15 A | 2026-07-15 A | 3, 4 | 100% |  | 2026-07-15 | 2026-07-15 | 0d |  |  |  | Día 0 | Día 0 |
| 17 | 3.11 | REUNIONES RIO MATAJUNAY | milestone | 0d | 2026-07-15 | 2026-07-15 | 3, 4 |  |  | 2026-07-15 | 2026-07-15 | 0d | 271d | 252.38d |  | Día 0 | Día 0 |
| 18 | 3.12 | REUNIONES RIO MANNAJUYAY | milestone | 0d | 2026-07-15 A | 2026-07-15 A | 3, 4 | 100% |  | 2026-07-15 | 2026-07-15 | 0d |  |  |  | Día 0 | Día 0 |
| 19 | 3.13 | REUNIONES RIO WINPESHI | milestone | 0d | 2026-08-21 A | 2026-08-21 A | 16FS+30d | 100% |  | 2026-08-18 | 2026-08-18 | 0d |  |  |  | Día 28,6666666666667 | Día 28,6666666666667 |
| 20 | 3.14 | REUNIONES RIO JAMUCHERRU | milestone | 0d | 2026-08-18 | 2026-08-18 | 16FS+30d |  |  | 2026-08-18 | 2026-08-18 | 0d | 241d | 222.38d |  | Día 26,6666666666667 | Día 26,6666666666667 |
| 21 | 4 | PUBLICACIÓN DE VACANTES/CONTRATACIÓN DE PERSONAL |  | 20d | 2026-07-15 A | 2026-08-05 A | 4 | 100% |  | 2026-07-15 | 2026-08-05 | 20d |  |  | Día 2 | Día 17,7777777777778 | Día 0 |
| 22 | 5 | **SUMINISTRO DE MATERIALES** |  | 38d | 2026-08-06 A | 2026-09-18 |  | 33% | 25.33d | 2026-08-06 | 2026-09-08 | 28d | 127d |  | Día 2 | Día 52,4444444444444 | Día 18,6666666666667 |
| 23 | 5.1 | SUMINISTRO DE MATERIALES CIVILES: ANCHOR CAGE (CLIENTE) |  | 28d | 2026-08-06 A | 2026-09-08 | 5SS+21d | 50% | 14d | 2026-08-06 | 2026-08-24 | 14d | 137d | 16d |  | Día 43,5555555555556 | Día 18,6666666666667 |
| 24 | 5.2 | SUMINISTRO DE MATERIALES CIVILES: ACEROS DE REFUERSO |  | 14d | 2026-09-03 | 2026-09-18 | 5SS+45d |  |  | 2026-08-24 | 2026-09-08 | 14d | 121d | 0d |  | Día 52,4444444444444 | Día 40 |
| 25 | 6 | HITO 2: INICIO DE ACTIVIDADES EN CAMPO | milestone | 0d | 2026-08-05 A | 2026-08-05 A | 21 | 100% |  | 2026-08-05 | 2026-08-05 | 0d |  |  | Día 0 | Día 17,7777777777778 | Día 17,7777777777778 |

| ID | WBS | Task | Duration | Start | Finish | Predecessors | Complete | Remaining | Baseline start | Baseline finish | Baseline duration | Total slack | Free slack | Cost | Baseline cost | Text20 | Text21 | Text30 | GRUPO DE EJECUCION |
| --- | --- | --- | --- | --- | --- | --- | --- | --- | --- | --- | --- | --- | --- | --- | --- | --- | --- | --- | --- |
| 26 | 7 | **PISCINA INDUSTRIAL** | 32d | 2026-09-03 | 2026-10-07 |  |  |  | 2026-08-06 | 2026-09-11 | 32d | 133d |  | 461,790,780 | 461,790,780 | Día 0 | Día 68,4444444444444 | Día 40 |  |
| 27 | 7.1 | MOVIMIENTO DE TIERRAS Y RECONFORMACION PISCINA INDUSTRIAL | 14d | 2026-09-03 | 2026-09-18 | 21, 5 |  |  | 2026-08-06 | 2026-08-24 | 14d | 133d | 0d |  |  |  | Día 52,4444444444444 | Día 40 |  |
| 28 | 7.2 | INSTALACION DE GEOMEMBRANA PISCINA INDUSTRIAL | 10d | 2026-09-18 | 2026-09-29 | 27 |  |  | 2026-08-24 | 2026-09-03 | 10d | 133d | 0d |  |  | Día 23 | Día 61,3333333333333 | Día 52,4444444444444 |  |
| 29 | 7.3 | CONSTRUCCION DE CERRAMIENTO EN ALAMBRE DE PUA PISCINA INDUSTRIAL | 14d | 2026-09-07 | 2026-09-21 | 27SS+3d, 25 |  |  | 2026-08-11 | 2026-08-27 | 14d | 305d | 286.38d |  |  | Día 30 | Día 55,1111111111111 | Día 42,6666666666667 |  |
| 30 | 7.4 | CONSTRUCCION CUNETA PERIMETRAL PISCINA INDUSTRIAL | 8d | 2026-09-29 | 2026-10-07 | 28 |  |  | 2026-09-03 | 2026-09-11 | 8d | 133d | 11d | 461,790,780 | 461,790,780 |  | Día 68,4444444444444 | Día 61,3333333333333 |  |
| 31 | 8 | **ZONAS DE CAMPAMENTOS - FAENAS** | 302d | 2026-08-15 A | 2027-07-17 |  | 4% | 289.09d | 2026-08-22 | 2027-07-28 | 305d | 37d |  | 8,358,764,773.19 | 8,363,637,791.1 | Día 0 | Día 293,333333333333 | Día 24,8888888888889 |  |
| 32 | 8.1 | CONFORMACIÓN DEL AREA ZONAS DE CAMPAMENTOS - FAENAS | 25.4d | 2026-08-15 A | 2026-09-12 | 21FS+8d, 5 | 50% | 12.8d | 2026-08-22 | 2026-09-07 | 14d | 0d |  | 4,347,000 | 8,694,000 |  | Día 47,4666666666667 | Día 24,8888888888889 |  |
| 33 | 8.2 | INSTALACIÓN DE CONTENEDORES Y EQUIPOS ZONAS DE CAMPAMENTOS - FAENAS | 14d | 2026-08-24 A | 2026-09-08 | 32SS+7d | 10% | 12.6d | 2026-09-07 | 2026-09-17 | 10d | 37d | 0d | 4,734,161.21 | 5,260,179.12 | Día 23 | Día 43,5555555555556 | Día 31,1111111111111 |  |
| 34 | 8.3 | INSTALACIÓN DE LAS FACILIDADES ELECTRICAS E HIDRÚALICAS DE LOS CONTENEDORES ZONAS DE CAMPAMENTOS - FAENAS | 8d | 2026-09-08 | 2026-09-16 | 33 |  |  | 2026-09-17 | 2026-09-25 | 8d | 37d | 0d | 70,893,128.16 | 70,893,128.16 |  | Día 50,6666666666667 | Día 43,5555555555556 |  |
| 35 | 8.4 | ADMINISTRACIÓN Y MANTENIMIENTO DE CAMPAMENTOS | 280d | 2026-09-09 | 2027-07-17 | 34SS+1d, 33 |  |  | 2026-09-18 | 2027-07-28 | 280d | 37d |  | 8,278,790,483.82 | 8,278,790,483.82 |  | Día 293,333333333333 | Día 44,4444444444444 |  |
| 36 | 9 | **EJECUCIÓN DE ACTIVIDADES DE CIMENTACIONES EXISTENTES** | 119.25d | 2026-07-25 | 2026-12-04 |  |  |  | 2026-08-10 | 2026-11-26 | 98d | 35.12d |  | 6,460,662,751.06 | 6,460,662,751.06 | Día 0 | Día 114,777777777778 | Día 8,77777777777778 |  |
| 37 | 9.1 | **RECALCE 1 WP44** | 55d | 2026-09-03 | 2026-11-03 |  |  |  | 2026-08-10 | 2026-10-22 | 67d | 0d |  | 922,951,821.58 | 922,951,821.58 | Día 0 | Día 88,8888888888889 | Día 40 | GRUPO 1 |
| 38 | 9.1.1 | LOCALIZACIÓN DEL ACERO WP44 | 2d | 2026-09-03 | 2026-09-05 | 103SS+7d, 7, 10, 25, 5 |  |  | 2026-08-10 | 2026-08-12 | 2d | 0d |  | 90,662,604.65 | 90,662,604.65 | Día 23 | Día 41,7777777777778 | Día 40 |  |
| 39 | 9.1.2 | PERFORACION, ESCARIFICADO Y LIMPIEZA DEL RECUBRIMIENTO WP44 | 5d | 2026-09-05 | 2026-09-10 | 38 |  |  | 2026-08-12 | 2026-08-18 | 5d | 128d | 7d | 230,777,539.1 | 230,777,539.1 | Día 30 | Día 46,2222222222222 | Día 41,7777777777778 |  |
| 40 | 9.1.3 | CORTE Y FIGURADO DE ACERO WP44 | 4d | 2026-09-18 | 2026-09-22 | 39, 24 |  |  | 2026-09-08 | 2026-09-11 | 4d | 121d | 0d | 82,420,549.68 | 82,420,549.68 | Día 28 | Día 56 | Día 52,4444444444444 |  |
| 41 | 9.1.4 | APLICACIÓN DE EPOXICO Y FIJACIÓN DEL ACERO WP44 | 4d | 2026-10-16 | 2026-10-21 | 40, 109 |  |  | 2026-10-05 | 2026-10-09 | 4d | 121d | 0d | 230,777,539.1 | 230,777,539.1 | Día 30 | Día 79,1111111111111 | Día 75,5555555555556 |  |
| 42 | 9.1.5 | ENCONFRADO WP44 | 1d | 2026-10-21 | 2026-10-22 | 41 |  |  | 2026-10-09 | 2026-10-10 | 1d | 121d | 0d | 49,452,329.81 | 49,452,329.81 |  | Día 80 | Día 79,1111111111111 |  |
| 43 | 9.1.6 | VACIADO DE CONCRETO (APLICACIÓN PUENTE DE ADHERENCIA) WP44 | 1d | 2026-10-22 | 2026-10-23 | 42, 112, 30 |  |  | 2026-10-10 | 2026-10-13 | 1d | 121d | 0d | 140,114,934.46 | 140,114,934.46 |  | Día 80,8888888888889 | Día 80 |  |
| 44 | 9.1.7 | ADECUACIONES E INSTALACIONES ELECTRICAS REQUERIDAS WP44 | 3d | 2026-10-23 | 2026-10-26 | 43 |  |  | 2026-10-13 | 2026-10-15 | 3d | 125d | 0d | 52,335,715.77 | 52,335,715.77 |  | Día 83,5555555555556 | Día 80,8888888888889 |  |
| 45 | 9.1.8 | INSTALACION DE GROUT Y MORTERO AUTOCOMPACTANTE DE ALTA RESISTENCIA WP44 | 2d | 2026-10-30 | 2026-11-03 | 43FS+7d, 44 |  |  | 2026-10-20 | 2026-10-22 | 2d | 121d | 0d | 46,410,609.01 | 46,410,609.01 |  | Día 88,8888888888889 | Día 87,1111111111111 |  |
| 46 | 9.2 | **RECALCE 2 WP45** | 61.75d | 2026-08-26 | 2026-10-31 |  |  |  | 2026-08-19 | 2026-10-21 | 59d | 50.75d |  | 922,951,821.58 | 922,951,821.58 | Día 0 | Día 88 | Día 33,1111111111111 | GRUPO 2 |
| 47 | 9.2.1 | LOCALIZACIÓN DEL ACERO WP45 | 2d | 2026-08-26 | 2026-08-28 | 120SS+2d, 7, 10 |  |  | 2026-08-19 | 2026-08-20 | 2d | 50.75d | 0d | 90,662,604.65 | 90,662,604.65 | Día 23 | Día 34,8888888888889 | Día 33,1111111111111 |  |
| 48 | 9.2.2 | PERFORACION, ESCARIFICADO Y LIMPIEZA DEL RECUBRIMIENTO WP45 | 5d | 2026-08-28 | 2026-09-02 | 47 |  |  | 2026-08-20 | 2026-08-26 | 5d | 50.75d | 0d | 230,777,539.1 | 230,777,539.1 | Día 30 | Día 39,3333333333333 | Día 34,8888888888889 |  |
| 49 | 9.2.3 | CORTE Y FIGURADO DE ACERO WP45 | 4d | 2026-09-02 | 2026-09-07 | 48 |  |  | 2026-08-26 | 2026-08-29 | 4d | 50.75d | 8d | 82,420,549.68 | 82,420,549.68 | Día 28 | Día 42,8888888888889 | Día 39,3333333333333 |  |
| 50 | 9.2.4 | APLICACIÓN DE EPOXICO Y FIJACIÓN DEL ACERO WP45 | 4d | 2026-10-08 | 2026-10-14 | 49, 126 |  |  | 2026-10-01 | 2026-10-05 | 4d | 137.75d | 0d | 230,777,539.1 | 230,777,539.1 | Día 30 | Día 73,1111111111111 | Día 69,5555555555556 |  |
| 51 | 9.2.5 | ENCONFRADO WP45 | 1d | 2026-10-14 | 2026-10-15 | 50 |  |  | 2026-10-05 | 2026-10-06 | 1d | 137.75d | 0d | 49,452,329.81 | 49,452,329.81 |  | Día 74 | Día 73,1111111111111 |  |
| 52 | 9.2.6 | VACIADO DE CONCRETO (APLICACIÓN PUENTE DE ADHERENCIA) WP45 | 1d | 2026-10-15 | 2026-10-15 | 51, 129 |  |  | 2026-10-06 | 2026-10-07 | 1d | 137.75d | 5.75d | 140,114,934.46 | 140,114,934.46 |  | Día 74,8888888888889 | Día 74 |  |
| 53 | 9.2.7 | ADECUACIONES E INSTALACIONES ELECTRICAS REQUERIDAS WP45 | 3d | 2026-10-26 | 2026-10-29 | 52, 44 |  |  | 2026-10-15 | 2026-10-19 | 3d | 128d | 0d | 52,335,715.77 | 52,335,715.77 |  | Día 86,2222222222222 | Día 83,5555555555556 |  |
| 54 | 9.2.8 | INSTALACION DE GROUT Y MORTERO AUTOCOMPACTANTE DE ALTA RESISTENCIA WP45 | 2d | 2026-10-29 | 2026-10-31 | 52FS+7d, 53 |  |  | 2026-10-19 | 2026-10-21 | 2d | 132d | 0d | 46,410,609.01 | 46,410,609.01 |  | Día 88 | Día 86,2222222222222 |  |

| ID | WBS | Task | Duration | Start | Finish | Predecessors | Baseline start | Baseline finish | Baseline duration | Total slack | Free slack | Cost | Baseline cost | GRUPO DE EJECUCION | Text20 | Text21 | Text30 |
| --- | --- | --- | --- | --- | --- | --- | --- | --- | --- | --- | --- | --- | --- | --- | --- | --- | --- |
| 55 | 9.3 | **RECALCE 3 WP46** | 57.75d | 2026-09-02 | 2026-11-04 |  | 2026-08-26 | 2026-10-24 | 56d | 59.75d |  | 922,951,821.58 | 922,951,821.58 | GRUPO 3 | Día 0 | Día 90,6666666666667 | Día 39,3333333333333 |
| 56 | 9.3.1 | LOCALIZACIÓN DEL ACERO WP46 | 2d | 2026-09-02 | 2026-09-04 | 137SS+2d, 7, 10 | 2026-08-26 | 2026-08-28 | 2d | 59.75d | 0d | 90,662,604.65 | 90,662,604.65 |  | Día 23 | Día 41,1111111111111 | Día 39,3333333333333 |
| 57 | 9.3.2 | ESCARIFICADO Y LIMPIEZA DEL RECUBRIMIENTO WP46 | 5d | 2026-09-04 | 2026-09-10 | 56 | 2026-08-28 | 2026-09-02 | 5d | 59.75d | 0d | 230,777,539.1 | 230,777,539.1 |  | Día 30 | Día 45,5555555555556 | Día 41,1111111111111 |
| 58 | 9.3.3 | CORTE Y FIGURADO DE ACERO WP46 | 4d | 2026-09-10 | 2026-09-14 | 57 | 2026-09-02 | 2026-09-07 | 4d | 59.75d | 8d | 82,420,549.68 | 82,420,549.68 |  | Día 28 | Día 49,1111111111111 | Día 45,5555555555556 |
| 59 | 9.3.4 | APLICACIÓN DE EPOXICO Y FIJACIÓN DEL ACERO WP46 | 4d | 2026-10-16 | 2026-10-21 | 58, 143 | 2026-10-08 | 2026-10-13 | 4d | 132.75d | 0d | 230,777,539.1 | 230,777,539.1 |  | Día 30 | Día 79,3333333333333 | Día 75,7777777777778 |
| 60 | 9.3.5 | ENCONFRADO WP46 | 1d | 2026-10-21 | 2026-10-22 | 59 | 2026-10-14 | 2026-10-14 | 1d | 132.75d | 0d | 49,452,329.81 | 49,452,329.81 |  |  | Día 80,2222222222222 | Día 79,3333333333333 |
| 61 | 9.3.6 | VACIADO DE CONCRETO (APLICACIÓN PUENTE DE ADHERENCIA) WP46 | 1d | 2026-10-22 | 2026-10-23 | 60, 146 | 2026-10-14 | 2026-10-15 | 1d | 132.75d | 1.75d | 140,114,934.46 | 140,114,934.46 |  |  | Día 81,1111111111111 | Día 80,2222222222222 |
| 62 | 9.3.7 | ADECUACIONES E INSTALACIONES ELECTRICAS REQUERIDAS WP46 | 3d | 2026-10-29 | 2026-11-03 | 61, 53 | 2026-10-19 | 2026-10-22 | 3d | 128d | 0d | 52,335,715.77 | 52,335,715.77 |  |  | Día 88,8888888888889 | Día 86,2222222222222 |
| 63 | 9.3.8 | INSTALACION DE GROUT Y MORTERO AUTOCOMPACTANTE DE ALTA RESISTENCIA WP46 | 2d | 2026-11-03 | 2026-11-04 | 61FS+7d, 62 | 2026-10-23 | 2026-10-24 | 2d | 131d | 0d | 46,410,609.01 | 46,410,609.01 |  |  | Día 90,6666666666667 | Día 88,8888888888889 |
| 64 | 9.4 | **RECALCE 4 WP47** | 56d | 2026-09-10 | 2026-11-10 |  | 2026-09-02 | 2026-11-03 | 56d | 125.75d |  | 922,951,821.58 | 922,951,821.58 | GRUPO 1 | Día 0 | Día 95,3333333333333 | Día 45,5555555555556 |
| 65 | 9.4.1 | LOCALIZACIÓN DEL ACERO WP47 | 2d | 2026-09-10 | 2026-09-11 | 154SS+2d, 8 | 2026-09-02 | 2026-09-04 | 2d | 133.75d | 0d | 90,662,604.65 | 90,662,604.65 |  | Día 23 | Día 47,3333333333333 | Día 45,5555555555556 |
| 66 | 9.4.2 | ESCARIFICADO Y LIMPIEZA DEL RECUBRIMIENTO WP47 | 5d | 2026-09-12 | 2026-09-17 | 65 | 2026-09-04 | 2026-09-09 | 5d | 133.75d | 0d | 230,777,539.1 | 230,777,539.1 |  | Día 30 | Día 51,7777777777778 | Día 47,3333333333333 |
| 67 | 9.4.3 | CORTE Y FIGURADO DE ACERO WP47 | 4d | 2026-09-17 | 2026-09-22 | 66 | 2026-09-10 | 2026-09-14 | 4d | 133.75d | 8d | 82,420,549.68 | 82,420,549.68 |  | Día 28 | Día 55,3333333333333 | Día 51,7777777777778 |
| 68 | 9.4.4 | APLICACIÓN DE EPOXICO Y FIJACIÓN DEL ACERO WP47 | 4d | 2026-10-24 | 2026-10-28 | 67, 160 | 2026-10-16 | 2026-10-21 | 4d | 125.75d | 0d | 230,777,539.1 | 230,777,539.1 |  | Día 30 | Día 85,5555555555556 | Día 82 |
| 69 | 9.4.5 | ENCONFRADO WP47 | 1d | 2026-10-28 | 2026-10-29 | 68 | 2026-10-21 | 2026-10-22 | 1d | 125.75d | 0d | 49,452,329.81 | 49,452,329.81 |  |  | Día 86,4444444444444 | Día 85,5555555555556 |
| 70 | 9.4.6 | VACIADO DE CONCRETO (APLICACIÓN PUENTE DE ADHERENCIA) WP47 | 1d | 2026-10-29 | 2026-10-30 | 69, 163 | 2026-10-22 | 2026-10-23 | 1d | 125.75d | 0d | 140,114,934.46 | 140,114,934.46 |  |  | Día 87,3333333333333 | Día 86,4444444444444 |
| 71 | 9.4.7 | ADECUACIONES E INSTALACIONES ELECTRICAS REQUERIDAS WP47 | 3d | 2026-11-03 | 2026-11-05 | 70, 62 | 2026-10-23 | 2026-10-26 | 3d | 128d | 2.25d | 52,335,715.77 | 52,335,715.77 |  |  | Día 91,5555555555556 | Día 88,8888888888889 |
| 72 | 9.4.8 | INSTALACION DE GROUT Y MORTERO AUTOCOMPACTANTE DE ALTA RESISTENCIA WP47 | 2d | 2026-11-07 | 2026-11-10 | 70FS+7d, 71 | 2026-10-30 | 2026-11-03 | 2d | 125.75d | 2.75d | 46,410,609.01 | 46,410,609.01 |  |  | Día 95,3333333333333 | Día 93,5555555555556 |
| 73 | 9.5 | **RECALCE 5 WP48** | 105d | 2026-07-25 | 2026-11-19 |  | 2026-09-10 | 2026-11-10 | 56d | 98.12d |  | 922,951,821.58 | 922,951,821.58 | GRUPO 2 | Día 0 | Día 102,111111111111 | Día 8,77777777777778 |
| 74 | 9.5.1 | LOCALIZACIÓN DEL ACERO WP48 | 2d | 2026-07-25 | 2026-07-28 | 171SS+2d, 7, 10 | 2026-09-10 | 2026-09-11 | 2d | 98.12d | 0d | 90,662,604.65 | 90,662,604.65 |  | Día 23 | Día 10,5555555555556 | Día 8,77777777777778 |
| 75 | 9.5.2 | ESCARIFICADO Y LIMPIEZA DEL RECUBRIMIENTO WP48 | 5d | 2026-07-28 | 2026-08-03 | 74 | 2026-09-11 | 2026-09-17 | 5d | 98.12d | 0d | 230,777,539.1 | 230,777,539.1 |  | Día 30 | Día 15 | Día 10,5555555555556 |
| 76 | 9.5.3 | CORTE Y FIGURADO DE ACERO WP48 | 4d | 2026-08-03 | 2026-08-06 | 75 | 2026-09-17 | 2026-09-21 | 4d | 98.12d | 57d | 82,420,549.68 | 82,420,549.68 |  | Día 28 | Día 18,5555555555556 | Día 15 |
| 77 | 9.5.4 | APLICACIÓN DE EPOXICO Y FIJACIÓN DEL ACERO WP48 | 4d | 2026-11-03 | 2026-11-06 | 76, 177 | 2026-10-24 | 2026-10-28 | 4d | 127.12d | 0d | 230,777,539.1 | 230,777,539.1 |  | Día 30 | Día 92,3333333333333 | Día 88,7777777777778 |
| 78 | 9.5.5 | ENCONFRADO WP48 | 1d | 2026-11-06 | 2026-11-07 | 77 | 2026-10-28 | 2026-10-29 | 1d | 127.12d | 0d | 49,452,329.81 | 49,452,329.81 |  |  | Día 93,2222222222222 | Día 92,3333333333333 |
| 79 | 9.5.6 | VACIADO DE CONCRETO (APLICACIÓN PUENTE DE ADHERENCIA) WP48 | 1d | 2026-11-07 | 2026-11-09 | 78, 180 | 2026-10-29 | 2026-10-30 | 1d | 127.12d | 0d | 140,114,934.46 | 140,114,934.46 |  |  | Día 94,1111111111111 | Día 93,2222222222222 |
| 80 | 9.5.7 | ADECUACIONES E INSTALACIONES ELECTRICAS REQUERIDAS WP48 | 3d | 2026-11-09 | 2026-11-12 | 79, 71 | 2026-10-30 | 2026-11-04 | 3d | 127.12d | 4d | 52,335,715.77 | 52,335,715.77 |  |  | Día 96,7777777777778 | Día 94,1111111111111 |
| 81 | 9.5.8 | INSTALACION DE GROUT Y MORTERO AUTOCOMPACTANTE DE ALTA RESISTENCIA WP48 | 2d | 2026-11-17 | 2026-11-19 | 79FS+7d, 80 | 2026-11-07 | 2026-11-10 | 2d | 128.12d | 0d | 46,410,609.01 | 46,410,609.01 |  |  | Día 102,111111111111 | Día 100,333333333333 |

| ID | WBS | Task | Type | Duration | Start | Finish | Predecessors | Complete | Remaining | Baseline start | Baseline finish | Baseline duration | Total slack | Free slack | Cost | Baseline cost | GRUPO DE EJECUCION | Text20 | Text21 | Text30 |
| --- | --- | --- | --- | --- | --- | --- | --- | --- | --- | --- | --- | --- | --- | --- | --- | --- | --- | --- | --- | --- |
| 82 | 9.6 | **RECALCE 6 WP49** |  | 112.38d | 2026-07-25 | 2026-11-27 |  |  |  | 2026-09-17 | 2026-11-19 | 57d | 116.12d |  | 922,951,821.58 | 922,951,821.58 | GRUPO 3 | Día 0 | Día 108,666666666667 | Día 8,77777777777778 |
| 83 | 9.6.1 | LOCALIZACIÓN DEL HACERO WP49 |  | 2d | 2026-07-25 | 2026-07-28 | 188SS+2d, 7, 10 |  |  | 2026-09-17 | 2026-09-19 | 2d | 116.12d | 0d | 90,662,604.65 | 90,662,604.65 |  | Día 23 | Día 10,5555555555556 | Día 8,77777777777778 |
| 84 | 9.6.2 | ESCARIFICADO Y LIMPIEZA DEL RECUBRIMIENTO WP49 |  | 5d | 2026-07-28 | 2026-08-03 | 83 |  |  | 2026-09-19 | 2026-09-24 | 5d | 116.12d | 0d | 230,777,539.1 | 230,777,539.1 |  | Día 30 | Día 15 | Día 10,5555555555556 |
| 85 | 9.6.3 | CORTE Y FIGURADO DE ACERO WP49 |  | 4d | 2026-08-03 | 2026-08-06 | 84 |  |  | 2026-09-24 | 2026-09-29 | 4d | 116.12d | 64.38d | 82,420,549.68 | 82,420,549.68 |  | Día 28 | Día 18,5555555555556 | Día 15 |
| 86 | 9.6.4 | APLICACIÓN DE EPOXICO Y FIJACIÓN DEL ACERO WP49 |  | 4d | 2026-11-10 | 2026-11-14 | 85, 194 |  |  | 2026-11-03 | 2026-11-06 | 4d | 122.75d | 0d | 230,777,539.1 | 230,777,539.1 |  | Día 30 | Día 98,8888888888889 | Día 95,3333333333333 |
| 87 | 9.6.5 | ENCONFRADO WP49 |  | 1d | 2026-11-14 | 2026-11-17 | 86 |  |  | 2026-11-06 | 2026-11-07 | 1d | 122.75d | 0d | 49,452,329.81 | 49,452,329.81 |  |  | Día 99,7777777777778 | Día 98,8888888888889 |
| 88 | 9.6.6 | VACIADO DE CONCRETO (APLICACIÓN PUENTE DE ADHERENCIA) WP49 |  | 1d | 2026-11-17 | 2026-11-18 | 87, 197 |  |  | 2026-11-07 | 2026-11-09 | 1d | 122.75d | 0d | 140,114,934.46 | 140,114,934.46 |  |  | Día 100,666666666667 | Día 99,7777777777778 |
| 89 | 9.6.7 | ADECUACIONES E INSTALACIONES ELECTRICAS REQUERIDAS WP49 |  | 3d | 2026-11-18 | 2026-11-20 | 88, 80 |  |  | 2026-11-09 | 2026-11-12 | 3d | 122.75d | 3.88d | 52,335,715.77 | 52,335,715.77 |  |  | Día 103,333333333333 | Día 100,666666666667 |
| 90 | 9.6.8 | INSTALACION DE GROUT Y MORTERO AUTOCOMPACTANTE DE ALTA RESISTENCIA WP49 |  | 2d | 2026-11-25 | 2026-11-27 | 88FS+7d, 89 |  |  | 2026-11-17 | 2026-11-19 | 2d | 122.75d | 0d | 46,410,609.01 | 46,410,609.01 |  |  | Día 108,666666666667 | Día 106,888888888889 |
| 91 | 9.7 | **RECALCE 7 WP52** |  | 116d | 2026-07-29 | 2026-12-04 |  |  |  | 2026-09-24 | 2026-11-26 | 56d | 96.88d |  | 922,951,821.58 | 922,951,821.58 | GRUPO 1 | Día 0 | Día 114,777777777778 | Día 11,6666666666667 |
| 92 | 9.7.1 | LOCALIZACIÓN DEL ACERO WP52 |  | 2d | 2026-07-29 | 2026-07-31 | 205SS+2d, 7, 10 |  |  | 2026-09-24 | 2026-09-26 | 2d | 96.88d | 0d | 90,662,604.65 | 90,662,604.65 |  | Día 23 | Día 13,4444444444444 | Día 11,6666666666667 |
| 93 | 9.7.2 | ESCARIFICADO Y LIMPIEZA DEL RECUBRIMIENTO WP52 |  | 5d | 2026-07-31 | 2026-08-06 | 92 |  |  | 2026-09-26 | 2026-10-01 | 5d | 96.88d | 0d | 230,777,539.1 | 230,777,539.1 |  | Día 30 | Día 17,8888888888889 | Día 13,4444444444444 |
| 94 | 9.7.3 | CORTE Y FIGURADO DE ACERO WP52 |  | 4d | 2026-08-06 | 2026-08-11 | 93 |  |  | 2026-10-02 | 2026-10-06 | 4d | 96.88d | 68d | 82,420,549.68 | 82,420,549.68 |  | Día 28 | Día 21,4444444444444 | Día 17,8888888888889 |
| 95 | 9.7.4 | APLICACIÓN DE EPOXICO Y FIJACIÓN DEL ACERO WP52 |  | 4d | 2026-11-18 | 2026-11-23 | 94, 211 |  |  | 2026-11-09 | 2026-11-13 | 4d | 114.88d | 0d | 230,777,539.1 | 230,777,539.1 |  | Día 30 | Día 105 | Día 101,444444444444 |
| 96 | 9.7.5 | ENCONFRADO WP52 |  | 1d | 2026-11-23 | 2026-11-24 | 95 |  |  | 2026-11-13 | 2026-11-14 | 1d | 114.88d | 0d | 49,452,329.81 | 49,452,329.81 |  |  | Día 105,888888888889 | Día 105 |
| 97 | 9.7.6 | VACIADO DE CONCRETO (APLICACIÓN PUENTE DE ADHERENCIA) WP52 |  | 1d | 2026-11-24 | 2026-11-25 | 96, 34 |  |  | 2026-11-14 | 2026-11-14 | 1d | 114.88d | 0d | 140,114,934.46 | 140,114,934.46 |  |  | Día 106,777777777778 | Día 105,888888888889 |
| 98 | 9.7.7 | ADECUACIONES E INSTALACIONES ELECTRICAS REQUERIDAS WP52 |  | 3d | 2026-11-25 | 2026-11-27 | 97, 89 |  |  | 2026-11-17 | 2026-11-19 | 3d | 118.88d | 4d | 52,335,715.77 | 52,335,715.77 |  |  | Día 109,444444444444 | Día 106,777777777778 |
| 99 | 9.7.8 | INSTALACION DE GROUT Y MORTERO AUTOCOMPACTANTE DE ALTA RESISTENCIA WP52 |  | 2d | 2026-12-02 | 2026-12-04 | 97FS+7d, 98 |  |  | 2026-11-24 | 2026-11-26 | 2d | 114.88d | 0d | 46,410,609.01 | 46,410,609.01 |  |  | Día 114,777777777778 | Día 113 |
| 100 | 9.8 | HITO 3: FIN DE ACTIVIDADES DE RECALCE | milestone | 0d | 2026-12-04 | 2026-12-04 | 99, 97 |  |  | 2026-11-26 | 2026-11-26 | 0d | 114.88d | 0d |  |  |  | Día 0 | Día 114,777777777778 | Día 114,777777777778 |
| 101 | 10 | **EJECUCIÓN DE ACTIVIDADES DE CIMENTACIONES NUEVAS** |  | 346.12d | 2026-07-17 A | 2027-08-07 |  | 7% | 322.62d | 2026-08-06 | 2027-08-07 | 327d | 18.62d |  | 180,271,560,455.94 | 180,521,375,798.58 |  | Día 0 | Día 309,666666666667 | Día 2 |
| 102 | 10.1 | **CIMENTACION WP50** |  | 111.75d | 2026-07-17 A | 2026-11-18 |  | 5% | 106.11d | 2026-08-06 | 2026-11-06 | 83d | 253d |  | 5,292,218,375.87 | 5,308,872,732.05 | GRUPO 1 | Día 0 | Día 101,333333333333 | Día 2 |
| 103 | 10.1.1 | LOCALIZACION, REPLANTEO Y DESBROCE DE AREA DE ACOPIO DE TORRE Y DE PALAS WP50 |  | 25d | 2026-07-17 A | 2026-08-14 | 21, 7, 25, 5SS | 20% | 20d | 2026-08-06 | 2026-08-15 | 7d | 1.4d | 0d | 66,617,424.7 | 83,271,780.88 |  |  | Día 24,2222222222222 | Día 2 |
| 104 | 10.1.2 | EXCAVACIÓN DE CIMENTACION WP50 |  | 7d | 2026-08-14 | 2026-08-22 | 103 |  |  | 2026-08-15 | 2026-08-24 | 7d | 37.75d | 0d | 312,374,505.67 | 312,374,505.67 |  | Día 23 | Día 30,4444444444444 | Día 24,2222222222222 |
| 105 | 10.1.3 | BANCO DE DUCTO WP50 |  | 3d | 2026-08-22 | 2026-08-26 | 104 |  |  | 2026-08-24 | 2026-08-27 | 3d | 142.75d | 0d | 9,527,825.69 | 9,527,825.69 |  |  | Día 33,1111111111111 | Día 30,4444444444444 |
| 106 | 10.1.4 | COMPACTACION DE SELLO DE BASE WP50 |  | 4d | 2026-08-26 | 2026-08-31 | 104, 105 |  |  | 2026-08-27 | 2026-08-31 | 4d | 142.75d | 21.75d | 320,494,616.72 | 320,494,616.72 |  | Día 30 | Día 36,6666666666667 | Día 33,1111111111111 |
| 107 | 10.1.5 | SOLADO WP50 |  | 2d | 2026-09-22 | 2026-09-24 | 106, 40 |  |  | 2026-09-11 | 2026-09-14 | 2d | 121d | 0d | 94,303,618.55 | 94,303,618.55 |  | Día 28 | Día 57,7777777777778 | Día 56 |
| 108 | 10.1.6 | INSTALACIÓN DE PERNOS Y SOFT-SPOT WP50 |  | 5d | 2026-09-24 | 2026-09-30 | 107, 24, 40, 23 |  |  | 2026-09-14 | 2026-09-19 | 5d | 121d | 0d | 179,436,034.15 | 179,436,034.15 |  | Día 30 | Día 62,2222222222222 | Día 57,7777777777778 |
| 109 | 10.1.7 | INSTALACIÓN DE ACERO DE REFUERZO WP50 |  | 15d | 2026-09-30 | 2026-10-16 | 108, 24 |  |  | 2026-09-19 | 2026-10-05 | 15d | 121d | 0d | 1,212,623,361.21 | 1,212,623,361.21 |  |  | Día 75,5555555555556 | Día 62,2222222222222 |
| 110 | 10.1.8 | ENCOFRADO DE ZAPATA Y DE PEDESTAL WP50 |  | 3d | 2026-10-16 | 2026-10-20 | 109 |  |  | 2026-10-05 | 2026-10-08 | 3d | 122d | 0d |  |  |  |  | Día 78,2222222222222 | Día 75,5555555555556 |
| 111 | 10.1.9 | HITO: ALISTAMIENTO Y MOVILIZACIÓN DE PLANTA DE CONCRETO PARA WP50 | milestone | 0d | 2026-10-16 | 2026-10-16 | 109 |  |  | 2026-10-05 | 2026-10-05 | 0d | 125d | 3d |  |  |  | Día 0 | Día 75,5555555555556 | Día 75,5555555555556 |
| 112 | 10.1.10 | FUNDIDA WP50 |  | 1d | 2026-10-20 | 2026-10-21 | 110, 30, 111 |  |  | 2026-10-08 | 2026-10-09 | 1d | 122d | 0d | 1,230,815,225.95 | 1,230,815,225.95 |  |  | Día 79,1111111111111 | Día 78,2222222222222 |
| 113 | 10.1.11 | CURADO DEL CONCRETO WP50 |  | 7d | 2026-10-21 | 2026-10-28 | 112 |  |  | 2026-10-09 | 2026-10-17 | 7d | 122d | 0d |  |  |  |  | Día 85,3333333333333 | Día 79,1111111111111 |
| 114 | 10.1.12 | INSTALACIONES ELECTRICAS Y SISTEMA PUESTA TIERRA WP50 |  | 3d | 2026-10-28 | 2026-10-31 | 113 |  |  | 2026-10-17 | 2026-10-21 | 3d | 122d | 0d | 52,736,347.43 | 52,736,347.43 |  | Día 28 | Día 88 | Día 85,3333333333333 |
| 115 | 10.1.13 | INSTALACION DE GROUT Y MORTERO AUTOCOMPACTANTE DE ALTA RESISTENCIA WP50 |  | 2d | 2026-10-31 | 2026-11-04 | 114 |  |  | 2026-10-21 | 2026-10-23 | 2d | 122d | 1d | 46,410,609.01 | 46,410,609.01 |  | Día 23 | Día 89,7777777777778 | Día 88 |
| 116 | 10.1.14 | TAPADO AREA DE CIMENTACIÓN Y CONFORMACIÓN DE PLATAFORMA WP50 |  | 10d | 2026-11-03 | 2026-11-13 | 114, 45, 43 |  |  | 2026-10-22 | 2026-11-03 | 10d | 121d | 0d | 1,587,346,329.55 | 1,587,346,329.55 |  | Día 23 | Día 97,7777777777778 | Día 88,8888888888889 |
| 117 | 10.1.15 | ESTABILIZACIÓN DE TALUDES EN PLATAFORMA Y RECONFORMACION FINAL WP50 |  | 12d | 2026-11-05 | 2026-11-18 | 115SS+2d, 116SS+2d |  |  | 2026-10-24 | 2026-11-06 | 12d | 121d | 0d | 179,532,477.24 | 179,532,477.24 |  |  | Día 101,333333333333 | Día 90,6666666666667 |
| 118 | 10.1.16 | HITO: FINALIZACION DE ACTIVIDADES EN CIMENTACION WP50 | milestone | 0d | 2026-11-18 | 2026-11-18 | 117 |  |  | 2026-11-06 | 2026-11-06 | 0d | 253d | 0d |  |  |  | Día 0 | Día 101,333333333333 | Día 101,333333333333 |

| ID | WBS | Task | Type | Duration | Start | Finish | Predecessors | Complete | Remaining | Baseline start | Baseline finish | Baseline duration | Total slack | Free slack | Cost | Baseline cost | GRUPO DE EJECUCION | Text20 | Text21 | Text30 |
| --- | --- | --- | --- | --- | --- | --- | --- | --- | --- | --- | --- | --- | --- | --- | --- | --- | --- | --- | --- | --- |
| 119 | 10.2 | **CIMENTACION WP53** |  | 78.75d | 2026-08-24 A | 2026-11-18 |  | 2% | 77.39d | 2026-08-15 | 2026-11-06 | 76d | 253d |  | 5,292,218,375.87 | 5,308,872,732.05 | GRUPO 2 | Día 0 | Día 101,333333333333 | Día 31,3333333333333 |
| 120 | 10.2.1 | LOCALIZACION, REPLANTEO Y DESBROCE DE AREA DE ACOPIO DE TORRE Y DE PALAS WP53 |  | 7d | 2026-08-24 A | 2026-09-01 | 103FS+8d, 7 | 20% | 5.6d | 2026-08-15 | 2026-08-24 | 7d | 0d |  | 66,617,424.7 | 83,271,780.88 |  |  | Día 37,5555555555556 | Día 31,3333333333333 |
| 121 | 10.2.2 | EXCAVACIÓN DE CIMENTACION WP53 |  | 7d | 2026-09-01 | 2026-09-08 | 120, 104 |  |  | 2026-08-24 | 2026-08-31 | 7d | 29.75d | 0d | 312,374,505.67 | 312,374,505.67 |  | Día 23 | Día 43,7777777777778 | Día 37,5555555555556 |
| 122 | 10.2.3 | BANCO DE DUCTO WP53 |  | 3d | 2026-09-08 | 2026-09-11 | 121 |  |  | 2026-08-31 | 2026-09-03 | 3d | 42.75d | 0d | 9,527,825.69 | 9,527,825.69 |  |  | Día 46,4444444444444 | Día 43,7777777777778 |
| 123 | 10.2.4 | COMPACTACION DE SELLO DE BASE WP53 |  | 4d | 2026-09-11 | 2026-09-15 | 122 |  |  | 2026-09-03 | 2026-09-08 | 4d | 42.75d | 0d | 320,494,616.72 | 320,494,616.72 |  | Día 30 | Día 50 | Día 46,4444444444444 |
| 124 | 10.2.5 | WP53 WP53 |  | 2d | 2026-09-15 | 2026-09-17 | 123, 49 |  |  | 2026-09-08 | 2026-09-09 | 2d | 42.75d | 0d | 94,303,618.55 | 94,303,618.55 |  | Día 28 | Día 51,7777777777778 | Día 50 |
| 125 | 10.2.6 | INSTALACIÓN DE PERNOS Y SOFT-SPOT WP53 |  | 5d | 2026-09-17 | 2026-09-23 | 124 |  |  | 2026-09-10 | 2026-09-15 | 5d | 42.75d | 0d | 179,436,034.15 | 179,436,034.15 |  | Día 30 | Día 56,2222222222222 | Día 51,7777777777778 |
| 126 | 10.2.7 | INSTALACIÓN DE ACERO DE REFUERZO WP53 |  | 15d | 2026-09-23 | 2026-10-08 | 125 |  |  | 2026-09-15 | 2026-10-01 | 15d | 42.75d | 0d | 1,212,623,361.21 | 1,212,623,361.21 |  |  | Día 69,5555555555556 | Día 56,2222222222222 |
| 127 | 10.2.8 | ENCOFRADO DE ZAPATA Y DE PEDESTAL WP53 |  | 3d | 2026-10-08 | 2026-10-13 | 126 |  |  | 2026-10-01 | 2026-10-03 | 3d | 138.75d | 0d |  |  |  |  | Día 72,2222222222222 | Día 69,5555555555556 |
| 128 | 10.2.9 | HITO: ALISTAMIENTO Y MOVILIZACIÓN DE PLANTA DE CONCRETO PARA WP53 | milestone | 0d | 2026-10-08 | 2026-10-08 | 126 |  |  | 2026-10-01 | 2026-10-01 | 0d | 141.75d | 3d |  |  |  | Día 0 | Día 69,5555555555556 | Día 69,5555555555556 |
| 129 | 10.2.10 | FUNDIDA WP53 |  | 1d | 2026-10-13 | 2026-10-14 | 127, 128 |  |  | 2026-10-03 | 2026-10-05 | 1d | 138.75d | 0d | 1,230,815,225.95 | 1,230,815,225.95 |  |  | Día 73,1111111111111 | Día 72,2222222222222 |
| 130 | 10.2.11 | CURADO DEL CONCRETO WP53 |  | 7d | 2026-10-14 | 2026-10-21 | 129 |  |  | 2026-10-05 | 2026-10-13 | 7d | 138.75d | 0d |  |  |  |  | Día 79,3333333333333 | Día 73,1111111111111 |
| 131 | 10.2.12 | INSTALACIONES ELECTRICAS Y SISTEMA PUESTA TIERRA WP53 |  | 3d | 2026-10-21 | 2026-10-24 | 130 |  |  | 2026-10-14 | 2026-10-16 | 3d | 138.75d | 0d | 52,736,347.43 | 52,736,347.43 |  | Día 28 | Día 82 | Día 79,3333333333333 |
| 132 | 10.2.13 | INSTALACION DE GROUT Y MORTERO AUTOCOMPACTANTE DE ALTA RESISTENCIA WP53 |  | 2d | 2026-10-24 | 2026-10-27 | 131 |  |  | 2026-10-16 | 2026-10-19 | 2d | 138.75d | 6.75d | 46,410,609.01 | 46,410,609.01 |  | Día 23 | Día 83,7777777777778 | Día 82 |
| 133 | 10.2.14 | TAPADO AREA DE CIMENTACIÓN Y CONFORMACIÓN DE PLATAFORMA WP53 |  | 10d | 2026-10-31 | 2026-11-12 | 131, 54, 52 |  |  | 2026-10-21 | 2026-10-31 | 10d | 132d | 0d | 1,587,346,329.55 | 1,587,346,329.55 |  | Día 23 | Día 96,8888888888889 | Día 88 |
| 134 | 10.2.15 | ESTABILIZACIÓN DE TALUDES EN PLATAFORMA Y RECONFORMACION FINAL WP53 |  | 12d | 2026-11-04 | 2026-11-17 | 132SS+2d, 133SS+2d |  |  | 2026-10-23 | 2026-11-05 | 12d | 132d | 1d | 179,532,477.24 | 179,532,477.24 |  |  | Día 100,444444444444 | Día 89,7777777777778 |
| 135 | 10.2.16 | HITO: FINALIZACION DE ACTIVIDADES EN CIMENTACION WP53 | milestone | 0d | 2026-11-18 | 2026-11-18 | 118, 134 |  |  | 2026-11-06 | 2026-11-06 | 0d | 253d | 2d |  |  |  | Día 0 | Día 101,333333333333 | Día 101,333333333333 |
| 136 | 10.3 | **CIMENTACION WP15** |  | 73.75d | 2026-09-01 | 2026-11-20 |  |  |  | 2026-08-24 | 2026-11-10 | 72d | 0d |  | 5,308,872,732.05 | 5,308,872,732.05 | GRUPO 3 | Día 0 | Día 103,111111111111 | Día 37,5555555555556 |
| 137 | 10.3.1 | LOCALIZACION, REPLANTEO Y DESBROCE DE AREA DE ACOPIO DE TORRE Y DE PALAS WP15 |  | 7d | 2026-09-01 | 2026-09-08 | 120, 9 |  |  | 2026-08-24 | 2026-08-31 | 7d | 0d |  | 83,271,780.88 | 83,271,780.88 |  |  | Día 43,7777777777778 | Día 37,5555555555556 |
| 138 | 10.3.2 | EXCAVACIÓN DE CIMENTACION WP15 |  | 7d | 2026-09-08 | 2026-09-15 | 137, 121 |  |  | 2026-08-31 | 2026-09-08 | 7d | 29.75d | 0d | 312,374,505.67 | 312,374,505.67 |  | Día 23 | Día 50 | Día 43,7777777777778 |
| 139 | 10.3.3 | BANCO DE DUCTO WP15 |  | 3d | 2026-09-15 | 2026-09-18 | 138 |  |  | 2026-09-08 | 2026-09-10 | 3d | 51.75d | 0d | 9,527,825.69 | 9,527,825.69 |  |  | Día 52,6666666666667 | Día 50 |
| 140 | 10.3.4 | COMPACTACION DE SELLO DE BASE WP15 |  | 4d | 2026-09-18 | 2026-09-23 | 138, 139 |  |  | 2026-09-10 | 2026-09-15 | 4d | 51.75d | 0d | 320,494,616.72 | 320,494,616.72 |  | Día 30 | Día 56,2222222222222 | Día 52,6666666666667 |
| 141 | 10.3.5 | SOLADO WP15 |  | 2d | 2026-09-23 | 2026-09-24 | 140, 58 |  |  | 2026-09-15 | 2026-09-17 | 2d | 51.75d | 0d | 94,303,618.55 | 94,303,618.55 |  | Día 28 | Día 58 | Día 56,2222222222222 |
| 142 | 10.3.6 | INSTALACIÓN DE PERNOS Y SOFT-SPOT WP15 |  | 5d | 2026-09-24 | 2026-09-30 | 141, 125 |  |  | 2026-09-17 | 2026-09-22 | 5d | 51.75d | 0d | 179,436,034.15 | 179,436,034.15 |  | Día 30 | Día 62,4444444444444 | Día 58 |
| 143 | 10.3.7 | INSTALACIÓN DE ACERO DE REFUERZO WP15 |  | 15d | 2026-09-30 | 2026-10-16 | 142 |  |  | 2026-09-22 | 2026-10-08 | 15d | 51.75d | 0d | 1,212,623,361.21 | 1,212,623,361.21 |  |  | Día 75,7777777777778 | Día 62,4444444444444 |
| 144 | 10.3.8 | ENCOFRADO DE ZAPATA Y DE PEDESTAL WP15 |  | 3d | 2026-10-16 | 2026-10-20 | 143 |  |  | 2026-10-08 | 2026-10-13 | 3d | 133.75d | 0d |  |  |  |  | Día 78,4444444444444 | Día 75,7777777777778 |
| 145 | 10.3.9 | HITO: ALISTAMIENTO Y MOVILIZACIÓN DE PLANTA DE CONCRETO PARA WP15 | milestone | 0d | 2026-10-16 | 2026-10-16 | 143 |  |  | 2026-10-08 | 2026-10-08 | 0d | 136.75d | 3d |  |  |  | Día 0 | Día 75,7777777777778 | Día 75,7777777777778 |
| 146 | 10.3.10 | FUNDIDA WP15 |  | 1d | 2026-10-20 | 2026-10-21 | 144, 145 |  |  | 2026-10-13 | 2026-10-13 | 1d | 133.75d | 0d | 1,230,815,225.95 | 1,230,815,225.95 |  |  | Día 79,3333333333333 | Día 78,4444444444444 |
| 147 | 10.3.11 | CURADO DEL CONCRETO WP15 |  | 7d | 2026-10-21 | 2026-10-28 | 146 |  |  | 2026-10-14 | 2026-10-21 | 7d | 133.75d | 0d |  |  |  |  | Día 85,5555555555556 | Día 79,3333333333333 |
| 148 | 10.3.12 | INSTALACIONES ELECTRICAS Y SISTEMA PUESTA TIERRA WP15 |  | 3d | 2026-10-28 | 2026-10-31 | 147 |  |  | 2026-10-21 | 2026-10-23 | 3d | 133.75d | 0d | 52,736,347.43 | 52,736,347.43 |  | Día 28 | Día 88,2222222222222 | Día 85,5555555555556 |
| 149 | 10.3.13 | INSTALACION DE GROUT Y MORTERO AUTOCOMPACTANTE DE ALTA RESISTENCIA WP15 |  | 2d | 2026-10-31 | 2026-11-04 | 148 |  |  | 2026-10-24 | 2026-10-26 | 2d | 133.75d | 2.75d | 46,410,609.01 | 46,410,609.01 |  | Día 23 | Día 90 | Día 88,2222222222222 |
| 150 | 10.3.14 | TAPADO AREA DE CIMENTACIÓN Y CONFORMACIÓN DE PLATAFORMA WP15 |  | 10d | 2026-11-05 | 2026-11-14 | 148, 63, 61 |  |  | 2026-10-24 | 2026-11-05 | 10d | 131d | 0d | 1,587,346,329.55 | 1,587,346,329.55 |  | Día 23 | Día 99,5555555555556 | Día 90,6666666666667 |
| 151 | 10.3.15 | ESTABILIZACIÓN DE TALUDES EN PLATAFORMA Y RECONFORMACION FINAL WP15 |  | 12d | 2026-11-06 | 2026-11-20 | 149SS+2d, 150SS+2d |  |  | 2026-10-27 | 2026-11-10 | 12d | 131d | 0d | 179,532,477.24 | 179,532,477.24 |  |  | Día 103,111111111111 | Día 92,4444444444444 |
| 152 | 10.3.16 | HITO: FINALIZACION DE ACTIVIDADES EN CIMENTACION WP15 | milestone | 0d | 2026-11-20 | 2026-11-20 | 135, 151 |  |  | 2026-11-10 | 2026-11-10 | 0d | 251d | 10d |  |  |  | Día 0 | Día 103,111111111111 | Día 103,111111111111 |

| ID | WBS | Task | Type | Duration | Start | Finish | Predecessors | Complete | Remaining | Baseline start | Baseline finish | Baseline duration | Total slack | Free slack | Cost | Baseline cost | GRUPO DE EJECUCION | Text20 | Text21 | Text30 |
| --- | --- | --- | --- | --- | --- | --- | --- | --- | --- | --- | --- | --- | --- | --- | --- | --- | --- | --- | --- | --- |
| 153 | 10.4 | **CIMENTACION WP14** |  | 76.75d | 2026-09-08 | 2026-12-01 |  |  |  | 2026-08-31 | 2026-11-20 | 74d | 0d |  | 5,308,872,732.05 | 5,308,872,732.05 | GRUPO 1 | Día 0 | Día 112 | Día 43,7777777777778 |
| 154 | 10.4.1 | LOCALIZACION, REPLANTEO Y DESBROCE DE AREA DE ACOPIO DE TORRE Y DE PALAS WP14 |  | 7d | 2026-09-08 | 2026-09-15 | 137 |  |  | 2026-08-31 | 2026-09-08 | 7d | 0d |  | 83,271,780.88 | 83,271,780.88 |  |  | Día 50 | Día 43,7777777777778 |
| 155 | 10.4.2 | EXCAVACIÓN DE CIMENTACION WP14 |  | 7d | 2026-09-15 | 2026-09-23 | 154, 104, 138 |  |  | 2026-09-08 | 2026-09-15 | 7d | 29.75d | 0d | 312,374,505.67 | 312,374,505.67 |  | Día 23 | Día 56,2222222222222 | Día 50 |
| 156 | 10.4.3 | BANCO DE DUCTO WP14 |  | 3d | 2026-09-23 | 2026-09-25 | 155 |  |  | 2026-09-15 | 2026-09-18 | 3d | 125.75d | 0d | 9,527,825.69 | 9,527,825.69 |  |  | Día 58,8888888888889 | Día 56,2222222222222 |
| 157 | 10.4.4 | COMPACTACION DE SELLO DE BASE WP14 |  | 4d | 2026-09-25 | 2026-09-30 | 156 |  |  | 2026-09-18 | 2026-09-22 | 4d | 125.75d | 0d | 320,494,616.72 | 320,494,616.72 |  | Día 30 | Día 62,4444444444444 | Día 58,8888888888889 |
| 158 | 10.4.5 | SOLADO WP14 |  | 2d | 2026-09-30 | 2026-10-02 | 157, 67 |  |  | 2026-09-22 | 2026-09-24 | 2d | 125.75d | 0d | 94,303,618.55 | 94,303,618.55 |  | Día 28 | Día 64,2222222222222 | Día 62,4444444444444 |
| 159 | 10.4.6 | INSTALACIÓN DE PERNOS Y SOFT-SPOT WP14 |  | 5d | 2026-10-02 | 2026-10-07 | 158 |  |  | 2026-09-24 | 2026-09-30 | 5d | 125.75d | 0d | 179,436,034.15 | 179,436,034.15 |  | Día 30 | Día 68,6666666666667 | Día 64,2222222222222 |
| 160 | 10.4.7 | INSTALACIÓN DE ACERO DE REFUERZO WP14 |  | 15d | 2026-10-07 | 2026-10-24 | 159 |  |  | 2026-09-30 | 2026-10-16 | 15d | 125.75d | 0d | 1,212,623,361.21 | 1,212,623,361.21 |  |  | Día 82 | Día 68,6666666666667 |
| 161 | 10.4.8 | ENCOFRADO DE ZAPATA Y DE PEDESTAL WP14 |  | 3d | 2026-10-24 | 2026-10-27 | 160 |  |  | 2026-10-16 | 2026-10-20 | 3d | 126.75d | 0d |  |  |  |  | Día 84,6666666666667 | Día 82 |
| 162 | 10.4.9 | HITO: ALISTAMIENTO Y MOVILIZACIÓN DE PLANTA DE CONCRETO PARA WP14 | milestone | 0d | 2026-10-24 | 2026-10-24 | 160 |  |  | 2026-10-16 | 2026-10-16 | 0d | 129.75d | 3d |  |  |  | Día 0 | Día 82 | Día 82 |
| 163 | 10.4.10 | FUNDIDA WP14 |  | 1d | 2026-10-28 | 2026-10-28 | 161, 162 |  |  | 2026-10-20 | 2026-10-21 | 1d | 126.75d | 0d | 1,230,815,225.95 | 1,230,815,225.95 |  |  | Día 85,5555555555556 | Día 84,6666666666667 |
| 164 | 10.4.11 | CURADO DEL CONCRETO WP14 |  | 7d | 2026-10-28 | 2026-11-06 | 163 |  |  | 2026-10-21 | 2026-10-28 | 7d | 126.75d | 0d |  |  |  |  | Día 91,7777777777778 | Día 85,5555555555556 |
| 165 | 10.4.12 | INSTALACIONES ELECTRICAS Y SISTEMA PUESTA TIERRA WP14 |  | 3d | 2026-11-06 | 2026-11-09 | 164 |  |  | 2026-10-28 | 2026-10-31 | 3d | 126.75d | 0d | 52,736,347.43 | 52,736,347.43 |  | Día 28 | Día 94,4444444444444 | Día 91,7777777777778 |
| 166 | 10.4.13 | INSTALACION DE GROUT Y MORTERO AUTOCOMPACTANTE DE ALTA RESISTENCIA WP14 |  | 2d | 2026-11-09 | 2026-11-11 | 165 |  |  | 2026-10-31 | 2026-11-04 | 2d | 126.75d | 5.75d | 46,410,609.01 | 46,410,609.01 |  | Día 23 | Día 96,2222222222222 | Día 94,4444444444444 |
| 167 | 10.4.14 | TAPADO AREA DE CIMENTACIÓN Y CONFORMACIÓN DE PLATAFORMA WP14 |  | 10d | 2026-11-13 | 2026-11-25 | 165, 72, 115, 116, 70 |  |  | 2026-11-03 | 2026-11-13 | 10d | 123d | 2d | 1,587,346,329.55 | 1,587,346,329.55 |  | Día 23 | Día 106,666666666667 | Día 97,7777777777778 |
| 168 | 10.4.15 | ESTABILIZACIÓN DE TALUDES EN PLATAFORMA Y RECONFORMACION FINAL WP14 |  | 12d | 2026-11-18 | 2026-12-01 | 166SS+2d, 117, 167SS+2d |  |  | 2026-11-06 | 2026-11-20 | 12d | 121d | 0d | 179,532,477.24 | 179,532,477.24 |  |  | Día 112 | Día 101,333333333333 |
| 169 | 10.4.16 | HITO: FINALIZACION DE ACTIVIDADES EN CIMENTACION WP14 | milestone | 0d | 2026-12-01 | 2026-12-01 | 152, 168 |  |  | 2026-11-20 | 2026-11-20 | 0d | 241d | 2.88d |  |  |  | Día 0 | Día 112 | Día 112 |
| 170 | 10.5 | **CIMENTACION WP16** |  | 121d | 2026-07-24 A | 2026-12-04 |  | 9% | 110.58d | 2026-09-08 | 2026-11-26 | 72d | 238.12d |  | 5,292,218,375.87 | 5,308,872,732.05 | GRUPO 2 | Día 0 | Día 114,555555555556 | Día 7 |
| 171 | 10.5.1 | LOCALIZACION, REPLANTEO Y DESBROCE DE AREA DE ACOPIO DE TORRE Y DE PALAS WP16 |  | 56d | 2026-07-24 A | 2026-09-23 | 154, 7 | 20% | 44.8d | 2026-09-08 | 2026-09-15 | 7d | 0d |  | 66,617,424.7 | 83,271,780.88 |  |  | Día 56,7777777777778 | Día 7 |
| 172 | 10.5.2 | EXCAVACIÓN DE CIMENTACION WP16 |  | 7d | 2026-09-23 | 2026-09-30 | 171, 121, 155 |  |  | 2026-09-15 | 2026-09-22 | 7d | 29.12d | 0d | 312,374,505.67 | 312,374,505.67 |  | Día 23 | Día 63 | Día 56,7777777777778 |
| 173 | 10.5.3 | BANCO DE DUCTO WP16 |  | 3d | 2026-10-01 | 2026-10-03 | 172 |  |  | 2026-09-22 | 2026-09-25 | 3d | 41.12d | 0d | 9,527,825.69 | 9,527,825.69 |  |  | Día 65,6666666666667 | Día 63 |
| 174 | 10.5.4 | COMPACTACION DE SELLO DE BASE WP16 |  | 4d | 2026-10-03 | 2026-10-08 | 172, 173 |  |  | 2026-09-25 | 2026-09-30 | 4d | 41.12d | 0d | 320,494,616.72 | 320,494,616.72 |  | Día 30 | Día 69,2222222222222 | Día 65,6666666666667 |
| 175 | 10.5.5 | SOLADO WP16 |  | 2d | 2026-10-08 | 2026-10-10 | 174, 76 |  |  | 2026-09-30 | 2026-10-01 | 2d | 41.12d | 0d | 94,303,618.55 | 94,303,618.55 |  | Día 28 | Día 71 | Día 69,2222222222222 |
| 176 | 10.5.6 | INSTALACIÓN DE PERNOS Y SOFT-SPOT WP16 |  | 5d | 2026-10-10 | 2026-10-16 | 175, 126 |  |  | 2026-10-02 | 2026-10-07 | 5d | 41.12d | 0d | 179,436,034.15 | 179,436,034.15 |  | Día 30 | Día 75,4444444444444 | Día 71 |
| 177 | 10.5.7 | INSTALACIÓN DE ACERO DE REFUERZO WP16 |  | 15d | 2026-10-16 | 2026-11-03 | 176 |  |  | 2026-10-07 | 2026-10-23 | 15d | 41.12d | 0d | 1,212,623,361.21 | 1,212,623,361.21 |  |  | Día 88,7777777777778 | Día 75,4444444444444 |
| 178 | 10.5.8 | ENCOFRADO DE ZAPATA Y DE PEDESTAL WP16 |  | 3d | 2026-11-03 | 2026-11-05 | 177 |  |  | 2026-10-24 | 2026-10-27 | 3d | 128.12d | 0d |  |  |  |  | Día 91,4444444444444 | Día 88,7777777777778 |
| 179 | 10.5.9 | HITO: ALISTAMIENTO Y MOVILIZACIÓN DE PLANTA DE CONCRETO PARA WP16 | milestone | 0d | 2026-11-03 | 2026-11-03 | 177 |  |  | 2026-10-23 | 2026-10-23 | 0d | 131.12d | 3d |  |  |  | Día 0 | Día 88,7777777777778 | Día 88,7777777777778 |
| 180 | 10.5.10 | FUNDIDA WP16 |  | 1d | 2026-11-05 | 2026-11-06 | 178, 179 |  |  | 2026-10-27 | 2026-10-28 | 1d | 128.12d | 0d | 1,230,815,225.95 | 1,230,815,225.95 |  |  | Día 92,3333333333333 | Día 91,4444444444444 |
| 181 | 10.5.11 | CURADO DEL CONCRETO WP16 |  | 7d | 2026-11-06 | 2026-11-13 | 180 |  |  | 2026-10-28 | 2026-11-05 | 7d | 129.12d | 0d |  |  |  |  | Día 98,5555555555556 | Día 92,3333333333333 |
| 182 | 10.5.12 | INSTALACIONES ELECTRICAS Y SISTEMA PUESTA TIERRA WP16 |  | 3d | 2026-11-14 | 2026-11-18 | 181 |  |  | 2026-11-05 | 2026-11-09 | 3d | 129.12d | 0d | 52,736,347.43 | 52,736,347.43 |  | Día 28 | Día 101,222222222222 | Día 98,5555555555556 |
| 183 | 10.5.13 | INSTALACION DE GROUT Y MORTERO AUTOCOMPACTANTE DE ALTA RESISTENCIA WP16 |  | 2d | 2026-11-18 | 2026-11-20 | 182 |  |  | 2026-11-09 | 2026-11-11 | 2d | 129.12d | 1d | 46,410,609.01 | 46,410,609.01 |  | Día 23 | Día 103 | Día 101,222222222222 |
| 184 | 10.5.14 | TAPADO AREA DE CIMENTACIÓN Y CONFORMACIÓN DE PLATAFORMA WP16 |  | 10d | 2026-11-19 | 2026-11-30 | 182, 132, 81, 133, 79 |  |  | 2026-11-10 | 2026-11-21 | 10d | 128.12d | 0d | 1,587,346,329.55 | 1,587,346,329.55 |  | Día 23 | Día 111 | Día 102,111111111111 |
| 185 | 10.5.15 | ESTABILIZACIÓN DE TALUDES EN PLATAFORMA Y RECONFORMACION FINAL WP16 |  | 12d | 2026-11-21 | 2026-12-04 | 183SS+2d, 134, 184SS+2d |  |  | 2026-11-12 | 2026-11-26 | 12d | 128.12d | 0d | 179,532,477.24 | 179,532,477.24 |  |  | Día 114,555555555556 | Día 103,888888888889 |
| 186 | 10.5.16 | HITO: FINALIZACION DE ACTIVIDADES EN CIMENTACION WP16 | milestone | 0d | 2026-12-04 | 2026-12-04 | 169, 185 |  |  | 2026-11-26 | 2026-11-26 | 0d | 238.12d | 7.38d |  |  |  | Día 0 | Día 114,555555555556 | Día 114,555555555556 |

| ID | WBS | Task | Type | Duration | Start | Finish | Predecessors | Complete | Remaining | Baseline start | Baseline finish | Baseline duration | Total slack | Free slack | Cost | Baseline cost | GRUPO DE EJECUCION | Text20 | Text21 | Text30 |
| --- | --- | --- | --- | --- | --- | --- | --- | --- | --- | --- | --- | --- | --- | --- | --- | --- | --- | --- | --- | --- |
| 187 | 10.6 | **CIMENTACION WP18** |  | 128.38d | 2026-07-24 A | 2026-12-12 |  | 9% | 116.57d | 2026-09-15 | 2026-12-04 | 73d | 230.75d |  | 5,292,218,375.87 | 5,308,872,732.05 | GRUPO 3 | Día 0 | Día 121,111111111111 | Día 7 |
| 188 | 10.6.1 | LOCALIZACION, REPLANTEO Y DESBROCE DE AREA DE ACOPIO DE TORRE Y DE PALAS WP18 |  | 63d | 2026-07-24 A | 2026-09-30 | 171, 7 | 20% | 50.4d | 2026-09-15 | 2026-09-22 | 7d | 0d |  | 66,617,424.7 | 83,271,780.88 |  |  | Día 63 | Día 7 |
| 189 | 10.6.2 | EXCAVACIÓN DE CIMENTACION WP18 |  | 7d | 2026-10-01 | 2026-10-08 | 188, 138, 172 |  |  | 2026-09-22 | 2026-09-30 | 7d | 29.12d | 0d | 312,374,505.67 | 312,374,505.67 |  | Día 23 | Día 69,2222222222222 | Día 63 |
| 190 | 10.6.3 | BANCO DE DUCTO WP18 |  | 3d | 2026-10-08 | 2026-10-10 | 189 |  |  | 2026-09-30 | 2026-10-02 | 3d | 52.12d | 0d | 9,527,825.69 | 9,527,825.69 |  |  | Día 71,8888888888889 | Día 69,2222222222222 |
| 191 | 10.6.4 | COMPACTACION DE SELLO DE BASE WP18 |  | 4d | 2026-10-13 | 2026-10-16 | 189, 190 |  |  | 2026-10-02 | 2026-10-07 | 4d | 52.12d | 0.38d | 320,494,616.72 | 320,494,616.72 |  | Día 30 | Día 75,4444444444444 | Día 71,8888888888889 |
| 192 | 10.6.5 | SOLADO WP18 |  | 2d | 2026-10-16 | 2026-10-19 | 191, 143, 85 |  |  | 2026-10-08 | 2026-10-10 | 2d | 51.75d | 0d | 94,303,618.55 | 94,303,618.55 |  | Día 28 | Día 77,5555555555556 | Día 75,7777777777778 |
| 193 | 10.6.6 | INSTALACIÓN DE PERNOS Y SOFT-SPOT WP18 |  | 5d | 2026-10-19 | 2026-10-24 | 192 |  |  | 2026-10-10 | 2026-10-16 | 5d | 51.75d | 0d | 179,436,034.15 | 179,436,034.15 |  | Día 30 | Día 82 | Día 77,5555555555556 |
| 194 | 10.6.7 | INSTALACIÓN DE ACERO DE REFUERZO WP18 |  | 15d | 2026-10-24 | 2026-11-10 | 193 |  |  | 2026-10-16 | 2026-11-03 | 15d | 51.75d | 0d | 1,212,623,361.21 | 1,212,623,361.21 |  |  | Día 95,3333333333333 | Día 82 |
| 195 | 10.6.8 | ENCOFRADO DE ZAPATA Y DE PEDESTAL WP18 |  | 3d | 2026-11-10 | 2026-11-13 | 194 |  |  | 2026-11-03 | 2026-11-05 | 3d | 123.75d | 0d |  |  |  |  | Día 98 | Día 95,3333333333333 |
| 196 | 10.6.9 | HITO: ALISTAMIENTO Y MOVILIZACIÓN DE PLANTA DE CONCRETO PARA WP18 | milestone | 0d | 2026-11-10 | 2026-11-10 | 194 |  |  | 2026-11-03 | 2026-11-03 | 0d | 126.75d | 3d |  |  |  | Día 0 | Día 95,3333333333333 | Día 95,3333333333333 |
| 197 | 10.6.10 | FUNDIDA WP18 |  | 1d | 2026-11-13 | 2026-11-14 | 195, 196 |  |  | 2026-11-05 | 2026-11-06 | 1d | 123.75d | 0d | 1,230,815,225.95 | 1,230,815,225.95 |  |  | Día 98,8888888888889 | Día 98 |
| 198 | 10.6.11 | CURADO DEL CONCRETO WP18 |  | 7d | 2026-11-14 | 2026-11-23 | 197 |  |  | 2026-11-06 | 2026-11-14 | 7d | 123.75d | 0d |  |  |  |  | Día 105,111111111111 | Día 98,8888888888889 |
| 199 | 10.6.12 | INSTALACIONES ELECTRICAS Y SISTEMA PUESTA TIERRA WP18 |  | 3d | 2026-11-23 | 2026-11-26 | 198 |  |  | 2026-11-14 | 2026-11-18 | 3d | 123.75d | 0d | 52,736,347.43 | 52,736,347.43 |  | Día 28 | Día 107,777777777778 | Día 105,111111111111 |
| 200 | 10.6.13 | INSTALACION DE GROUT Y MORTERO AUTOCOMPACTANTE DE ALTA RESISTENCIA WP18 |  | 2d | 2026-11-26 | 2026-11-28 | 199 |  |  | 2026-11-18 | 2026-11-20 | 2d | 123.75d | 1d | 46,410,609.01 | 46,410,609.01 |  | Día 23 | Día 109,555555555556 | Día 107,777777777778 |
| 201 | 10.6.14 | TAPADO AREA DE CIMENTACIÓN Y CONFORMACIÓN DE PLATAFORMA WP18 |  | 10d | 2026-11-27 | 2026-12-09 | 199, 149, 90, 150, 88 |  |  | 2026-11-19 | 2026-11-30 | 10d | 122.75d | 0d | 1,587,346,329.55 | 1,587,346,329.55 |  | Día 23 | Día 117,555555555556 | Día 108,666666666667 |
| 202 | 10.6.15 | ESTABILIZACIÓN DE TALUDES EN PLATAFORMA Y RECONFORMACION FINAL WP18 |  | 12d | 2026-11-30 | 2026-12-12 | 200SS+2d, 151, 201SS+2d |  |  | 2026-11-21 | 2026-12-04 | 12d | 122.75d | 0d | 179,532,477.24 | 179,532,477.24 |  |  | Día 121,111111111111 | Día 110,444444444444 |
| 203 | 10.6.16 | HITO: FINALIZACION DE ACTIVIDADES EN CIMENTACION WP18 | milestone | 0d | 2026-12-12 | 2026-12-12 | 202, 186 |  |  | 2026-12-04 | 2026-12-04 | 0d | 230.75d | 9.88d |  |  |  | Día 0 | Día 121,111111111111 | Día 121,111111111111 |
| 204 | 10.7 | **CIMENTACION WP9** |  | 135d | 2026-07-28 A | 2026-12-23 |  | 10% | 122.17d | 2026-09-22 | 2026-12-15 | 75d | 220.88d |  | 5,292,218,375.87 | 5,308,872,732.05 | GRUPO 1 | Día 0 | Día 129,888888888889 | Día 9,88888888888889 |
| 205 | 10.7.1 | LOCALIZACION, REPLANTEO Y DESBROCE DE AREA DE ACOPIO DE TORRE Y DE PALAS WP9 |  | 67d | 2026-07-28 A | 2026-10-08 | 188, 11 | 20% | 53.6d | 2026-09-22 | 2026-09-30 | 7d | 0d |  | 66,617,424.7 | 83,271,780.88 |  |  | Día 69,4444444444444 | Día 9,88888888888889 |
| 206 | 10.7.2 | EXCAVACIÓN DE CIMENTACION WP9 |  | 7d | 2026-10-08 | 2026-10-16 | 205, 155, 189 |  |  | 2026-09-30 | 2026-10-07 | 7d | 28.88d | 0d | 312,374,505.67 | 312,374,505.67 |  | Día 23 | Día 75,6666666666667 | Día 69,4444444444444 |
| 207 | 10.7.3 | BANCO DE DUCTO WP9 |  | 3d | 2026-10-16 | 2026-10-20 | 206 |  |  | 2026-10-07 | 2026-10-10 | 3d | 28.88d | 0d | 9,527,825.69 | 9,527,825.69 |  |  | Día 78,3333333333333 | Día 75,6666666666667 |
| 208 | 10.7.4 | COMPACTACION DE SELLO DE BASE WP9 |  | 4d | 2026-10-20 | 2026-10-24 | 207 |  |  | 2026-10-10 | 2026-10-15 | 4d | 28.88d | 0d | 320,494,616.72 | 320,494,616.72 |  | Día 30 | Día 81,8888888888889 | Día 78,3333333333333 |
| 209 | 10.7.5 | SOLADO WP9 |  | 2d | 2026-10-24 | 2026-10-26 | 208, 94 |  |  | 2026-10-15 | 2026-10-17 | 2d | 28.88d | 0d | 94,303,618.55 | 94,303,618.55 |  | Día 28 | Día 83,6666666666667 | Día 81,8888888888889 |
| 210 | 10.7.6 | INSTALACIÓN DE PERNOS Y SOFT-SPOT WP9 |  | 5d | 2026-10-27 | 2026-10-31 | 209 |  |  | 2026-10-17 | 2026-10-23 | 5d | 28.88d | 0d | 179,436,034.15 | 179,436,034.15 |  | Día 30 | Día 88,1111111111111 | Día 83,6666666666667 |
| 211 | 10.7.7 | INSTALACIÓN DE ACERO DE REFUERZO WP9 |  | 15d | 2026-10-31 | 2026-11-18 | 210 |  |  | 2026-10-23 | 2026-11-09 | 15d | 28.88d | 0d | 1,212,623,361.21 | 1,212,623,361.21 |  |  | Día 101,444444444444 | Día 88,1111111111111 |
| 212 | 10.7.8 | ENCOFRADO DE ZAPATA Y DE PEDESTAL WP9 |  | 3d | 2026-11-18 | 2026-11-21 | 211 |  |  | 2026-11-09 | 2026-11-12 | 3d | 118.88d | 0d |  |  |  |  | Día 104,111111111111 | Día 101,444444444444 |
| 213 | 10.7.9 | HITO: ALISTAMIENTO Y MOVILIZACIÓN DE PLANTA DE CONCRETO PARA WP9 | milestone | 0d | 2026-11-18 | 2026-11-18 | 211 |  |  | 2026-11-09 | 2026-11-09 | 0d | 121.88d | 3d |  |  |  | Día 0 | Día 101,444444444444 | Día 101,444444444444 |
| 214 | 10.7.10 | FUNDIDA WP9 |  | 1d | 2026-11-21 | 2026-11-23 | 212, 213 |  |  | 2026-11-12 | 2026-11-13 | 1d | 118.88d | 0d | 1,230,815,225.95 | 1,230,815,225.95 |  |  | Día 105 | Día 104,111111111111 |
| 215 | 10.7.11 | CURADO DEL CONCRETO WP9 |  | 7d | 2026-11-23 | 2026-11-30 | 214 |  |  | 2026-11-13 | 2026-11-21 | 7d | 118.88d | 4d |  |  |  |  | Día 111,222222222222 | Día 105 |
| 216 | 10.7.12 | INSTALACIONES ELECTRICAS Y SISTEMA PUESTA TIERRA WP9 |  | 3d | 2026-12-04 | 2026-12-09 | 215, 100 |  |  | 2026-11-26 | 2026-11-28 | 3d | 114.88d | 0d | 52,736,347.43 | 52,736,347.43 |  | Día 28 | Día 117,444444444444 | Día 114,777777777778 |
| 217 | 10.7.13 | INSTALACION DE GROUT Y MORTERO AUTOCOMPACTANTE DE ALTA RESISTENCIA WP9 |  | 2d | 2026-12-09 | 2026-12-10 | 216 |  |  | 2026-11-28 | 2026-12-01 | 2d | 114.88d | 0d | 46,410,609.01 | 46,410,609.01 |  | Día 23 | Día 119,222222222222 | Día 117,444444444444 |
| 218 | 10.7.14 | TAPADO AREA DE CIMENTACIÓN Y CONFORMACIÓN DE PLATAFORMA WP9 |  | 10d | 2026-12-09 | 2026-12-19 | 216, 168, 166, 99, 167, 97 |  |  | 2026-11-28 | 2026-12-10 | 10d | 114.88d | 0d | 1,587,346,329.55 | 1,587,346,329.55 |  | Día 23 | Día 126,333333333333 | Día 117,444444444444 |
| 219 | 10.7.15 | ESTABILIZACIÓN DE TALUDES EN PLATAFORMA Y RECONFORMACION FINAL WP9 |  | 12d | 2026-12-11 | 2026-12-23 | 217SS+2d, 168, 218SS+2d |  |  | 2026-12-01 | 2026-12-15 | 12d | 114.88d | 0d | 179,532,477.24 | 179,532,477.24 |  |  | Día 129,888888888889 | Día 119,222222222222 |
| 220 | 10.7.16 | HITO: FINALIZACION DE ACTIVIDADES EN CIMENTACION WP9 | milestone | 0d | 2026-12-23 | 2026-12-23 | 219, 203 |  |  | 2026-12-15 | 2026-12-15 | 0d | 220.88d | 3.75d |  |  |  | Día 0 | Día 129,888888888889 | Día 129,888888888889 |

| ID | WBS | Task | Type | Duration | Start | Finish | Predecessors | Complete | Remaining | Baseline start | Baseline finish | Baseline duration | Total slack | Free slack | Cost | Baseline cost | GRUPO DE EJECUCION | Text20 | Text21 | Text30 |
| --- | --- | --- | --- | --- | --- | --- | --- | --- | --- | --- | --- | --- | --- | --- | --- | --- | --- | --- | --- | --- |
| 221 | 10.8 | **CIMENTACION WP8** |  | 137.62d | 2026-07-29 A | 2026-12-29 |  | 10% | 123.96d | 2026-09-30 | 2026-12-19 | 72d | 217.12d |  | 5,292,218,375.87 | 5,308,872,732.05 | GRUPO 2 | Día 0 | Día 133,222222222222 | Día 10,8888888888889 |
| 222 | 10.8.1 | LOCALIZACION, REPLANTEO Y DESBROCE DE AREA DE ACOPIO DE TORRE Y DE PALAS WP8 |  | 73d | 2026-07-29 A | 2026-10-16 | 205, 11 | 20% | 58.4d | 2026-09-30 | 2026-10-07 | 7d | 0d |  | 66,617,424.7 | 83,271,780.88 |  |  | Día 75,7777777777778 | Día 10,8888888888889 |
| 223 | 10.8.2 | EXCAVACIÓN DE CIMENTACION WP8 |  | 7d | 2026-10-16 | 2026-10-24 | 222, 172, 206 |  |  | 2026-10-07 | 2026-10-15 | 7d | 29.75d | 0d | 312,374,505.67 | 312,374,505.67 |  | Día 23 | Día 82 | Día 75,7777777777778 |
| 224 | 10.8.3 | BANCO DE DUCTO WP8 |  | 3d | 2026-10-24 | 2026-10-27 | 223 |  |  | 2026-10-15 | 2026-10-19 | 3d | 41.75d | 0d | 9,527,825.69 | 9,527,825.69 |  |  | Día 84,6666666666667 | Día 82 |
| 225 | 10.8.4 | COMPACTACION DE SELLO DE BASE WP8 |  | 4d | 2026-10-28 | 2026-10-31 | 223, 224 |  |  | 2026-10-19 | 2026-10-23 | 4d | 41.75d | 0.62d | 320,494,616.72 | 320,494,616.72 |  | Día 30 | Día 88,2222222222222 | Día 84,6666666666667 |
| 226 | 10.8.5 | SOLADO WP8 |  | 2d | 2026-11-03 | 2026-11-04 | 225, 177 |  |  | 2026-10-24 | 2026-10-26 | 2d | 41.12d | 0d | 94,303,618.55 | 94,303,618.55 |  | Día 28 | Día 90,5555555555556 | Día 88,7777777777778 |
| 227 | 10.8.6 | INSTALACIÓN DE PERNOS Y SOFT-SPOT WP8 |  | 5d | 2026-11-04 | 2026-11-10 | 226 |  |  | 2026-10-26 | 2026-10-31 | 5d | 41.12d | 0d | 179,436,034.15 | 179,436,034.15 |  | Día 30 | Día 95 | Día 90,5555555555556 |
| 228 | 10.8.7 | INSTALACIÓN DE ACERO DE REFUERZO WP8 |  | 15d | 2026-11-10 | 2026-11-26 | 227 |  |  | 2026-10-31 | 2026-11-18 | 15d | 41.12d | 0d | 1,212,623,361.21 | 1,212,623,361.21 |  |  | Día 108,333333333333 | Día 95 |
| 229 | 10.8.8 | ENCOFRADO DE ZAPATA Y DE PEDESTAL WP8 |  | 3d | 2026-11-26 | 2026-11-30 | 228 |  |  | 2026-11-18 | 2026-11-21 | 3d | 121.12d | 0d |  |  |  |  | Día 111 | Día 108,333333333333 |
| 230 | 10.8.9 | HITO: ALISTAMIENTO Y MOVILIZACIÓN DE PLANTA DE CONCRETO PARA WP8 | milestone | 0d | 2026-11-26 | 2026-11-26 | 228 |  |  | 2026-11-18 | 2026-11-18 | 0d | 124.12d | 3d |  |  |  | Día 0 | Día 108,333333333333 | Día 108,333333333333 |
| 231 | 10.8.10 | FUNDIDA WP8 |  | 1d | 2026-11-30 | 2026-12-01 | 229, 230 |  |  | 2026-11-21 | 2026-11-23 | 1d | 121.12d | 0d | 1,230,815,225.95 | 1,230,815,225.95 |  |  | Día 111,888888888889 | Día 111 |
| 232 | 10.8.11 | CURADO DEL CONCRETO WP8 |  | 7d | 2026-12-01 | 2026-12-09 | 231 |  |  | 2026-11-23 | 2026-11-30 | 7d | 121.12d | 0d |  |  |  |  | Día 118,111111111111 | Día 111,888888888889 |
| 233 | 10.8.12 | INSTALACIONES ELECTRICAS Y SISTEMA PUESTA TIERRA WP8 |  | 3d | 2026-12-09 | 2026-12-12 | 232 |  |  | 2026-11-30 | 2026-12-03 | 3d | 121.12d | 0d | 52,736,347.43 | 52,736,347.43 |  | Día 28 | Día 120,777777777778 | Día 118,111111111111 |
| 234 | 10.8.13 | INSTALACION DE GROUT Y MORTERO AUTOCOMPACTANTE DE ALTA RESISTENCIA WP8 |  | 2d | 2026-12-12 | 2026-12-15 | 233 |  |  | 2026-12-03 | 2026-12-05 | 2d | 121.12d | 0d | 46,410,609.01 | 46,410,609.01 |  | Día 23 | Día 122,555555555556 | Día 120,777777777778 |
| 235 | 10.8.14 | TAPADO AREA DE CIMENTACIÓN Y CONFORMACIÓN DE PLATAFORMA WP8 |  | 10d | 2026-12-12 | 2026-12-23 | 233, 185, 183, 184 |  |  | 2026-12-03 | 2026-12-15 | 10d | 121.12d | 0d | 1,587,346,329.55 | 1,587,346,329.55 |  | Día 23 | Día 129,666666666667 | Día 120,777777777778 |
| 236 | 10.8.15 | ESTABILIZACIÓN DE TALUDES EN PLATAFORMA Y RECONFORMACION FINAL WP8 |  | 12d | 2026-12-15 | 2026-12-29 | 234SS+2d, 185, 235SS+2d |  |  | 2026-12-05 | 2026-12-19 | 12d | 121.12d | 0d | 179,532,477.24 | 179,532,477.24 |  |  | Día 133,222222222222 | Día 122,555555555556 |
| 237 | 10.8.16 | HITO: FINALIZACION DE ACTIVIDADES EN CIMENTACION WP8 | milestone | 0d | 2026-12-29 | 2026-12-29 | 236, 220 |  |  | 2026-12-19 | 2026-12-19 | 0d | 217.12d | 7.38d |  |  |  | Día 0 | Día 133,222222222222 | Día 133,222222222222 |
| 238 | 10.9 | **CIMENTACION WP19** |  | 141.62d | 2026-08-01 A | 2027-01-06 |  | 10% | 127.18d | 2026-10-07 | 2026-12-29 | 73d | 209.75d |  | 5,292,218,375.87 | 5,308,872,732.05 | GRUPO 3 | Día 0 | Día 139,777777777778 | Día 13,8888888888889 |
| 239 | 10.9.1 | LOCALIZACION, REPLANTEO Y DESBROCE DE AREA DE ACOPIO DE TORRE Y DE PALAS WP19 |  | 77d | 2026-08-01 A | 2026-10-24 | 222, 12 | 20% | 61.6d | 2026-10-07 | 2026-10-15 | 7d | 0d |  | 66,617,424.7 | 83,271,780.88 |  |  | Día 82,3333333333333 | Día 13,8888888888889 |
| 240 | 10.9.2 | EXCAVACIÓN DE CIMENTACION WP19 |  | 7d | 2026-10-24 | 2026-10-31 | 239, 189, 223 |  |  | 2026-10-15 | 2026-10-23 | 7d | 29.38d | 0d | 312,374,505.67 | 312,374,505.67 |  | Día 23 | Día 88,5555555555556 | Día 82,3333333333333 |
| 241 | 10.9.3 | BANCO DE DUCTO WP19 |  | 3d | 2026-10-31 | 2026-11-05 | 240 |  |  | 2026-10-23 | 2026-10-26 | 3d | 52.38d | 0d | 9,527,825.69 | 9,527,825.69 |  |  | Día 91,2222222222222 | Día 88,5555555555556 |
| 242 | 10.9.4 | COMPACTACION DE SELLO DE BASE WP19 |  | 4d | 2026-11-05 | 2026-11-10 | 240, 241 |  |  | 2026-10-26 | 2026-10-30 | 4d | 52.38d | 0.62d | 320,494,616.72 | 320,494,616.72 |  | Día 30 | Día 94,7777777777778 | Día 91,2222222222222 |
| 243 | 10.9.5 | SOLADO WP19 |  | 2d | 2026-11-10 | 2026-11-12 | 242, 194 |  |  | 2026-11-03 | 2026-11-04 | 2d | 51.75d | 0d | 94,303,618.55 | 94,303,618.55 |  | Día 28 | Día 97,1111111111111 | Día 95,3333333333333 |
| 244 | 10.9.6 | INSTALACIÓN DE PERNOS Y SOFT-SPOT WP19 |  | 5d | 2026-11-12 | 2026-11-18 | 243 |  |  | 2026-11-05 | 2026-11-10 | 5d | 51.75d | 0d | 179,436,034.15 | 179,436,034.15 |  | Día 30 | Día 101,555555555556 | Día 97,1111111111111 |
| 245 | 10.9.7 | INSTALACIÓN DE ACERO DE REFUERZO WP19 |  | 15d | 2026-11-19 | 2026-12-04 | 244 |  |  | 2026-11-10 | 2026-11-26 | 15d | 51.75d | 0d | 1,212,623,361.21 | 1,212,623,361.21 |  |  | Día 114,888888888889 | Día 101,555555555556 |
| 246 | 10.9.8 | ENCOFRADO DE ZAPATA Y DE PEDESTAL WP19 |  | 3d | 2026-12-04 | 2026-12-09 | 245 |  |  | 2026-11-27 | 2026-11-30 | 3d | 113.75d | 0d |  |  |  |  | Día 117,555555555556 | Día 114,888888888889 |
| 247 | 10.9.9 | HITO: ALISTAMIENTO Y MOVILIZACIÓN DE PLANTA DE CONCRETO PARA WP19 | milestone | 0d | 2026-12-04 | 2026-12-04 | 245 |  |  | 2026-11-26 | 2026-11-26 | 0d | 116.75d | 3d |  |  |  | Día 0 | Día 114,888888888889 | Día 114,888888888889 |
| 248 | 10.9.10 | FUNDIDA WP19 |  | 1d | 2026-12-09 | 2026-12-10 | 246, 247 |  |  | 2026-11-30 | 2026-12-01 | 1d | 113.75d | 0d | 1,230,815,225.95 | 1,230,815,225.95 |  |  | Día 118,444444444444 | Día 117,555555555556 |
| 249 | 10.9.11 | CURADO DEL CONCRETO WP19 |  | 7d | 2026-12-10 | 2026-12-17 | 248 |  |  | 2026-12-01 | 2026-12-09 | 7d | 113.75d | 0d |  |  |  |  | Día 124,666666666667 | Día 118,444444444444 |
| 250 | 10.9.12 | INSTALACIONES ELECTRICAS Y SISTEMA PUESTA TIERRA WP19 |  | 3d | 2026-12-17 | 2026-12-21 | 249 |  |  | 2026-12-10 | 2026-12-12 | 3d | 113.75d | 0d | 52,736,347.43 | 52,736,347.43 |  | Día 28 | Día 127,333333333333 | Día 124,666666666667 |
| 251 | 10.9.13 | INSTALACION DE GROUT Y MORTERO AUTOCOMPACTANTE DE ALTA RESISTENCIA WP19 |  | 2d | 2026-12-21 | 2026-12-23 | 250 |  |  | 2026-12-12 | 2026-12-15 | 2d | 113.75d | 0d | 46,410,609.01 | 46,410,609.01 |  | Día 23 | Día 129,111111111111 | Día 127,333333333333 |
| 252 | 10.9.14 | TAPADO AREA DE CIMENTACIÓN Y CONFORMACIÓN DE PLATAFORMA WP19 |  | 10d | 2026-12-21 | 2027-01-02 | 250, 200, 201 |  |  | 2026-12-12 | 2026-12-23 | 10d | 113.75d | 0d | 1,587,346,329.55 | 1,587,346,329.55 |  | Día 23 | Día 136,222222222222 | Día 127,333333333333 |
| 253 | 10.9.15 | ESTABILIZACIÓN DE TALUDES EN PLATAFORMA Y RECONFORMACION FINAL WP19 |  | 12d | 2026-12-23 | 2027-01-06 | 251SS+2d, 202, 252SS+2d |  |  | 2026-12-15 | 2026-12-29 | 12d | 113.75d | 0d | 179,532,477.24 | 179,532,477.24 |  |  | Día 139,777777777778 | Día 129,111111111111 |
| 254 | 10.9.16 | HITO: FINALIZACION DE ACTIVIDADES EN CIMENTACION WP19 | milestone | 0d | 2027-01-06 | 2027-01-06 | 253, 237 |  |  | 2026-12-29 | 2026-12-29 | 0d | 209.75d | 7.38d |  |  |  | Día 0 | Día 139,777777777778 | Día 139,777777777778 |

| ID | WBS | Task | Type | Duration | Start | Finish | Predecessors | Complete | Remaining | Baseline start | Baseline finish | Baseline duration | Total slack | Free slack | Cost | Baseline cost | GRUPO DE EJECUCION | Text20 | Text21 | Text30 |
| --- | --- | --- | --- | --- | --- | --- | --- | --- | --- | --- | --- | --- | --- | --- | --- | --- | --- | --- | --- | --- |
| 255 | 10.10 | **CIMENTACION WP20** |  | 149d | 2026-08-01 A | 2027-01-15 |  | 11% | 133.07d | 2026-10-15 | 2027-01-05 | 72d | 202.38d |  | 5,292,218,375.87 | 5,308,872,732.05 | GRUPO 1 | Día 0 | Día 146,333333333333 | Día 13,8888888888889 |
| 256 | 10.10.1 | LOCALIZACION, REPLANTEO Y DESBROCE DE AREA DE ACOPIO DE TORRE Y DE PALAS WP20 |  | 85d | 2026-08-01 A | 2026-11-03 | 239, 12 | 20% | 68d | 2026-10-15 | 2026-10-23 | 8d | 0d |  | 66,617,424.7 | 83,271,780.88 |  |  | Día 89,4444444444444 | Día 13,8888888888889 |
| 257 | 10.10.2 | EXCAVACIÓN DE CIMENTACION WP20 |  | 7d | 2026-11-03 | 2026-11-11 | 256, 206, 240 |  |  | 2026-10-24 | 2026-10-31 | 7d | 28.38d | 0d | 312,374,505.67 | 312,374,505.67 |  | Día 23 | Día 95,6666666666667 | Día 89,4444444444444 |
| 258 | 10.10.3 | BANCO DE DUCTO WP20 |  | 3d | 2026-11-11 | 2026-11-13 | 257 |  |  | 2026-10-31 | 2026-11-04 | 3d | 28.38d | 0d | 9,527,825.69 | 9,527,825.69 |  |  | Día 98,3333333333333 | Día 95,6666666666667 |
| 259 | 10.10.4 | COMPACTACION DE SELLO DE BASE WP20 |  | 4d | 2026-11-13 | 2026-11-19 | 257, 258 |  |  | 2026-11-05 | 2026-11-09 | 4d | 28.38d | 0d | 320,494,616.72 | 320,494,616.72 |  | Día 30 | Día 101,888888888889 | Día 98,3333333333333 |
| 260 | 10.10.5 | SOLADO WP20 |  | 2d | 2026-11-19 | 2026-11-21 | 259, 211 |  |  | 2026-11-09 | 2026-11-11 | 2d | 28.38d | 0d | 94,303,618.55 | 94,303,618.55 |  | Día 28 | Día 103,666666666667 | Día 101,888888888889 |
| 261 | 10.10.6 | INSTALACIÓN DE PERNOS Y SOFT-SPOT WP20 |  | 5d | 2026-11-21 | 2026-11-26 | 260 |  |  | 2026-11-11 | 2026-11-17 | 5d | 28.38d | 0d | 179,436,034.15 | 179,436,034.15 |  | Día 30 | Día 108,111111111111 | Día 103,666666666667 |
| 262 | 10.10.7 | INSTALACIÓN DE ACERO DE REFUERZO WP20 |  | 15d | 2026-11-26 | 2026-12-14 | 261 |  |  | 2026-11-17 | 2026-12-03 | 15d | 28.38d | 0d | 1,212,623,361.21 | 1,212,623,361.21 |  |  | Día 121,444444444444 | Día 108,111111111111 |
| 263 | 10.10.8 | ENCOFRADO DE ZAPATA Y DE PEDESTAL WP20 |  | 3d | 2026-12-14 | 2026-12-16 | 262 |  |  | 2026-12-03 | 2026-12-07 | 3d | 108.38d | 0d |  |  |  |  | Día 124,111111111111 | Día 121,444444444444 |
| 264 | 10.10.9 | HITO: ALISTAMIENTO Y MOVILIZACIÓN DE PLANTA DE CONCRETO PARA WP20 | milestone | 0d | 2026-12-14 | 2026-12-14 | 262 |  |  | 2026-12-03 | 2026-12-03 | 0d | 111.38d | 3d |  |  |  | Día 0 | Día 121,444444444444 | Día 121,444444444444 |
| 265 | 10.10.10 | FUNDIDA WP20 |  | 1d | 2026-12-17 | 2026-12-17 | 263, 264 |  |  | 2026-12-07 | 2026-12-09 | 1d | 108.38d | 0d | 1,230,815,225.95 | 1,230,815,225.95 |  |  | Día 125 | Día 124,111111111111 |
| 266 | 10.10.11 | CURADO DEL CONCRETO WP20 |  | 7d | 2026-12-17 | 2026-12-26 | 265 |  |  | 2026-12-09 | 2026-12-16 | 7d | 108.38d | 0d |  |  |  |  | Día 131,222222222222 | Día 125 |
| 267 | 10.10.12 | INSTALACIONES ELECTRICAS Y SISTEMA PUESTA TIERRA WP20 |  | 3d | 2026-12-26 | 2026-12-29 | 266 |  |  | 2026-12-16 | 2026-12-19 | 3d | 108.38d | 0d | 52,736,347.43 | 52,736,347.43 |  | Día 28 | Día 133,888888888889 | Día 131,222222222222 |
| 268 | 10.10.13 | INSTALACION DE GROUT Y MORTERO AUTOCOMPACTANTE DE ALTA RESISTENCIA WP20 |  | 2d | 2026-12-30 | 2026-12-31 | 267 |  |  | 2026-12-19 | 2026-12-21 | 2d | 108.38d | 0d | 46,410,609.01 | 46,410,609.01 |  | Día 23 | Día 135,666666666667 | Día 133,888888888889 |
| 269 | 10.10.14 | TAPADO AREA DE CIMENTACIÓN Y CONFORMACIÓN DE PLATAFORMA WP20 |  | 10d | 2026-12-30 | 2027-01-09 | 267, 217, 218 |  |  | 2026-12-19 | 2026-12-31 | 10d | 108.38d | 0d | 1,587,346,329.55 | 1,587,346,329.55 |  | Día 23 | Día 142,777777777778 | Día 133,888888888889 |
| 270 | 10.10.15 | ESTABILIZACIÓN DE TALUDES EN PLATAFORMA Y RECONFORMACION FINAL WP20 |  | 12d | 2026-12-31 | 2027-01-15 | 268SS+2d, 219, 269SS+2d |  |  | 2026-12-22 | 2027-01-05 | 12d | 108.38d | 0d | 179,532,477.24 | 179,532,477.24 |  |  | Día 146,333333333333 | Día 135,666666666667 |
| 271 | 10.10.16 | HITO: FINALIZACION DE ACTIVIDADES EN CIMENTACION WP20 | milestone | 0d | 2027-01-15 | 2027-01-15 | 270, 254 |  |  | 2027-01-05 | 2027-01-05 | 0d | 202.38d | 8.12d |  |  |  | Día 0 | Día 146,333333333333 | Día 146,333333333333 |
| 272 | 10.11 | **CIMENTACION WP22** |  | 156d | 2026-08-03 A | 2027-01-23 |  | 11% | 138.71d | 2026-10-24 | 2027-01-14 | 72d | 194.25d |  | 5,292,218,375.87 | 5,308,872,732.05 | GRUPO 2 | Día 0 | Día 153,555555555556 | Día 14,8888888888889 |
| 273 | 10.11.1 | LOCALIZACION, REPLANTEO Y DESBROCE DE AREA DE ACOPIO DE TORRE Y DE PALAS WP22 |  | 92d | 2026-08-03 A | 2026-11-12 | 256, 12, 13, 14 | 20% | 73.6d | 2026-10-24 | 2026-11-03 | 8d | 0d |  | 66,617,424.7 | 83,271,780.88 |  |  | Día 96,6666666666667 | Día 14,8888888888889 |
| 274 | 10.11.2 | EXCAVACIÓN DE CIMENTACION WP22 |  | 7d | 2026-11-12 | 2026-11-20 | 273, 223, 257 |  |  | 2026-11-03 | 2026-11-10 | 7d | 28.25d | 0d | 312,374,505.67 | 312,374,505.67 |  | Día 23 | Día 102,888888888889 | Día 96,6666666666667 |
| 275 | 10.11.3 | BANCO DE DUCTO WP22 |  | 3d | 2026-11-20 | 2026-11-24 | 274 |  |  | 2026-11-10 | 2026-11-13 | 3d | 40.25d | 0d | 9,527,825.69 | 9,527,825.69 |  |  | Día 105,555555555556 | Día 102,888888888889 |
| 276 | 10.11.4 | COMPACTACION DE SELLO DE BASE WP22 |  | 4d | 2026-11-24 | 2026-11-27 | 274, 275 |  |  | 2026-11-13 | 2026-11-18 | 4d | 40.25d | 0d | 320,494,616.72 | 320,494,616.72 |  | Día 30 | Día 109,111111111111 | Día 105,555555555556 |
| 277 | 10.11.5 | SOLADO WP22 |  | 2d | 2026-11-27 | 2026-11-30 | 276, 228 |  |  | 2026-11-18 | 2026-11-20 | 2d | 40.25d | 0d | 94,303,618.55 | 94,303,618.55 |  | Día 28 | Día 110,888888888889 | Día 109,111111111111 |
| 278 | 10.11.6 | INSTALACIÓN DE PERNOS Y SOFT-SPOT WP22 |  | 5d | 2026-11-30 | 2026-12-04 | 277 |  |  | 2026-11-20 | 2026-11-26 | 5d | 40.25d | 0d | 179,436,034.15 | 179,436,034.15 |  | Día 30 | Día 115,333333333333 | Día 110,888888888889 |
| 279 | 10.11.7 | INSTALACIÓN DE ACERO DE REFUERZO WP22 |  | 15d | 2026-12-05 | 2026-12-22 | 278 |  |  | 2026-11-26 | 2026-12-12 | 15d | 40.25d | 0d | 1,212,623,361.21 | 1,212,623,361.21 |  |  | Día 128,666666666667 | Día 115,333333333333 |
| 280 | 10.11.8 | ENCOFRADO DE ZAPATA Y DE PEDESTAL WP22 |  | 3d | 2026-12-22 | 2026-12-26 | 279 |  |  | 2026-12-12 | 2026-12-16 | 3d | 110.25d | 0d |  |  |  |  | Día 131,333333333333 | Día 128,666666666667 |
| 281 | 10.11.9 | HITO: ALISTAMIENTO Y MOVILIZACIÓN DE PLANTA DE CONCRETO PARA WP22 | milestone | 0d | 2026-12-22 | 2026-12-22 | 279 |  |  | 2026-12-12 | 2026-12-12 | 0d | 113.25d | 3d |  |  |  | Día 0 | Día 128,666666666667 | Día 128,666666666667 |
| 282 | 10.11.10 | FUNDIDA WP22 |  | 1d | 2026-12-26 | 2026-12-28 | 280, 281 |  |  | 2026-12-16 | 2026-12-17 | 1d | 110.25d | 0d | 1,230,815,225.95 | 1,230,815,225.95 |  |  | Día 132,222222222222 | Día 131,333333333333 |
| 283 | 10.11.11 | CURADO DEL CONCRETO WP22 |  | 7d | 2026-12-28 | 2027-01-05 | 282 |  |  | 2026-12-17 | 2026-12-24 | 7d | 110.25d | 0d |  |  |  |  | Día 138,444444444444 | Día 132,222222222222 |
| 284 | 10.11.12 | INSTALACIONES ELECTRICAS Y SISTEMA PUESTA TIERRA WP22 |  | 3d | 2027-01-05 | 2027-01-08 | 283 |  |  | 2026-12-24 | 2026-12-29 | 3d | 110.25d | 0d | 52,736,347.43 | 52,736,347.43 |  | Día 28 | Día 141,111111111111 | Día 138,444444444444 |
| 285 | 10.11.13 | INSTALACION DE GROUT Y MORTERO AUTOCOMPACTANTE DE ALTA RESISTENCIA WP22 |  | 2d | 2027-01-08 | 2027-01-12 | 284 |  |  | 2026-12-29 | 2026-12-31 | 2d | 110.25d | 0d | 46,410,609.01 | 46,410,609.01 |  | Día 23 | Día 142,888888888889 | Día 141,111111111111 |
| 286 | 10.11.14 | TAPADO AREA DE CIMENTACIÓN Y CONFORMACIÓN DE PLATAFORMA WP22 |  | 10d | 2027-01-08 | 2027-01-20 | 284, 234, 235 |  |  | 2026-12-29 | 2027-01-09 | 10d | 110.25d | 0d | 1,587,346,329.55 | 1,587,346,329.55 |  | Día 23 | Día 150 | Día 141,111111111111 |
| 287 | 10.11.15 | ESTABILIZACIÓN DE TALUDES EN PLATAFORMA Y RECONFORMACION FINAL WP22 |  | 12d | 2027-01-12 | 2027-01-23 | 285SS+2d, 236, 286SS+2d |  |  | 2026-12-31 | 2027-01-14 | 12d | 110.25d | 0d | 179,532,477.24 | 179,532,477.24 |  |  | Día 153,555555555556 | Día 142,888888888889 |
| 288 | 10.11.16 | HITO: FINALIZACION DE ACTIVIDADES EN CIMENTACION WP22 | milestone | 0d | 2027-01-23 | 2027-01-23 | 287, 271 |  |  | 2027-01-14 | 2027-01-14 | 0d | 194.25d | 8.62d |  |  |  | Día 0 | Día 153,555555555556 | Día 153,555555555556 |

| ID | WBS | Task | Type | Duration | Start | Finish | Predecessors | Complete | Remaining | Baseline start | Baseline finish | Baseline duration | Total slack | Free slack | Cost | Baseline cost | GRUPO DE EJECUCION | Text20 | Text21 | Text30 |
| --- | --- | --- | --- | --- | --- | --- | --- | --- | --- | --- | --- | --- | --- | --- | --- | --- | --- | --- | --- | --- |
| 289 | 10.12 | **CIMENTACION WP5** |  | 168d | 2026-07-30 A | 2027-02-02 |  |  | 168d | 2026-11-03 | 2027-01-23 | 72d | 185.62d |  | 5,308,872,732.05 | 5,308,872,732.05 | GRUPO 3 | Día 0 | Día 161,222222222222 | Día 11,8888888888889 |
| 290 | 10.12.1 | LOCALIZACION, REPLANTEO Y DESBROCE DE AREA DE ACOPIO DE TORRE Y DE PALAS WP5 |  | 104d | 2026-07-30 A | 2026-11-21 | 273 |  | 104d | 2026-11-03 | 2026-11-11 | 8d | 26.62d | 0d | 83,271,780.88 | 83,271,780.88 |  |  | Día 104,333333333333 | Día 11,8888888888889 |
| 291 | 10.12.2 | EXCAVACIÓN DE CIMENTACION WP5 |  | 7d | 2026-11-21 | 2026-11-30 | 290, 240, 274 |  |  | 2026-11-11 | 2026-11-19 | 7d | 26.62d | 0d | 312,374,505.67 | 312,374,505.67 |  | Día 23 | Día 110,555555555556 | Día 104,333333333333 |
| 292 | 10.12.3 | BANCO DE DUCTO WP5 |  | 3d | 2026-11-30 | 2026-12-02 | 291 |  |  | 2026-11-19 | 2026-11-23 | 3d | 49.62d | 0d | 9,527,825.69 | 9,527,825.69 |  |  | Día 113,222222222222 | Día 110,555555555556 |
| 293 | 10.12.4 | COMPACTACION DE SELLO DE BASE WP5 |  | 4d | 2026-12-02 | 2026-12-07 | 291, 292 |  |  | 2026-11-23 | 2026-11-26 | 4d | 49.62d | 0d | 320,494,616.72 | 320,494,616.72 |  | Día 30 | Día 116,777777777778 | Día 113,222222222222 |
| 294 | 10.12.5 | SOLADO WP5 |  | 2d | 2026-12-07 | 2026-12-10 | 293, 245 |  |  | 2026-11-27 | 2026-11-28 | 2d | 49.62d | 0d | 94,303,618.55 | 94,303,618.55 |  | Día 28 | Día 118,555555555556 | Día 116,777777777778 |
| 295 | 10.12.6 | INSTALACIÓN DE PERNOS Y SOFT-SPOT WP5 |  | 5d | 2026-12-10 | 2026-12-15 | 294 |  |  | 2026-11-28 | 2026-12-04 | 5d | 49.62d | 0d | 179,436,034.15 | 179,436,034.15 |  | Día 30 | Día 123 | Día 118,555555555556 |
| 296 | 10.12.7 | INSTALACIÓN DE ACERO DE REFUERZO WP5 |  | 15d | 2026-12-15 | 2027-01-02 | 295 |  |  | 2026-12-04 | 2026-12-21 | 15d | 49.62d | 0d | 1,212,623,361.21 | 1,212,623,361.21 |  |  | Día 136,333333333333 | Día 123 |
| 297 | 10.12.8 | ENCOFRADO DE ZAPATA Y DE PEDESTAL WP5 |  | 3d | 2027-01-02 | 2027-01-06 | 296 |  |  | 2026-12-22 | 2026-12-24 | 3d | 101.62d | 0d |  |  |  |  | Día 139 | Día 136,333333333333 |
| 298 | 10.12.9 | HITO: ALISTAMIENTO Y MOVILIZACIÓN DE PLANTA DE CONCRETO PARA WP5 | milestone | 0d | 2027-01-02 | 2027-01-02 | 296 |  |  | 2026-12-21 | 2026-12-21 | 0d | 104.62d | 3d |  |  |  | Día 0 | Día 136,333333333333 | Día 136,333333333333 |
| 299 | 10.12.10 | FUNDIDA WP5 |  | 1d | 2027-01-06 | 2027-01-07 | 297, 298 |  |  | 2026-12-24 | 2026-12-26 | 1d | 101.62d | 0d | 1,230,815,225.95 | 1,230,815,225.95 |  |  | Día 139,888888888889 | Día 139 |
| 300 | 10.12.11 | CURADO DEL CONCRETO WP5 |  | 7d | 2027-01-07 | 2027-01-15 | 299 |  |  | 2026-12-26 | 2027-01-04 | 7d | 101.62d | 0d |  |  |  |  | Día 146,111111111111 | Día 139,888888888889 |
| 301 | 10.12.12 | INSTALACIONES ELECTRICAS Y SISTEMA PUESTA TIERRA WP5 |  | 3d | 2027-01-15 | 2027-01-19 | 300 |  |  | 2027-01-05 | 2027-01-07 | 3d | 101.62d | 0d | 52,736,347.43 | 52,736,347.43 |  | Día 28 | Día 148,777777777778 | Día 146,111111111111 |
| 302 | 10.12.13 | INSTALACION DE GROUT Y MORTERO AUTOCOMPACTANTE DE ALTA RESISTENCIA WP5 |  | 2d | 2027-01-19 | 2027-01-20 | 301 |  |  | 2027-01-07 | 2027-01-09 | 2d | 101.62d | 0d | 46,410,609.01 | 46,410,609.01 |  | Día 23 | Día 150,555555555556 | Día 148,777777777778 |
| 303 | 10.12.14 | TAPADO AREA DE CIMENTACIÓN Y CONFORMACIÓN DE PLATAFORMA WP5 |  | 10d | 2027-01-19 | 2027-01-29 | 301, 251, 252 |  |  | 2027-01-07 | 2027-01-19 | 10d | 101.62d | 0d | 1,587,346,329.55 | 1,587,346,329.55 |  | Día 23 | Día 157,666666666667 | Día 148,777777777778 |
| 304 | 10.12.15 | ESTABILIZACIÓN DE TALUDES EN PLATAFORMA Y RECONFORMACION FINAL WP5 |  | 12d | 2027-01-20 | 2027-02-02 | 302SS+2d, 253, 303SS+2d |  |  | 2027-01-09 | 2027-01-23 | 12d | 101.62d | 0d | 179,532,477.24 | 179,532,477.24 |  |  | Día 161,222222222222 | Día 150,555555555556 |
| 305 | 10.12.16 | HITO: FINALIZACION DE ACTIVIDADES EN CIMENTACION WP5 | milestone | 0d | 2027-02-02 | 2027-02-02 | 304, 288 |  |  | 2027-01-23 | 2027-01-23 | 0d | 185.62d | 7d |  |  |  | Día 0 | Día 161,222222222222 | Día 161,222222222222 |
| 306 | 10.13 | **CIMENTACION WP6** |  | 175d | 2026-07-30 A | 2027-02-10 |  | 12% | 154.47d | 2026-11-11 | 2027-02-01 | 72d | 178.62d |  | 5,292,218,375.87 | 5,308,872,732.05 | GRUPO 1 | Día 0 | Día 167,444444444444 | Día 11,8888888888889 |
| 307 | 10.13.1 | LOCALIZACION, REPLANTEO Y DESBROCE DE AREA DE ACOPIO DE TORRE Y DE PALAS WP6 |  | 105d | 2026-07-30 A | 2026-11-23 | 273 | 20% | 84d | 2026-11-11 | 2026-11-20 | 8d | 0d |  | 66,617,424.7 | 83,271,780.88 |  |  | Día 105,222222222222 | Día 11,8888888888889 |
| 308 | 10.13.2 | EXCAVACIÓN DE CIMENTACION WP6 |  | 7d | 2026-11-30 | 2026-12-07 | 307, 257, 291 |  |  | 2026-11-20 | 2026-11-27 | 7d | 26.62d | 0d | 312,374,505.67 | 312,374,505.67 |  | Día 23 | Día 116,777777777778 | Día 110,555555555556 |
| 309 | 10.13.3 | BANCO DE DUCTO WP6 |  | 3d | 2026-12-07 | 2026-12-11 | 308 |  |  | 2026-11-27 | 2026-12-01 | 3d | 26.62d | 0d | 9,527,825.69 | 9,527,825.69 |  |  | Día 119,444444444444 | Día 116,777777777778 |
| 310 | 10.13.4 | COMPACTACION DE SELLO DE BASE WP6 |  | 4d | 2026-12-11 | 2026-12-15 | 309 |  |  | 2026-12-01 | 2026-12-05 | 4d | 26.62d | 0d | 320,494,616.72 | 320,494,616.72 |  | Día 30 | Día 123 | Día 119,444444444444 |
| 311 | 10.13.5 | SOLADO WP6 |  | 2d | 2026-12-15 | 2026-12-17 | 310, 262 |  |  | 2026-12-05 | 2026-12-09 | 2d | 26.62d | 0d | 94,303,618.55 | 94,303,618.55 |  | Día 28 | Día 124,777777777778 | Día 123 |
| 312 | 10.13.6 | INSTALACIÓN DE PERNOS Y SOFT-SPOT WP6 |  | 5d | 2026-12-17 | 2026-12-23 | 311 |  |  | 2026-12-09 | 2026-12-14 | 5d | 26.62d | 0d | 179,436,034.15 | 179,436,034.15 |  | Día 30 | Día 129,222222222222 | Día 124,777777777778 |
| 313 | 10.13.7 | INSTALACIÓN DE ACERO DE REFUERZO WP6 |  | 15d | 2026-12-23 | 2027-01-09 | 312 |  |  | 2026-12-14 | 2026-12-31 | 15d | 26.62d | 0d | 1,212,623,361.21 | 1,212,623,361.21 |  |  | Día 142,555555555556 | Día 129,222222222222 |
| 314 | 10.13.8 | ENCOFRADO DE ZAPATA Y DE PEDESTAL WP6 |  | 3d | 2027-01-09 | 2027-01-14 | 313 |  |  | 2026-12-31 | 2027-01-04 | 3d | 96.62d | 0d |  |  |  |  | Día 145,222222222222 | Día 142,555555555556 |
| 315 | 10.13.9 | HITO: ALISTAMIENTO Y MOVILIZACIÓN DE PLANTA DE CONCRETO PARA WP6 | milestone | 0d | 2027-01-09 | 2027-01-09 | 313 |  |  | 2026-12-31 | 2026-12-31 | 0d | 99.62d | 3d |  |  |  | Día 0 | Día 142,555555555556 | Día 142,555555555556 |
| 316 | 10.13.10 | FUNDIDA WP6 |  | 1d | 2027-01-14 | 2027-01-15 | 314, 315 |  |  | 2027-01-05 | 2027-01-05 | 1d | 96.62d | 0d | 1,230,815,225.95 | 1,230,815,225.95 |  |  | Día 146,111111111111 | Día 145,222222222222 |
| 317 | 10.13.11 | CURADO DEL CONCRETO WP6 |  | 7d | 2027-01-15 | 2027-01-22 | 316 |  |  | 2027-01-05 | 2027-01-14 | 7d | 96.62d | 0d |  |  |  |  | Día 152,333333333333 | Día 146,111111111111 |
| 318 | 10.13.12 | INSTALACIONES ELECTRICAS Y SISTEMA PUESTA TIERRA WP6 |  | 3d | 2027-01-22 | 2027-01-26 | 317 |  |  | 2027-01-14 | 2027-01-16 | 3d | 96.62d | 0d | 52,736,347.43 | 52,736,347.43 |  | Día 28 | Día 155 | Día 152,333333333333 |
| 319 | 10.13.13 | INSTALACION DE GROUT Y MORTERO AUTOCOMPACTANTE DE ALTA RESISTENCIA WP6 |  | 2d | 2027-01-26 | 2027-01-28 | 318 |  |  | 2027-01-16 | 2027-01-19 | 2d | 96.62d | 0d | 46,410,609.01 | 46,410,609.01 |  | Día 23 | Día 156,777777777778 | Día 155 |
| 320 | 10.13.14 | TAPADO AREA DE CIMENTACIÓN Y CONFORMACIÓN DE PLATAFORMA WP6 |  | 10d | 2027-01-26 | 2027-02-05 | 318, 268, 269 |  |  | 2027-01-16 | 2027-01-27 | 10d | 96.62d | 0d | 1,587,346,329.55 | 1,587,346,329.55 |  | Día 23 | Día 163,888888888889 | Día 155 |
| 321 | 10.13.15 | ESTABILIZACIÓN DE TALUDES EN PLATAFORMA Y RECONFORMACION FINAL WP6 |  | 12d | 2027-01-28 | 2027-02-10 | 319SS+2d, 270, 320SS+2d |  |  | 2027-01-19 | 2027-02-01 | 12d | 96.62d | 0d | 179,532,477.24 | 179,532,477.24 |  |  | Día 167,444444444444 | Día 156,777777777778 |
| 322 | 10.13.16 | HITO: FINALIZACION DE ACTIVIDADES EN CIMENTACION WP6 | milestone | 0d | 2027-02-10 | 2027-02-10 | 321, 305 |  |  | 2027-02-01 | 2027-02-01 | 0d | 178.62d | 7d |  |  |  | Día 0 | Día 167,444444444444 | Día 167,444444444444 |

| ID | WBS | Task | Type | Duration | Start | Finish | Predecessors | Baseline start | Baseline finish | Baseline duration | Total slack | Free slack | Cost | Baseline cost | GRUPO DE EJECUCION | Text20 | Text21 | Text30 |
| --- | --- | --- | --- | --- | --- | --- | --- | --- | --- | --- | --- | --- | --- | --- | --- | --- | --- | --- |
| 323 | 10.14 | **CIMENTACION WP42** |  | 77d | 2026-11-23 | 2027-02-17 |  | 2026-11-20 | 2027-02-09 | 72d | 0d |  | 5,308,872,732.05 | 5,308,872,732.05 | GRUPO 2 | Día 0 | Día 173,666666666667 | Día 105,222222222222 |
| 324 | 10.14.1 | LOCALIZACION, REPLANTEO Y DESBROCE DE AREA DE ACOPIO DE TORRE Y DE PALAS WP42 |  | 8d | 2026-11-23 | 2026-12-01 | 307, 13 | 2026-11-20 | 2026-11-28 | 8d | 0d |  | 83,271,780.88 | 83,271,780.88 |  |  | Día 112,333333333333 | Día 105,222222222222 |
| 325 | 10.14.2 | EXCAVACIÓN DE CIMENTACION WP42 |  | 7d | 2026-12-07 | 2026-12-15 | 324, 274, 308 | 2026-11-28 | 2026-12-07 | 7d | 27.62d | 0d | 312,374,505.67 | 312,374,505.67 |  | Día 23 | Día 123 | Día 116,777777777778 |
| 326 | 10.14.3 | BANCO DE DUCTO WP42 |  | 3d | 2026-12-15 | 2026-12-18 | 325 | 2026-12-07 | 2026-12-10 | 3d | 39.62d | 0d | 9,527,825.69 | 9,527,825.69 |  |  | Día 125,666666666667 | Día 123 |
| 327 | 10.14.4 | COMPACTACION DE SELLO DE BASE WP42 |  | 4d | 2026-12-18 | 2026-12-23 | 326 | 2026-12-10 | 2026-12-15 | 4d | 39.62d | 0d | 320,494,616.72 | 320,494,616.72 |  | Día 30 | Día 129,222222222222 | Día 125,666666666667 |
| 328 | 10.14.5 | SOLADO WP42 |  | 2d | 2026-12-23 | 2026-12-24 | 327, 279 | 2026-12-15 | 2026-12-17 | 2d | 39.62d | 0d | 94,303,618.55 | 94,303,618.55 |  | Día 28 | Día 131 | Día 129,222222222222 |
| 329 | 10.14.6 | INSTALACIÓN DE PERNOS Y SOFT-SPOT WP42 |  | 5d | 2026-12-26 | 2026-12-31 | 328 | 2026-12-17 | 2026-12-22 | 5d | 39.62d | 0d | 179,436,034.15 | 179,436,034.15 |  | Día 30 | Día 135,444444444444 | Día 131 |
| 330 | 10.14.7 | INSTALACIÓN DE ACERO DE REFUERZO WP42 |  | 15d | 2026-12-31 | 2027-01-19 | 329 | 2026-12-22 | 2027-01-09 | 15d | 39.62d | 0d | 1,212,623,361.21 | 1,212,623,361.21 |  |  | Día 148,777777777778 | Día 135,444444444444 |
| 331 | 10.14.8 | ENCOFRADO DE ZAPATA Y DE PEDESTAL WP42 |  | 3d | 2027-01-19 | 2027-01-21 | 330 | 2027-01-09 | 2027-01-14 | 3d | 99.62d | 0d |  |  |  |  | Día 151,444444444444 | Día 148,777777777778 |
| 332 | 10.14.9 | HITO: ALISTAMIENTO Y MOVILIZACIÓN DE PLANTA DE CONCRETO PARA WP42 | milestone | 0d | 2027-01-19 | 2027-01-19 | 330 | 2027-01-09 | 2027-01-09 | 0d | 102.62d | 3d |  |  |  | Día 0 | Día 148,777777777778 | Día 148,777777777778 |
| 333 | 10.14.10 | FUNDIDA WP42 |  | 1d | 2027-01-21 | 2027-01-22 | 331, 332 | 2027-01-14 | 2027-01-14 | 1d | 99.62d | 0d | 1,230,815,225.95 | 1,230,815,225.95 |  |  | Día 152,333333333333 | Día 151,444444444444 |
| 334 | 10.14.11 | CURADO DEL CONCRETO WP42 |  | 7d | 2027-01-22 | 2027-01-29 | 333 | 2027-01-15 | 2027-01-22 | 7d | 99.62d | 0d |  |  |  |  | Día 158,555555555556 | Día 152,333333333333 |
| 335 | 10.14.12 | INSTALACIONES ELECTRICAS Y SISTEMA PUESTA TIERRA WP42 |  | 3d | 2027-01-30 | 2027-02-02 | 334 | 2027-01-22 | 2027-01-26 | 3d | 99.62d | 0d | 52,736,347.43 | 52,736,347.43 |  | Día 28 | Día 161,222222222222 | Día 158,555555555556 |
| 336 | 10.14.13 | INSTALACION DE GROUT Y MORTERO AUTOCOMPACTANTE DE ALTA RESISTENCIA WP42 |  | 2d | 2027-02-02 | 2027-02-04 | 335 | 2027-01-26 | 2027-01-27 | 2d | 99.62d | 0d | 46,410,609.01 | 46,410,609.01 |  | Día 23 | Día 163 | Día 161,222222222222 |
| 337 | 10.14.14 | TAPADO AREA DE CIMENTACIÓN Y CONFORMACIÓN DE PLATAFORMA WP42 |  | 10d | 2027-02-02 | 2027-02-12 | 335, 285, 286 | 2027-01-26 | 2027-02-05 | 10d | 99.62d | 0d | 1,587,346,329.55 | 1,587,346,329.55 |  | Día 23 | Día 170,111111111111 | Día 161,222222222222 |
| 338 | 10.14.15 | ESTABILIZACIÓN DE TALUDES EN PLATAFORMA Y RECONFORMACION FINAL WP42 |  | 12d | 2027-02-04 | 2027-02-17 | 336SS+2d, 287, 337SS+2d | 2027-01-27 | 2027-02-09 | 12d | 99.62d | 0d | 179,532,477.24 | 179,532,477.24 |  |  | Día 173,666666666667 | Día 163 |
| 339 | 10.14.16 | HITO: FINALIZACION DE ACTIVIDADES EN CIMENTACION WP42 | milestone | 0d | 2027-02-17 | 2027-02-17 | 338, 322 | 2027-02-09 | 2027-02-09 | 0d | 171.62d | 8d |  |  |  | Día 0 | Día 173,666666666667 | Día 173,666666666667 |
| 340 | 10.15 | **CIMENTACION WP41** |  | 77d | 2026-12-02 | 2027-02-25 |  | 2026-11-28 | 2027-02-17 | 72d | 0d |  | 5,308,872,732.05 | 5,308,872,732.05 | GRUPO 3 | Día 0 | Día 180,777777777778 | Día 112,333333333333 |
| 341 | 10.15.1 | LOCALIZACION, REPLANTEO Y DESBROCE DE AREA DE ACOPIO DE TORRE Y DE PALAS WP41 |  | 8d | 2026-12-02 | 2026-12-11 | 324, 13 | 2026-11-28 | 2026-12-09 | 8d | 0d |  | 83,271,780.88 | 83,271,780.88 |  |  | Día 119,444444444444 | Día 112,333333333333 |
| 342 | 10.15.2 | EXCAVACIÓN DE CIMENTACION WP41 |  | 7d | 2026-12-15 | 2026-12-23 | 341, 291, 325 | 2026-12-09 | 2026-12-16 | 7d | 27.62d | 0d | 312,374,505.67 | 312,374,505.67 |  | Día 23 | Día 129,222222222222 | Día 123 |
| 343 | 10.15.3 | BANCO DE DUCTO WP41 |  | 3d | 2026-12-23 | 2026-12-26 | 342 | 2026-12-16 | 2026-12-19 | 3d | 50.62d | 0d | 9,527,825.69 | 9,527,825.69 |  |  | Día 131,888888888889 | Día 129,222222222222 |
| 344 | 10.15.4 | COMPACTACION DE SELLO DE BASE WP41 |  | 4d | 2026-12-26 | 2026-12-31 | 343 | 2026-12-19 | 2026-12-23 | 4d | 50.62d | 1d | 320,494,616.72 | 320,494,616.72 |  | Día 30 | Día 135,444444444444 | Día 131,888888888889 |
| 345 | 10.15.5 | SOLADO WP41 |  | 2d | 2027-01-02 | 2027-01-05 | 344, 296 | 2026-12-23 | 2026-12-26 | 2d | 49.62d | 0d | 94,303,618.55 | 94,303,618.55 |  | Día 28 | Día 138,111111111111 | Día 136,333333333333 |
| 346 | 10.15.6 | INSTALACIÓN DE PERNOS Y SOFT-SPOT WP41 |  | 5d | 2027-01-05 | 2027-01-09 | 345 | 2026-12-26 | 2027-01-02 | 5d | 49.62d | 0d | 179,436,034.15 | 179,436,034.15 |  | Día 30 | Día 142,555555555556 | Día 138,111111111111 |
| 347 | 10.15.7 | INSTALACIÓN DE ACERO DE REFUERZO WP41 |  | 15d | 2027-01-09 | 2027-01-27 | 346 | 2027-01-02 | 2027-01-19 | 15d | 49.62d | 0d | 1,212,623,361.21 | 1,212,623,361.21 |  |  | Día 155,888888888889 | Día 142,555555555556 |
| 348 | 10.15.8 | ENCOFRADO DE ZAPATA Y DE PEDESTAL WP41 |  | 3d | 2027-01-27 | 2027-01-29 | 347 | 2027-01-19 | 2027-01-22 | 3d | 91.62d | 0d |  |  |  |  | Día 158,555555555556 | Día 155,888888888889 |
| 349 | 10.15.9 | HITO: ALISTAMIENTO Y MOVILIZACIÓN DE PLANTA DE CONCRETO PARA WP41 | milestone | 0d | 2027-01-27 | 2027-01-27 | 347 | 2027-01-19 | 2027-01-19 | 0d | 94.62d | 3d |  |  |  | Día 0 | Día 155,888888888889 | Día 155,888888888889 |
| 350 | 10.15.10 | FUNDIDA WP41 |  | 1d | 2027-01-30 | 2027-01-30 | 348, 349 | 2027-01-22 | 2027-01-23 | 1d | 91.62d | 0d | 1,230,815,225.95 | 1,230,815,225.95 |  |  | Día 159,444444444444 | Día 158,555555555556 |
| 351 | 10.15.11 | CURADO DEL CONCRETO WP41 |  | 7d | 2027-01-30 | 2027-02-08 | 350 | 2027-01-23 | 2027-01-30 | 7d | 91.62d | 0d |  |  |  |  | Día 165,666666666667 | Día 159,444444444444 |
| 352 | 10.15.12 | INSTALACIONES ELECTRICAS Y SISTEMA PUESTA TIERRA WP41 |  | 3d | 2027-02-08 | 2027-02-10 | 351 | 2027-01-30 | 2027-02-03 | 3d | 91.62d | 0d | 52,736,347.43 | 52,736,347.43 |  | Día 28 | Día 168,333333333333 | Día 165,666666666667 |
| 353 | 10.15.13 | INSTALACION DE GROUT Y MORTERO AUTOCOMPACTANTE DE ALTA RESISTENCIA WP41 |  | 2d | 2027-02-11 | 2027-02-12 | 352 | 2027-02-03 | 2027-02-05 | 2d | 91.62d | 0d | 46,410,609.01 | 46,410,609.01 |  | Día 23 | Día 170,111111111111 | Día 168,333333333333 |
| 354 | 10.15.14 | TAPADO AREA DE CIMENTACIÓN Y CONFORMACIÓN DE PLATAFORMA WP41 |  | 10d | 2027-02-11 | 2027-02-20 | 352, 302, 303 | 2027-02-03 | 2027-02-13 | 10d | 91.62d | 0d | 1,587,346,329.55 | 1,587,346,329.55 |  | Día 23 | Día 177,222222222222 | Día 168,333333333333 |
| 355 | 10.15.15 | ESTABILIZACIÓN DE TALUDES EN PLATAFORMA Y RECONFORMACION FINAL WP41 |  | 12d | 2027-02-12 | 2027-02-25 | 353SS+2d, 304, 354SS+2d | 2027-02-05 | 2027-02-17 | 12d | 91.62d | 0d | 179,532,477.24 | 179,532,477.24 |  |  | Día 180,777777777778 | Día 170,111111111111 |
| 356 | 10.15.16 | HITO: FINALIZACION DE ACTIVIDADES EN CIMENTACION WP41 | milestone | 0d | 2027-02-25 | 2027-02-25 | 355, 339 | 2027-02-17 | 2027-02-17 | 0d | 163.62d | 7d |  |  |  | Día 0 | Día 180,777777777778 | Día 180,777777777778 |

| ID | WBS | Task | Type | Duration | Start | Finish | Predecessors | Baseline start | Baseline finish | Baseline duration | Total slack | Free slack | Cost | Baseline cost | GRUPO DE EJECUCION | Text20 | Text21 | Text30 |
| --- | --- | --- | --- | --- | --- | --- | --- | --- | --- | --- | --- | --- | --- | --- | --- | --- | --- | --- |
| 357 | 10.16 | **CIMENTACION WP40** |  | 76d | 2026-12-11 | 2027-03-04 |  | 2026-12-09 | 2027-02-26 | 72d | 0d |  | 5,308,872,732.05 | 5,308,872,732.05 | GRUPO 1 | Día 0 | Día 187 | Día 119,444444444444 |
| 358 | 10.16.1 | LOCALIZACION, REPLANTEO Y DESBROCE DE AREA DE ACOPIO DE TORRE Y DE PALAS WP40 |  | 8d | 2026-12-11 | 2026-12-19 | 341, 13 | 2026-12-09 | 2026-12-17 | 8d | 0d |  | 83,271,780.88 | 83,271,780.88 |  |  | Día 126,555555555556 | Día 119,444444444444 |
| 359 | 10.16.2 | EXCAVACIÓN DE CIMENTACION WP40 |  | 7d | 2026-12-23 | 2026-12-31 | 358, 308, 342 | 2026-12-17 | 2026-12-24 | 7d | 27.62d | 0d | 312,374,505.67 | 312,374,505.67 |  | Día 23 | Día 135,444444444444 | Día 129,222222222222 |
| 360 | 10.16.3 | BANCO DE DUCTO WP40 |  | 3d | 2026-12-31 | 2027-01-05 | 359 | 2026-12-24 | 2026-12-29 | 3d | 27.62d | 0d | 9,527,825.69 | 9,527,825.69 |  |  | Día 138,111111111111 | Día 135,444444444444 |
| 361 | 10.16.4 | COMPACTACION DE SELLO DE BASE WP40 |  | 4d | 2027-01-05 | 2027-01-08 | 360 | 2026-12-29 | 2027-01-02 | 4d | 27.62d | 1d | 320,494,616.72 | 320,494,616.72 |  | Día 30 | Día 141,666666666667 | Día 138,111111111111 |
| 362 | 10.16.5 | SOLADO WP40 |  | 2d | 2027-01-09 | 2027-01-13 | 361, 313 | 2027-01-04 | 2027-01-05 | 2d | 26.62d | 0d | 94,303,618.55 | 94,303,618.55 |  | Día 28 | Día 144,333333333333 | Día 142,555555555556 |
| 363 | 10.16.6 | INSTALACIÓN DE PERNOS Y SOFT-SPOT WP40 |  | 5d | 2027-01-13 | 2027-01-19 | 362 | 2027-01-05 | 2027-01-12 | 5d | 26.62d | 0d | 179,436,034.15 | 179,436,034.15 |  | Día 30 | Día 148,777777777778 | Día 144,333333333333 |
| 364 | 10.16.7 | INSTALACIÓN DE ACERO DE REFUERZO WP40 |  | 15d | 2027-01-19 | 2027-02-03 | 363 | 2027-01-12 | 2027-01-27 | 15d | 26.62d | 0d | 1,212,623,361.21 | 1,212,623,361.21 |  |  | Día 162,111111111111 | Día 148,777777777778 |
| 365 | 10.16.8 | ENCOFRADO DE ZAPATA Y DE PEDESTAL WP40 |  | 3d | 2027-02-03 | 2027-02-06 | 364 | 2027-01-27 | 2027-01-30 | 3d | 86.62d | 0d |  |  |  |  | Día 164,777777777778 | Día 162,111111111111 |
| 366 | 10.16.9 | HITO: ALISTAMIENTO Y MOVILIZACIÓN DE PLANTA DE CONCRETO PARA WP40 | milestone | 0d | 2027-02-03 | 2027-02-03 | 364 | 2027-01-27 | 2027-01-27 | 0d | 89.62d | 3d |  |  |  | Día 0 | Día 162,111111111111 | Día 162,111111111111 |
| 367 | 10.16.10 | FUNDIDA WP40 |  | 1d | 2027-02-06 | 2027-02-08 | 365, 366 | 2027-01-30 | 2027-02-01 | 1d | 86.62d | 0d | 1,230,815,225.95 | 1,230,815,225.95 |  |  | Día 165,666666666667 | Día 164,777777777778 |
| 368 | 10.16.11 | CURADO DEL CONCRETO WP40 |  | 7d | 2027-02-08 | 2027-02-15 | 367 | 2027-02-01 | 2027-02-08 | 7d | 86.62d | 0d |  |  |  |  | Día 171,888888888889 | Día 165,666666666667 |
| 369 | 10.16.12 | INSTALACIONES ELECTRICAS Y SISTEMA PUESTA TIERRA WP40 |  | 3d | 2027-02-15 | 2027-02-18 | 368 | 2027-02-08 | 2027-02-11 | 3d | 86.62d | 0d | 52,736,347.43 | 52,736,347.43 |  | Día 28 | Día 174,555555555556 | Día 171,888888888889 |
| 370 | 10.16.13 | INSTALACION DE GROUT Y MORTERO AUTOCOMPACTANTE DE ALTA RESISTENCIA WP40 |  | 2d | 2027-02-18 | 2027-02-20 | 369 | 2027-02-11 | 2027-02-13 | 2d | 86.62d | 0d | 46,410,609.01 | 46,410,609.01 |  | Día 23 | Día 176,333333333333 | Día 174,555555555556 |
| 371 | 10.16.14 | TAPADO AREA DE CIMENTACIÓN Y CONFORMACIÓN DE PLATAFORMA WP40 |  | 10d | 2027-02-18 | 2027-03-01 | 369, 319, 320 | 2027-02-11 | 2027-02-22 | 10d | 86.62d | 0d | 1,587,346,329.55 | 1,587,346,329.55 |  | Día 23 | Día 183,444444444444 | Día 174,555555555556 |
| 372 | 10.16.15 | ESTABILIZACIÓN DE TALUDES EN PLATAFORMA Y RECONFORMACION FINAL WP40 |  | 12d | 2027-02-20 | 2027-03-04 | 370SS+2d, 321, 371SS+2d | 2027-02-13 | 2027-02-26 | 12d | 86.62d | 0d | 179,532,477.24 | 179,532,477.24 |  |  | Día 187 | Día 176,333333333333 |
| 373 | 10.16.16 | HITO: FINALIZACION DE ACTIVIDADES EN CIMENTACION WP40 | milestone | 0d | 2027-03-04 | 2027-03-04 | 372, 356 | 2027-02-26 | 2027-02-26 | 0d | 156.62d | 7d |  |  |  | Día 0 | Día 187 | Día 187 |
| 374 | 10.17 | **CIMENTACION WP39** |  | 75d | 2026-12-19 | 2027-03-12 |  | 2026-12-17 | 2027-03-06 | 72d | 0d |  | 5,308,872,732.05 | 5,308,872,732.05 | GRUPO 2 | Día 0 | Día 193,222222222222 | Día 126,555555555556 |
| 375 | 10.17.1 | LOCALIZACION, REPLANTEO Y DESBROCE DE AREA DE ACOPIO DE TORRE Y DE PALAS WP39 |  | 8d | 2026-12-19 | 2026-12-29 | 358, 13 | 2026-12-17 | 2026-12-26 | 8d | 0d |  | 83,271,780.88 | 83,271,780.88 |  |  | Día 133,666666666667 | Día 126,555555555556 |
| 376 | 10.17.2 | EXCAVACIÓN DE CIMENTACION WP39 |  | 7d | 2026-12-31 | 2027-01-08 | 375, 324, 359 | 2026-12-26 | 2027-01-04 | 7d | 28.62d | 0d | 312,374,505.67 | 312,374,505.67 |  | Día 23 | Día 141,666666666667 | Día 135,444444444444 |
| 377 | 10.17.3 | BANCO DE DUCTO WP39 |  | 3d | 2027-01-08 | 2027-01-13 | 376 | 2027-01-05 | 2027-01-07 | 3d | 40.62d | 0d | 9,527,825.69 | 9,527,825.69 |  |  | Día 144,333333333333 | Día 141,666666666667 |
| 378 | 10.17.4 | COMPACTACION DE SELLO DE BASE WP39 |  | 4d | 2027-01-13 | 2027-01-18 | 377 | 2027-01-07 | 2027-01-13 | 4d | 40.62d | 1d | 320,494,616.72 | 320,494,616.72 |  | Día 30 | Día 147,888888888889 | Día 144,333333333333 |
| 379 | 10.17.5 | SOLADO WP39 |  | 2d | 2027-01-19 | 2027-01-20 | 378, 330 | 2027-01-13 | 2027-01-14 | 2d | 39.62d | 0d | 94,303,618.55 | 94,303,618.55 |  | Día 28 | Día 150,555555555556 | Día 148,777777777778 |
| 380 | 10.17.6 | INSTALACIÓN DE PERNOS Y SOFT-SPOT WP39 |  | 5d | 2027-01-20 | 2027-01-26 | 379 | 2027-01-15 | 2027-01-20 | 5d | 39.62d | 0d | 179,436,034.15 | 179,436,034.15 |  | Día 30 | Día 155 | Día 150,555555555556 |
| 381 | 10.17.7 | INSTALACIÓN DE ACERO DE REFUERZO WP39 |  | 15d | 2027-01-26 | 2027-02-10 | 380 | 2027-01-20 | 2027-02-05 | 15d | 39.62d | 0d | 1,212,623,361.21 | 1,212,623,361.21 |  |  | Día 168,333333333333 | Día 155 |
| 382 | 10.17.8 | ENCOFRADO DE ZAPATA Y DE PEDESTAL WP39 |  | 3d | 2027-02-11 | 2027-02-13 | 381 | 2027-02-05 | 2027-02-08 | 3d | 89.62d | 0d |  |  |  |  | Día 171 | Día 168,333333333333 |
| 383 | 10.17.9 | HITO: ALISTAMIENTO Y MOVILIZACIÓN DE PLANTA DE CONCRETO PARA WP39 | milestone | 0d | 2027-02-10 | 2027-02-10 | 381 | 2027-02-05 | 2027-02-05 | 0d | 92.62d | 3d |  |  |  | Día 0 | Día 168,333333333333 | Día 168,333333333333 |
| 384 | 10.17.10 | FUNDIDA WP39 |  | 1d | 2027-02-13 | 2027-02-15 | 382, 383 | 2027-02-08 | 2027-02-09 | 1d | 89.62d | 0d | 1,230,815,225.95 | 1,230,815,225.95 |  |  | Día 171,888888888889 | Día 171 |
| 385 | 10.17.11 | CURADO DEL CONCRETO WP39 |  | 7d | 2027-02-15 | 2027-02-22 | 384 | 2027-02-09 | 2027-02-17 | 7d | 89.62d | 0d |  |  |  |  | Día 178,111111111111 | Día 171,888888888889 |
| 386 | 10.17.12 | INSTALACIONES ELECTRICAS Y SISTEMA PUESTA TIERRA WP39 |  | 3d | 2027-02-23 | 2027-02-25 | 385 | 2027-02-17 | 2027-02-19 | 3d | 89.62d | 0d | 52,736,347.43 | 52,736,347.43 |  | Día 28 | Día 180,777777777778 | Día 178,111111111111 |
| 387 | 10.17.13 | INSTALACION DE GROUT Y MORTERO AUTOCOMPACTANTE DE ALTA RESISTENCIA WP39 |  | 2d | 2027-02-25 | 2027-02-27 | 386 | 2027-02-19 | 2027-02-22 | 2d | 89.62d | 0d | 46,410,609.01 | 46,410,609.01 |  | Día 23 | Día 182,555555555556 | Día 180,777777777778 |
| 388 | 10.17.14 | TAPADO AREA DE CIMENTACIÓN Y CONFORMACIÓN DE PLATAFORMA WP39 |  | 10d | 2027-02-25 | 2027-03-08 | 386, 336, 337 | 2027-02-19 | 2027-03-02 | 10d | 89.62d | 0d | 1,587,346,329.55 | 1,587,346,329.55 |  | Día 23 | Día 189,666666666667 | Día 180,777777777778 |
| 389 | 10.17.15 | ESTABILIZACIÓN DE TALUDES EN PLATAFORMA Y RECONFORMACION FINAL WP39 |  | 12d | 2027-02-27 | 2027-03-12 | 387SS+2d, 338, 388SS+2d | 2027-02-22 | 2027-03-06 | 12d | 89.62d | 0d | 179,532,477.24 | 179,532,477.24 |  |  | Día 193,222222222222 | Día 182,555555555556 |
| 390 | 10.17.16 | HITO: FINALIZACION DE ACTIVIDADES EN CIMENTACION WP39 | milestone | 0d | 2027-03-12 | 2027-03-12 | 389, 373 | 2027-03-06 | 2027-03-06 | 0d | 149.62d | 8d |  |  |  | Día 0 | Día 193,222222222222 | Día 193,222222222222 |

| ID | WBS | Task | Type | Duration | Start | Finish | Predecessors | Complete | Remaining | Baseline start | Baseline finish | Baseline duration | Total slack | Free slack | Cost | Baseline cost | GRUPO DE EJECUCION | Text20 | Text21 | Text30 |
| --- | --- | --- | --- | --- | --- | --- | --- | --- | --- | --- | --- | --- | --- | --- | --- | --- | --- | --- | --- | --- |
| 391 | 10.18 | **CIMENTACION WP23** |  | 207.62d | 2026-08-04 A | 2027-03-20 |  | 13% | 180.39d | 2026-12-26 | 2027-03-15 | 72d | 141.62d |  | 5,292,218,375.87 | 5,308,872,732.05 | GRUPO 3 | Día 0 | Día 200,333333333333 | Día 15,7777777777778 |
| 392 | 10.18.1 | LOCALIZACION, REPLANTEO Y DESBROCE DE AREA DE ACOPIO DE TORRE Y DE PALAS WP23 |  | 141d | 2026-08-04 A | 2027-01-08 | 375, 12, 14, 13 | 20% | 112.8d | 2026-12-26 | 2027-01-05 | 8d | 0d |  | 66,617,424.7 | 83,271,780.88 |  |  | Día 141,111111111111 | Día 15,7777777777778 |
| 393 | 10.18.2 | EXCAVACIÓN DE CIMENTACION WP23 |  | 7d | 2027-01-08 | 2027-01-18 | 392, 342, 376 |  |  | 2027-01-05 | 2027-01-14 | 7d | 28.62d | 0d | 312,374,505.67 | 312,374,505.67 |  | Día 23 | Día 147,888888888889 | Día 141,666666666667 |
| 394 | 10.18.3 | BANCO DE DUCTO WP23 |  | 3d | 2027-01-18 | 2027-01-20 | 393 |  |  | 2027-01-14 | 2027-01-16 | 3d | 40.62d | 0d | 9,527,825.69 | 9,527,825.69 |  |  | Día 150,555555555556 | Día 147,888888888889 |
| 395 | 10.18.4 | COMPACTACION DE SELLO DE BASE WP23 |  | 4d | 2027-01-20 | 2027-01-25 | 394 |  |  | 2027-01-16 | 2027-01-21 | 4d | 51.62d | 2d | 320,494,616.72 | 320,494,616.72 |  | Día 30 | Día 154,111111111111 | Día 150,555555555556 |
| 396 | 10.18.5 | SOLADO WP23 |  | 2d | 2027-01-27 | 2027-01-29 | 395, 347 |  |  | 2027-01-21 | 2027-01-23 | 2d | 49.62d | 0d | 94,303,618.55 | 94,303,618.55 |  | Día 28 | Día 157,666666666667 | Día 155,888888888889 |
| 397 | 10.18.6 | INSTALACIÓN DE PERNOS Y SOFT-SPOT WP23 |  | 5d | 2027-01-29 | 2027-02-03 | 396 |  |  | 2027-01-23 | 2027-01-28 | 5d | 49.62d | 0d | 179,436,034.15 | 179,436,034.15 |  | Día 30 | Día 162,111111111111 | Día 157,666666666667 |
| 398 | 10.18.7 | INSTALACIÓN DE ACERO DE REFUERZO WP23 |  | 15d | 2027-02-03 | 2027-02-19 | 397 |  |  | 2027-01-28 | 2027-02-13 | 15d | 49.62d | 0d | 1,212,623,361.21 | 1,212,623,361.21 |  |  | Día 175,444444444444 | Día 162,111111111111 |
| 399 | 10.18.8 | ENCOFRADO DE ZAPATA Y DE PEDESTAL WP23 |  | 3d | 2027-02-19 | 2027-02-22 | 398 |  |  | 2027-02-13 | 2027-02-17 | 3d | 81.62d | 0d |  |  |  |  | Día 178,111111111111 | Día 175,444444444444 |
| 400 | 10.18.9 | HITO: ALISTAMIENTO Y MOVILIZACIÓN DE PLANTA DE CONCRETO PARA WP23 | milestone | 0d | 2027-02-19 | 2027-02-19 | 398 |  |  | 2027-02-13 | 2027-02-13 | 0d | 84.62d | 3d |  |  |  | Día 0 | Día 175,444444444444 | Día 175,444444444444 |
| 401 | 10.18.10 | FUNDIDA WP23 |  | 1d | 2027-02-23 | 2027-02-23 | 399, 400 |  |  | 2027-02-17 | 2027-02-17 | 1d | 81.62d | 0d | 1,230,815,225.95 | 1,230,815,225.95 |  |  | Día 179 | Día 178,111111111111 |
| 402 | 10.18.11 | CURADO DEL CONCRETO WP23 |  | 7d | 2027-02-23 | 2027-03-03 | 401 |  |  | 2027-02-18 | 2027-02-25 | 7d | 81.62d | 0d |  |  |  |  | Día 185,222222222222 | Día 179 |
| 403 | 10.18.12 | INSTALACIONES ELECTRICAS Y SISTEMA PUESTA TIERRA WP23 |  | 3d | 2027-03-03 | 2027-03-05 | 402 |  |  | 2027-02-25 | 2027-02-27 | 3d | 81.62d | 0d | 52,736,347.43 | 52,736,347.43 |  | Día 28 | Día 187,888888888889 | Día 185,222222222222 |
| 404 | 10.18.13 | INSTALACION DE GROUT Y MORTERO AUTOCOMPACTANTE DE ALTA RESISTENCIA WP23 |  | 2d | 2027-03-05 | 2027-03-08 | 403 |  |  | 2027-03-01 | 2027-03-02 | 2d | 81.62d | 0d | 46,410,609.01 | 46,410,609.01 |  | Día 23 | Día 189,666666666667 | Día 187,888888888889 |
| 405 | 10.18.14 | TAPADO AREA DE CIMENTACIÓN Y CONFORMACIÓN DE PLATAFORMA WP23 |  | 10d | 2027-03-05 | 2027-03-16 | 403, 353, 354 |  |  | 2027-03-01 | 2027-03-11 | 10d | 81.62d | 0d | 1,587,346,329.55 | 1,587,346,329.55 |  | Día 23 | Día 196,777777777778 | Día 187,888888888889 |
| 406 | 10.18.15 | ESTABILIZACIÓN DE TALUDES EN PLATAFORMA Y RECONFORMACION FINAL WP23 |  | 12d | 2027-03-08 | 2027-03-20 | 404SS+2d, 355, 405SS+2d |  |  | 2027-03-02 | 2027-03-15 | 12d | 81.62d | 0d | 179,532,477.24 | 179,532,477.24 |  |  | Día 200,333333333333 | Día 189,666666666667 |
| 407 | 10.18.16 | HITO: FINALIZACION DE ACTIVIDADES EN CIMENTACION WP23 | milestone | 0d | 2027-03-20 | 2027-03-20 | 406, 390 |  |  | 2027-03-15 | 2027-03-15 | 0d | 141.62d | 7d |  |  |  | Día 0 | Día 200,333333333333 | Día 200,333333333333 |
| 408 | 10.19 | **CIMENTACION WP24** |  | 212.38d | 2026-08-06 A | 2027-03-31 |  | 13% | 184.12d | 2027-01-05 | 2027-03-24 | 72d | 134.62d |  | 5,292,218,375.87 | 5,308,872,732.05 | GRUPO 1 | Día 0 | Día 206,555555555556 | Día 17,7777777777778 |
| 409 | 10.19.1 | LOCALIZACION, REPLANTEO Y DESBROCE DE AREA DE ACOPIO DE TORRE Y DE PALAS WP24 |  | 147d | 2026-08-06 A | 2027-01-18 | 392, 12, 14, 13 | 20% | 117.6d | 2027-01-05 | 2027-01-14 | 8d | 0d |  | 66,617,424.7 | 83,271,780.88 |  |  | Día 148,444444444444 | Día 17,7777777777778 |
| 410 | 10.19.2 | EXCAVACIÓN DE CIMENTACION WP24 |  | 7d | 2027-01-18 | 2027-01-26 | 409, 359, 393 |  |  | 2027-01-15 | 2027-01-22 | 7d | 28d | 0d | 312,374,505.67 | 312,374,505.67 |  | Día 23 | Día 154,666666666667 | Día 148,444444444444 |
| 411 | 10.19.3 | BANCO DE DUCTO WP24 |  | 3d | 2027-01-26 | 2027-01-28 | 410 |  |  | 2027-01-22 | 2027-01-26 | 3d | 28d | 0d | 9,527,825.69 | 9,527,825.69 |  |  | Día 157,333333333333 | Día 154,666666666667 |
| 412 | 10.19.4 | COMPACTACION DE SELLO DE BASE WP24 |  | 4d | 2027-01-28 | 2027-02-02 | 411 |  |  | 2027-01-26 | 2027-01-29 | 4d | 28d | 1.38d | 320,494,616.72 | 320,494,616.72 |  | Día 30 | Día 160,888888888889 | Día 157,333333333333 |
| 413 | 10.19.5 | SOLADO WP24 |  | 2d | 2027-02-03 | 2027-02-05 | 412, 364 |  |  | 2027-01-29 | 2027-02-01 | 2d | 26.62d | 0d | 94,303,618.55 | 94,303,618.55 |  | Día 28 | Día 163,888888888889 | Día 162,111111111111 |
| 414 | 10.19.6 | INSTALACIÓN DE PERNOS Y SOFT-SPOT WP24 |  | 5d | 2027-02-05 | 2027-02-10 | 413 |  |  | 2027-02-01 | 2027-02-05 | 5d | 26.62d | 0d | 179,436,034.15 | 179,436,034.15 |  | Día 30 | Día 168,333333333333 | Día 163,888888888889 |
| 415 | 10.19.7 | INSTALACIÓN DE ACERO DE REFUERZO WP24 |  | 15d | 2027-02-11 | 2027-02-26 | 414 |  |  | 2027-02-06 | 2027-02-22 | 15d | 26.62d | 0d | 1,212,623,361.21 | 1,212,623,361.21 |  |  | Día 181,666666666667 | Día 168,333333333333 |
| 416 | 10.19.8 | ENCOFRADO DE ZAPATA Y DE PEDESTAL WP24 |  | 3d | 2027-02-26 | 2027-03-02 | 415 |  |  | 2027-02-22 | 2027-02-25 | 3d | 76.62d | 0d |  |  |  |  | Día 184,333333333333 | Día 181,666666666667 |
| 417 | 10.19.9 | HITO: ALISTAMIENTO Y MOVILIZACIÓN DE PLANTA DE CONCRETO PARA WP24 | milestone | 0d | 2027-02-26 | 2027-02-26 | 415 |  |  | 2027-02-22 | 2027-02-22 | 0d | 79.62d | 3d |  |  |  | Día 0 | Día 181,666666666667 | Día 181,666666666667 |
| 418 | 10.19.10 | FUNDIDA WP24 |  | 1d | 2027-03-02 | 2027-03-03 | 416, 417 |  |  | 2027-02-25 | 2027-02-26 | 1d | 76.62d | 0d | 1,230,815,225.95 | 1,230,815,225.95 |  |  | Día 185,222222222222 | Día 184,333333333333 |
| 419 | 10.19.11 | CURADO DEL CONCRETO WP24 |  | 7d | 2027-03-03 | 2027-03-10 | 418 |  |  | 2027-02-26 | 2027-03-05 | 7d | 76.62d | 0d |  |  |  |  | Día 191,444444444444 | Día 185,222222222222 |
| 420 | 10.19.12 | INSTALACIONES ELECTRICAS Y SISTEMA PUESTA TIERRA WP24 |  | 3d | 2027-03-10 | 2027-03-13 | 419 |  |  | 2027-03-05 | 2027-03-09 | 3d | 76.62d | 0d | 52,736,347.43 | 52,736,347.43 |  | Día 28 | Día 194,111111111111 | Día 191,444444444444 |
| 421 | 10.19.13 | INSTALACION DE GROUT Y MORTERO AUTOCOMPACTANTE DE ALTA RESISTENCIA WP24 |  | 2d | 2027-03-13 | 2027-03-16 | 420 |  |  | 2027-03-09 | 2027-03-11 | 2d | 76.62d | 0d | 46,410,609.01 | 46,410,609.01 |  | Día 23 | Día 195,888888888889 | Día 194,111111111111 |
| 422 | 10.19.14 | TAPADO AREA DE CIMENTACIÓN Y CONFORMACIÓN DE PLATAFORMA WP24 |  | 10d | 2027-03-13 | 2027-03-27 | 420, 370, 371 |  |  | 2027-03-09 | 2027-03-19 | 10d | 76.62d | 0d | 1,587,346,329.55 | 1,587,346,329.55 |  | Día 23 | Día 203 | Día 194,111111111111 |
| 423 | 10.19.15 | ESTABILIZACIÓN DE TALUDES EN PLATAFORMA Y RECONFORMACION FINAL WP24 |  | 12d | 2027-03-16 | 2027-03-31 | 421SS+2d, 372, 422SS+2d |  |  | 2027-03-11 | 2027-03-24 | 12d | 76.62d | 0d | 179,532,477.24 | 179,532,477.24 |  |  | Día 206,555555555556 | Día 195,888888888889 |
| 424 | 10.19.16 | HITO: FINALIZACION DE ACTIVIDADES EN CIMENTACION WP24 | milestone | 0d | 2027-03-31 | 2027-03-31 | 423, 407 |  |  | 2027-03-24 | 2027-03-24 | 0d | 134.62d | 7d |  |  |  | Día 0 | Día 206,555555555556 | Día 206,555555555556 |

| ID | WBS | Task | Type | Duration | Start | Finish | Predecessors | Complete | Remaining | Baseline start | Baseline finish | Baseline duration | Total slack | Free slack | Cost | Baseline cost | GRUPO DE EJECUCION | Text20 | Text21 | Text30 |
| --- | --- | --- | --- | --- | --- | --- | --- | --- | --- | --- | --- | --- | --- | --- | --- | --- | --- | --- | --- | --- |
| 425 | 10.20 | **CIMENTACION WP25** |  | 217.12d | 2026-08-10 A | 2027-04-08 |  | 13% | 187.86d | 2027-01-15 | 2027-04-05 | 72d | 127.62d |  | 5,292,218,375.87 | 5,308,872,732.05 | GRUPO 2 | Día 0 | Día 212,777777777778 | Día 19,7777777777778 |
| 426 | 10.20.1 | LOCALIZACION, REPLANTEO Y DESBROCE DE AREA DE ACOPIO DE TORRE Y DE PALAS WP25 |  | 153d | 2026-08-10 A | 2027-01-27 | 409, 12, 14, 13 | 20% | 122.4d | 2027-01-15 | 2027-01-23 | 8d | 0d |  | 66,617,424.7 | 83,271,780.88 |  |  | Día 155,777777777778 | Día 19,7777777777778 |
| 427 | 10.20.2 | EXCAVACIÓN DE CIMENTACION WP25 |  | 7d | 2027-01-27 | 2027-02-03 | 426, 376, 410 |  |  | 2027-01-23 | 2027-01-30 | 7d | 27.75d | 0d | 312,374,505.67 | 312,374,505.67 |  | Día 23 | Día 162 | Día 155,777777777778 |
| 428 | 10.20.3 | BANCO DE DUCTO WP25 |  | 3d | 2027-02-03 | 2027-02-06 | 427 |  |  | 2027-01-30 | 2027-02-03 | 3d | 39.75d | 0d | 9,527,825.69 | 9,527,825.69 |  |  | Día 164,666666666667 | Día 162 |
| 429 | 10.20.4 | COMPACTACION DE SELLO DE BASE WP25 |  | 4d | 2027-02-06 | 2027-02-10 | 428 |  |  | 2027-02-03 | 2027-02-06 | 4d | 39.75d | 0.12d | 320,494,616.72 | 320,494,616.72 |  | Día 30 | Día 168,222222222222 | Día 164,666666666667 |
| 430 | 10.20.5 | SOLADO WP25 |  | 2d | 2027-02-11 | 2027-02-12 | 429, 381 |  |  | 2027-02-06 | 2027-02-09 | 2d | 39.62d | 0d | 94,303,618.55 | 94,303,618.55 |  | Día 28 | Día 170,111111111111 | Día 168,333333333333 |
| 431 | 10.20.6 | INSTALACIÓN DE PERNOS Y SOFT-SPOT WP25 |  | 5d | 2027-02-12 | 2027-02-18 | 430, 347 |  |  | 2027-02-09 | 2027-02-15 | 5d | 39.62d | 0d | 179,436,034.15 | 179,436,034.15 |  | Día 30 | Día 174,555555555556 | Día 170,111111111111 |
| 432 | 10.20.7 | INSTALACIÓN DE ACERO DE REFUERZO WP25 |  | 15d | 2027-02-18 | 2027-03-05 | 431 |  |  | 2027-02-15 | 2027-03-02 | 15d | 39.62d | 0d | 1,212,623,361.21 | 1,212,623,361.21 |  |  | Día 187,888888888889 | Día 174,555555555556 |
| 433 | 10.20.8 | ENCOFRADO DE ZAPATA Y DE PEDESTAL WP25 |  | 3d | 2027-03-05 | 2027-03-09 | 432 |  |  | 2027-03-02 | 2027-03-05 | 3d | 79.62d | 0d |  |  |  |  | Día 190,555555555556 | Día 187,888888888889 |
| 434 | 10.20.9 | HITO: ALISTAMIENTO Y MOVILIZACIÓN DE PLANTA DE CONCRETO PARA WP25 | milestone | 0d | 2027-03-05 | 2027-03-05 | 432 |  |  | 2027-03-02 | 2027-03-02 | 0d | 82.62d | 3d |  |  |  | Día 0 | Día 187,888888888889 | Día 187,888888888889 |
| 435 | 10.20.10 | FUNDIDA WP25 |  | 1d | 2027-03-09 | 2027-03-10 | 433, 434 |  |  | 2027-03-05 | 2027-03-06 | 1d | 79.62d | 0d | 1,230,815,225.95 | 1,230,815,225.95 |  |  | Día 191,444444444444 | Día 190,555555555556 |
| 436 | 10.20.11 | CURADO DEL CONCRETO WP25 |  | 7d | 2027-03-10 | 2027-03-17 | 435 |  |  | 2027-03-06 | 2027-03-13 | 7d | 79.62d | 0d |  |  |  |  | Día 197,666666666667 | Día 191,444444444444 |
| 437 | 10.20.12 | INSTALACIONES ELECTRICAS Y SISTEMA PUESTA TIERRA WP25 |  | 3d | 2027-03-17 | 2027-03-20 | 436 |  |  | 2027-03-13 | 2027-03-17 | 3d | 79.62d | 0d | 52,736,347.43 | 52,736,347.43 |  | Día 28 | Día 200,333333333333 | Día 197,666666666667 |
| 438 | 10.20.13 | INSTALACION DE GROUT Y MORTERO AUTOCOMPACTANTE DE ALTA RESISTENCIA WP25 |  | 2d | 2027-03-20 | 2027-03-24 | 437 |  |  | 2027-03-17 | 2027-03-19 | 2d | 79.62d | 0d | 46,410,609.01 | 46,410,609.01 |  | Día 23 | Día 202,111111111111 | Día 200,333333333333 |
| 439 | 10.20.14 | TAPADO AREA DE CIMENTACIÓN Y CONFORMACIÓN DE PLATAFORMA WP25 |  | 10d | 2027-03-20 | 2027-04-03 | 437, 387, 388 |  |  | 2027-03-17 | 2027-03-31 | 10d | 79.62d | 0d | 1,587,346,329.55 | 1,587,346,329.55 |  | Día 23 | Día 209,222222222222 | Día 200,333333333333 |
| 440 | 10.20.15 | ESTABILIZACIÓN DE TALUDES EN PLATAFORMA Y RECONFORMACION FINAL WP25 |  | 12d | 2027-03-24 | 2027-04-08 | 438SS+2d, 389, 439SS+2d |  |  | 2027-03-19 | 2027-04-05 | 12d | 79.62d | 0d | 179,532,477.24 | 179,532,477.24 |  |  | Día 212,777777777778 | Día 202,111111111111 |
| 441 | 10.20.16 | HITO: FINALIZACION DE ACTIVIDADES EN CIMENTACION WP25 | milestone | 0d | 2027-04-08 | 2027-04-08 | 440, 424 |  |  | 2027-04-05 | 2027-04-05 | 0d | 127.62d | 8.12d |  |  |  | Día 0 | Día 212,777777777778 | Día 212,777777777778 |
| 442 | 10.21 | **CIMENTACION WP26** |  | 222d | 2026-08-13 A | 2027-04-16 |  | 14% | 191.76d | 2027-01-23 | 2027-04-13 | 72d | 119.5d |  | 5,292,218,375.87 | 5,308,872,732.05 | GRUPO 3 | Día 0 | Día 220 | Día 22,6666666666667 |
| 443 | 10.21.1 | LOCALIZACION, REPLANTEO Y DESBROCE DE AREA DE ACOPIO DE TORRE Y DE PALAS WP26 |  | 158d | 2026-08-13 A | 2027-02-04 | 426, 12, 14, 13 | 20% | 126.4d | 2027-01-23 | 2027-02-01 | 8d | 0d |  | 66,617,424.7 | 83,271,780.88 |  |  | Día 163,111111111111 | Día 22,6666666666667 |
| 444 | 10.21.2 | EXCAVACIÓN DE CIMENTACION WP26 |  | 7d | 2027-02-04 | 2027-02-11 | 443, 394, 427 |  |  | 2027-02-01 | 2027-02-08 | 7d | 26.5d | 0d | 312,374,505.67 | 312,374,505.67 |  | Día 23 | Día 169,333333333333 | Día 163,111111111111 |
| 445 | 10.21.3 | BANCO DE DUCTO WP26 |  | 3d | 2027-02-12 | 2027-02-15 | 444 |  |  | 2027-02-08 | 2027-02-11 | 3d | 47.5d | 0d | 9,527,825.69 | 9,527,825.69 |  |  | Día 172 | Día 169,333333333333 |
| 446 | 10.21.4 | COMPACTACION DE SELLO DE BASE WP26 |  | 4d | 2027-02-15 | 2027-02-19 | 445 |  |  | 2027-02-11 | 2027-02-16 | 4d | 47.5d | 0d | 320,494,616.72 | 320,494,616.72 |  | Día 30 | Día 175,555555555556 | Día 172 |
| 447 | 10.21.5 | SOLADO WP26 |  | 2d | 2027-02-19 | 2027-02-22 | 446 |  |  | 2027-02-16 | 2027-02-17 | 2d | 47.5d | 0d | 94,303,618.55 | 94,303,618.55 |  | Día 28 | Día 177,333333333333 | Día 175,555555555556 |
| 448 | 10.21.6 | INSTALACIÓN DE PERNOS Y SOFT-SPOT WP26 |  | 5d | 2027-02-22 | 2027-02-26 | 447, 398 |  |  | 2027-02-18 | 2027-02-23 | 5d | 47.5d | 0d | 179,436,034.15 | 179,436,034.15 |  | Día 30 | Día 181,777777777778 | Día 177,333333333333 |
| 449 | 10.21.7 | INSTALACIÓN DE ACERO DE REFUERZO WP26 |  | 15d | 2027-02-26 | 2027-03-15 | 448 |  |  | 2027-02-23 | 2027-03-11 | 15d | 47.5d | 0d | 1,212,623,361.21 | 1,212,623,361.21 |  |  | Día 195,111111111111 | Día 181,777777777778 |
| 450 | 10.21.8 | ENCOFRADO DE ZAPATA Y DE PEDESTAL WP26 |  | 3d | 2027-03-15 | 2027-03-17 | 449 |  |  | 2027-03-11 | 2027-03-13 | 3d | 71.5d | 0d |  |  |  |  | Día 197,777777777778 | Día 195,111111111111 |
| 451 | 10.21.9 | HITO: ALISTAMIENTO Y MOVILIZACIÓN DE PLANTA DE CONCRETO PARA WP26 | milestone | 0d | 2027-03-15 | 2027-03-15 | 449 |  |  | 2027-03-11 | 2027-03-11 | 0d | 74.5d | 3d |  |  |  | Día 0 | Día 195,111111111111 | Día 195,111111111111 |
| 452 | 10.21.10 | FUNDIDA WP26 |  | 1d | 2027-03-18 | 2027-03-18 | 450, 451 |  |  | 2027-03-13 | 2027-03-15 | 1d | 71.5d | 0d | 1,230,815,225.95 | 1,230,815,225.95 |  |  | Día 198,666666666667 | Día 197,777777777778 |
| 453 | 10.21.11 | CURADO DEL CONCRETO WP26 |  | 7d | 2027-03-18 | 2027-03-30 | 452 |  |  | 2027-03-15 | 2027-03-23 | 7d | 71.5d | 0d |  |  |  |  | Día 204,888888888889 | Día 198,666666666667 |
| 454 | 10.21.12 | INSTALACIONES ELECTRICAS Y SISTEMA PUESTA TIERRA WP26 |  | 3d | 2027-03-30 | 2027-04-01 | 453 |  |  | 2027-03-24 | 2027-03-29 | 3d | 71.5d | 0d | 52,736,347.43 | 52,736,347.43 |  | Día 28 | Día 207,555555555556 | Día 204,888888888889 |
| 455 | 10.21.13 | INSTALACION DE GROUT Y MORTERO AUTOCOMPACTANTE DE ALTA RESISTENCIA WP26 |  | 2d | 2027-04-01 | 2027-04-03 | 454 |  |  | 2027-03-29 | 2027-03-31 | 2d | 71.5d | 0d | 46,410,609.01 | 46,410,609.01 |  | Día 23 | Día 209,333333333333 | Día 207,555555555556 |
| 456 | 10.21.14 | TAPADO AREA DE CIMENTACIÓN Y CONFORMACIÓN DE PLATAFORMA WP26 |  | 10d | 2027-04-01 | 2027-04-12 | 454, 404, 405 |  |  | 2027-03-29 | 2027-04-08 | 10d | 71.5d | 0d | 1,587,346,329.55 | 1,587,346,329.55 |  | Día 23 | Día 216,444444444444 | Día 207,555555555556 |
| 457 | 10.21.15 | ESTABILIZACIÓN DE TALUDES EN PLATAFORMA Y RECONFORMACION FINAL WP26 |  | 12d | 2027-04-03 | 2027-04-16 | 455SS+2d, 406, 456SS+2d |  |  | 2027-03-31 | 2027-04-13 | 12d | 71.5d | 0d | 179,532,477.24 | 179,532,477.24 |  |  | Día 220 | Día 209,333333333333 |
| 458 | 10.21.16 | HITO: FINALIZACION DE ACTIVIDADES EN CIMENTACION WP26 | milestone | 0d | 2027-04-16 | 2027-04-16 | 457, 441 |  |  | 2027-04-13 | 2027-04-13 | 0d | 119.5d | 8.88d |  |  |  | Día 0 | Día 220 | Día 220 |

| ID | WBS | Task | Type | Duration | Start | Finish | Predecessors | Complete | Remaining | Baseline start | Baseline finish | Baseline duration | Total slack | Free slack | Cost | Baseline cost | GRUPO DE EJECUCION | Text20 | Text21 | Text30 |
| --- | --- | --- | --- | --- | --- | --- | --- | --- | --- | --- | --- | --- | --- | --- | --- | --- | --- | --- | --- | --- |
| 459 | 10.22 | **CIMENTACION WP27** |  | 232d | 2026-08-12 A | 2027-04-26 |  | 14% | 199.79d | 2027-02-01 | 2027-04-21 | 72d | 110.62d |  | 5,292,218,375.87 | 5,308,872,732.05 | GRUPO 1 | Día 0 | Día 227,888888888889 | Día 21,6666666666667 |
| 460 | 10.22.1 | LOCALIZACION, REPLANTEO Y DESBROCE DE AREA DE ACOPIO DE TORRE Y DE PALAS WP27 |  | 168d | 2026-08-12 A | 2027-02-13 | 443, 12, 14, 13 | 20% | 134.4d | 2027-02-01 | 2027-02-09 | 8d | 18.62d | 0d | 66,617,424.7 | 83,271,780.88 |  |  | Día 171 | Día 21,6666666666667 |
| 461 | 10.22.2 | EXCAVACIÓN DE CIMENTACION WP27 |  | 7d | 2027-02-13 | 2027-02-20 | 460, 410, 444 |  |  | 2027-02-09 | 2027-02-17 | 7d | 24.62d | 0d | 312,374,505.67 | 312,374,505.67 |  | Día 23 | Día 177,222222222222 | Día 171 |
| 462 | 10.22.3 | BANCO DE DUCTO WP27 |  | 3d | 2027-02-22 | 2027-02-24 | 461 |  |  | 2027-02-17 | 2027-02-19 | 3d | 24.62d | 0d | 9,527,825.69 | 9,527,825.69 |  |  | Día 179,888888888889 | Día 177,222222222222 |
| 463 | 10.22.4 | COMPACTACION DE SELLO DE BASE WP27 |  | 4d | 2027-02-24 | 2027-03-01 | 462 |  |  | 2027-02-19 | 2027-02-24 | 4d | 24.62d | 0d | 320,494,616.72 | 320,494,616.72 |  | Día 30 | Día 183,444444444444 | Día 179,888888888889 |
| 464 | 10.22.5 | SOLADO WP27 |  | 2d | 2027-03-01 | 2027-03-03 | 463, 415 |  |  | 2027-02-24 | 2027-02-26 | 2d | 24.62d | 0d | 94,303,618.55 | 94,303,618.55 |  | Día 28 | Día 185,222222222222 | Día 183,444444444444 |
| 465 | 10.22.6 | INSTALACIÓN DE PERNOS Y SOFT-SPOT WP27 |  | 5d | 2027-03-03 | 2027-03-08 | 464 |  |  | 2027-02-26 | 2027-03-03 | 5d | 24.62d | 0d | 179,436,034.15 | 179,436,034.15 |  | Día 30 | Día 189,666666666667 | Día 185,222222222222 |
| 466 | 10.22.7 | INSTALACIÓN DE ACERO DE REFUERZO WP27 |  | 15d | 2027-03-08 | 2027-03-27 | 465 |  |  | 2027-03-03 | 2027-03-19 | 15d | 24.62d | 0d | 1,212,623,361.21 | 1,212,623,361.21 |  |  | Día 203 | Día 189,666666666667 |
| 467 | 10.22.8 | ENCOFRADO DE ZAPATA Y DE PEDESTAL WP27 |  | 3d | 2027-03-27 | 2027-03-30 | 466 |  |  | 2027-03-19 | 2027-03-23 | 3d | 64.62d | 0d |  |  |  |  | Día 205,666666666667 | Día 203 |
| 468 | 10.22.9 | HITO: ALISTAMIENTO Y MOVILIZACIÓN DE PLANTA DE CONCRETO PARA WP27 | milestone | 0d | 2027-03-27 | 2027-03-27 | 466 |  |  | 2027-03-19 | 2027-03-19 | 0d | 67.62d | 3d |  |  |  | Día 0 | Día 203 | Día 203 |
| 469 | 10.22.10 | FUNDIDA WP27 |  | 1d | 2027-03-31 | 2027-03-31 | 467, 468 |  |  | 2027-03-24 | 2027-03-24 | 1d | 64.62d | 0d | 1,230,815,225.95 | 1,230,815,225.95 |  |  | Día 206,555555555556 | Día 205,666666666667 |
| 470 | 10.22.11 | CURADO DEL CONCRETO WP27 |  | 7d | 2027-03-31 | 2027-04-08 | 469 |  |  | 2027-03-24 | 2027-04-03 | 7d | 64.62d | 0d |  |  |  |  | Día 212,777777777778 | Día 206,555555555556 |
| 471 | 10.22.12 | INSTALACIONES ELECTRICAS Y SISTEMA PUESTA TIERRA WP27 |  | 3d | 2027-04-08 | 2027-04-10 | 470 |  |  | 2027-04-03 | 2027-04-06 | 3d | 64.62d | 0d | 52,736,347.43 | 52,736,347.43 |  | Día 28 | Día 215,444444444444 | Día 212,777777777778 |
| 472 | 10.22.13 | INSTALACION DE GROUT Y MORTERO AUTOCOMPACTANTE DE ALTA RESISTENCIA WP27 |  | 2d | 2027-04-10 | 2027-04-13 | 471 |  |  | 2027-04-07 | 2027-04-08 | 2d | 64.62d | 0d | 46,410,609.01 | 46,410,609.01 |  | Día 23 | Día 217,222222222222 | Día 215,444444444444 |
| 473 | 10.22.14 | TAPADO AREA DE CIMENTACIÓN Y CONFORMACIÓN DE PLATAFORMA WP27 |  | 10d | 2027-04-10 | 2027-04-21 | 471, 421, 422 |  |  | 2027-04-07 | 2027-04-16 | 10d | 64.62d | 0d | 1,587,346,329.55 | 1,587,346,329.55 |  | Día 23 | Día 224,333333333333 | Día 215,444444444444 |
| 474 | 10.22.15 | ESTABILIZACIÓN DE TALUDES EN PLATAFORMA Y RECONFORMACION FINAL WP27 |  | 12d | 2027-04-13 | 2027-04-26 | 472SS+2d, 423, 473SS+2d |  |  | 2027-04-08 | 2027-04-21 | 12d | 64.62d | 0d | 179,532,477.24 | 179,532,477.24 |  |  | Día 227,888888888889 | Día 217,222222222222 |
| 475 | 10.22.16 | HITO: FINALIZACION DE ACTIVIDADES EN CIMENTACION WP27 | milestone | 0d | 2027-04-26 | 2027-04-26 | 474, 458 |  |  | 2027-04-21 | 2027-04-21 | 0d | 110.62d | 8d |  |  |  | Día 0 | Día 227,888888888889 | Día 227,888888888889 |
| 476 | 10.23 | **CIMENTACION WP28** |  | 72d | 2027-02-13 | 2027-05-04 |  |  |  | 2027-02-09 | 2027-04-29 | 72d | 18.62d |  | 5,308,872,732.05 | 5,308,872,732.05 | GRUPO 2 | Día 0 | Día 235 | Día 171 |
| 477 | 10.23.1 | LOCALIZACION, REPLANTEO Y DESBROCE DE AREA DE ACOPIO DE TORRE Y DE PALAS WP28 |  | 8d | 2027-02-13 | 2027-02-22 | 460, 12, 14, 13 |  |  | 2027-02-09 | 2027-02-17 | 8d | 18.62d | 0d | 83,271,780.88 | 83,271,780.88 |  |  | Día 178,111111111111 | Día 171 |
| 478 | 10.23.2 | EXCAVACIÓN DE CIMENTACION WP28 |  | 7d | 2027-02-23 | 2027-03-02 | 477, 427, 461 |  |  | 2027-02-18 | 2027-02-25 | 7d | 23.62d | 0d | 312,374,505.67 | 312,374,505.67 |  | Día 23 | Día 184,333333333333 | Día 178,111111111111 |
| 479 | 10.23.3 | BANCO DE DUCTO WP28 |  | 3d | 2027-03-02 | 2027-03-04 | 478 |  |  | 2027-02-25 | 2027-02-27 | 3d | 36.62d | 0d | 9,527,825.69 | 9,527,825.69 |  |  | Día 187 | Día 184,333333333333 |
| 480 | 10.23.4 | COMPACTACION DE SELLO DE BASE WP28 |  | 4d | 2027-03-05 | 2027-03-09 | 479 |  |  | 2027-03-01 | 2027-03-04 | 4d | 36.62d | 0d | 320,494,616.72 | 320,494,616.72 |  | Día 30 | Día 190,555555555556 | Día 187 |
| 481 | 10.23.5 | SOLADO WP28 |  | 2d | 2027-03-09 | 2027-03-11 | 480, 432 |  |  | 2027-03-04 | 2027-03-06 | 2d | 36.62d | 0d | 94,303,618.55 | 94,303,618.55 |  | Día 28 | Día 192,333333333333 | Día 190,555555555556 |
| 482 | 10.23.6 | INSTALACIÓN DE PERNOS Y SOFT-SPOT WP28 |  | 5d | 2027-03-11 | 2027-03-16 | 481 |  |  | 2027-03-06 | 2027-03-11 | 5d | 36.62d | 0d | 179,436,034.15 | 179,436,034.15 |  | Día 30 | Día 196,777777777778 | Día 192,333333333333 |
| 483 | 10.23.7 | INSTALACIÓN DE ACERO DE REFUERZO WP28 |  | 15d | 2027-03-17 | 2027-04-05 | 482 |  |  | 2027-03-12 | 2027-03-31 | 15d | 36.62d | 0d | 1,212,623,361.21 | 1,212,623,361.21 |  |  | Día 210,111111111111 | Día 196,777777777778 |
| 484 | 10.23.8 | ENCOFRADO DE ZAPATA Y DE PEDESTAL WP28 |  | 3d | 2027-04-05 | 2027-04-08 | 483 |  |  | 2027-03-31 | 2027-04-03 | 3d | 66.62d | 0d |  |  |  |  | Día 212,777777777778 | Día 210,111111111111 |
| 485 | 10.23.9 | HITO: ALISTAMIENTO Y MOVILIZACIÓN DE PLANTA DE CONCRETO PARA WP28 | milestone | 0d | 2027-04-05 | 2027-04-05 | 483 |  |  | 2027-03-31 | 2027-03-31 | 0d | 69.62d | 3d |  |  |  | Día 0 | Día 210,111111111111 | Día 210,111111111111 |
| 486 | 10.23.10 | FUNDIDA WP28 |  | 1d | 2027-04-08 | 2027-04-09 | 484, 485 |  |  | 2027-04-03 | 2027-04-05 | 1d | 66.62d | 0d | 1,230,815,225.95 | 1,230,815,225.95 |  |  | Día 213,666666666667 | Día 212,777777777778 |
| 487 | 10.23.11 | CURADO DEL CONCRETO WP28 |  | 7d | 2027-04-09 | 2027-04-16 | 486 |  |  | 2027-04-05 | 2027-04-12 | 7d | 66.62d | 0d |  |  |  |  | Día 219,888888888889 | Día 213,666666666667 |
| 488 | 10.23.12 | INSTALACIONES ELECTRICAS Y SISTEMA PUESTA TIERRA WP28 |  | 3d | 2027-04-16 | 2027-04-20 | 487 |  |  | 2027-04-12 | 2027-04-15 | 3d | 66.62d | 0d | 52,736,347.43 | 52,736,347.43 |  | Día 28 | Día 222,555555555556 | Día 219,888888888889 |
| 489 | 10.23.13 | INSTALACION DE GROUT Y MORTERO AUTOCOMPACTANTE DE ALTA RESISTENCIA WP28 |  | 2d | 2027-04-20 | 2027-04-21 | 488 |  |  | 2027-04-15 | 2027-04-16 | 2d | 66.62d | 0d | 46,410,609.01 | 46,410,609.01 |  | Día 23 | Día 224,333333333333 | Día 222,555555555556 |
| 490 | 10.23.14 | TAPADO AREA DE CIMENTACIÓN Y CONFORMACIÓN DE PLATAFORMA WP28 |  | 10d | 2027-04-20 | 2027-04-30 | 488, 438, 439 |  |  | 2027-04-15 | 2027-04-26 | 10d | 66.62d | 0d | 1,587,346,329.55 | 1,587,346,329.55 |  | Día 23 | Día 231,444444444444 | Día 222,555555555556 |
| 491 | 10.23.15 | ESTABILIZACIÓN DE TALUDES EN PLATAFORMA Y RECONFORMACION FINAL WP28 |  | 12d | 2027-04-22 | 2027-05-04 | 489SS+2d, 440, 490SS+2d |  |  | 2027-04-17 | 2027-04-29 | 12d | 66.62d | 0d | 179,532,477.24 | 179,532,477.24 |  |  | Día 235 | Día 224,333333333333 |
| 492 | 10.23.16 | HITO: FINALIZACION DE ACTIVIDADES EN CIMENTACION WP28 | milestone | 0d | 2027-05-04 | 2027-05-04 | 491, 475 |  |  | 2027-04-29 | 2027-04-29 | 0d | 102.62d | 8d |  |  |  | Día 0 | Día 235 | Día 235 |

| ID | WBS | Task | Type | Duration | Start | Finish | Predecessors | Baseline start | Baseline finish | Baseline duration | Total slack | Free slack | Cost | Baseline cost | GRUPO DE EJECUCION | Text20 | Text21 | Text30 |
| --- | --- | --- | --- | --- | --- | --- | --- | --- | --- | --- | --- | --- | --- | --- | --- | --- | --- | --- |
| 493 | 10.24 | **CIMENTACION WP3** |  | 72d | 2027-02-23 | 2027-05-13 |  | 2027-02-18 | 2027-05-08 | 72d | 18.62d |  | 5,308,872,732.05 | 5,308,872,732.05 | GRUPO 3 | Día 0 | Día 242,111111111111 | Día 178,111111111111 |
| 494 | 10.24.1 | LOCALIZACION, REPLANTEO Y DESBROCE DE AREA DE ACOPIO DE TORRE Y DE PALAS WP3 |  | 8d | 2027-02-23 | 2027-03-03 | 477, 11, 15 | 2027-02-18 | 2027-02-26 | 8d | 18.62d | 0d | 83,271,780.88 | 83,271,780.88 |  |  | Día 185,222222222222 | Día 178,111111111111 |
| 495 | 10.24.2 | EXCAVACIÓN DE CIMENTACION WP3 |  | 7d | 2027-03-03 | 2027-03-10 | 494, 444, 478 | 2027-02-26 | 2027-03-05 | 7d | 22.62d | 0d | 312,374,505.67 | 312,374,505.67 |  | Día 23 | Día 191,444444444444 | Día 185,222222222222 |
| 496 | 10.24.3 | BANCO DE DUCTO WP3 |  | 3d | 2027-03-10 | 2027-03-13 | 495 | 2027-03-05 | 2027-03-09 | 3d | 44.62d | 0d | 9,527,825.69 | 9,527,825.69 |  |  | Día 194,111111111111 | Día 191,444444444444 |
| 497 | 10.24.4 | COMPACTACION DE SELLO DE BASE WP3 |  | 4d | 2027-03-13 | 2027-03-17 | 496 | 2027-03-09 | 2027-03-12 | 4d | 44.62d | 0d | 320,494,616.72 | 320,494,616.72 |  | Día 30 | Día 197,666666666667 | Día 194,111111111111 |
| 498 | 10.24.5 | SOLADO WP3 |  | 2d | 2027-03-17 | 2027-03-19 | 497, 449 | 2027-03-12 | 2027-03-15 | 2d | 44.62d | 0d | 94,303,618.55 | 94,303,618.55 |  | Día 28 | Día 199,444444444444 | Día 197,666666666667 |
| 499 | 10.24.6 | INSTALACIÓN DE PERNOS Y SOFT-SPOT WP3 |  | 5d | 2027-03-19 | 2027-03-29 | 498 | 2027-03-15 | 2027-03-20 | 5d | 44.62d | 0d | 179,436,034.15 | 179,436,034.15 |  | Día 30 | Día 203,888888888889 | Día 199,444444444444 |
| 500 | 10.24.7 | INSTALACIÓN DE ACERO DE REFUERZO WP3 |  | 15d | 2027-03-29 | 2027-04-13 | 499 | 2027-03-20 | 2027-04-08 | 15d | 44.62d | 0d | 1,212,623,361.21 | 1,212,623,361.21 |  |  | Día 217,222222222222 | Día 203,888888888889 |
| 501 | 10.24.8 | ENCOFRADO DE ZAPATA Y DE PEDESTAL WP3 |  | 3d | 2027-04-13 | 2027-04-16 | 500 | 2027-04-08 | 2027-04-12 | 3d | 56.62d | 0d |  |  |  |  | Día 219,888888888889 | Día 217,222222222222 |
| 502 | 10.24.9 | HITO: ALISTAMIENTO Y MOVILIZACIÓN DE PLANTA DE CONCRETO PARA WP3 | milestone | 0d | 2027-04-13 | 2027-04-13 | 500 | 2027-04-08 | 2027-04-08 | 0d | 59.62d | 3d |  |  |  | Día 0 | Día 217,222222222222 | Día 217,222222222222 |
| 503 | 10.24.10 | FUNDIDA WP3 |  | 1d | 2027-04-16 | 2027-04-17 | 501, 502 | 2027-04-12 | 2027-04-13 | 1d | 56.62d | 0d | 1,230,815,225.95 | 1,230,815,225.95 |  |  | Día 220,777777777778 | Día 219,888888888889 |
| 504 | 10.24.11 | CURADO DEL CONCRETO WP3 |  | 7d | 2027-04-17 | 2027-04-24 | 503 | 2027-04-13 | 2027-04-20 | 7d | 56.62d | 0d |  |  |  |  | Día 227 | Día 220,777777777778 |
| 505 | 10.24.12 | INSTALACIONES ELECTRICAS Y SISTEMA PUESTA TIERRA WP3 |  | 3d | 2027-04-24 | 2027-04-28 | 504 | 2027-04-20 | 2027-04-23 | 3d | 56.62d | 0d | 52,736,347.43 | 52,736,347.43 |  | Día 28 | Día 229,666666666667 | Día 227 |
| 506 | 10.24.13 | INSTALACION DE GROUT Y MORTERO AUTOCOMPACTANTE DE ALTA RESISTENCIA WP3 |  | 2d | 2027-04-28 | 2027-04-30 | 505 | 2027-04-23 | 2027-04-26 | 2d | 58.62d | 0d | 46,410,609.01 | 46,410,609.01 |  | Día 23 | Día 231,444444444444 | Día 229,666666666667 |
| 507 | 10.24.14 | TAPADO AREA DE CIMENTACIÓN Y CONFORMACIÓN DE PLATAFORMA WP3 |  | 10d | 2027-04-28 | 2027-05-08 | 505, 455, 456 | 2027-04-23 | 2027-05-04 | 10d | 56.62d | 0d | 1,587,346,329.55 | 1,587,346,329.55 |  | Día 23 | Día 238,555555555556 | Día 229,666666666667 |
| 508 | 10.24.15 | ESTABILIZACIÓN DE TALUDES EN PLATAFORMA Y RECONFORMACION FINAL WP3 |  | 12d | 2027-04-30 | 2027-05-13 | 506SS+2d, 457, 507SS+2d | 2027-04-26 | 2027-05-08 | 12d | 58.62d | 0d | 179,532,477.24 | 179,532,477.24 |  |  | Día 242,111111111111 | Día 231,444444444444 |
| 509 | 10.24.16 | HITO: FINALIZACION DE ACTIVIDADES EN CIMENTACION WP3 | milestone | 0d | 2027-05-13 | 2027-05-13 | 508, 492 | 2027-05-08 | 2027-05-08 | 0d | 94.62d | 8d |  |  |  | Día 0 | Día 242,111111111111 | Día 242,111111111111 |
| 510 | 10.25 | **CIMENTACION WP4** |  | 72d | 2027-03-03 | 2027-05-22 |  | 2027-02-26 | 2027-05-18 | 72d | 18.62d |  | 5,308,872,732.05 | 5,308,872,732.05 | GRUPO 1 | Día 0 | Día 249,222222222222 | Día 185,222222222222 |
| 511 | 10.25.1 | LOCALIZACION, REPLANTEO Y DESBROCE DE AREA DE ACOPIO DE TORRE Y DE PALAS WP4 |  | 8d | 2027-03-03 | 2027-03-11 | 494, 15 | 2027-02-26 | 2027-03-06 | 8d | 18.62d | 0d | 83,271,780.88 | 83,271,780.88 |  |  | Día 192,333333333333 | Día 185,222222222222 |
| 512 | 10.25.2 | EXCAVACIÓN DE CIMENTACION WP4 |  | 7d | 2027-03-11 | 2027-03-18 | 511, 461, 495 | 2027-03-06 | 2027-03-13 | 7d | 21.62d | 0d | 312,374,505.67 | 312,374,505.67 |  | Día 23 | Día 198,555555555556 | Día 192,333333333333 |
| 513 | 10.25.3 | BANCO DE DUCTO WP4 |  | 3d | 2027-03-18 | 2027-03-23 | 512 | 2027-03-13 | 2027-03-17 | 3d | 22.62d | 0d | 9,527,825.69 | 9,527,825.69 |  |  | Día 201,222222222222 | Día 198,555555555556 |
| 514 | 10.25.4 | COMPACTACION DE SELLO DE BASE WP4 |  | 4d | 2027-03-23 | 2027-03-30 | 513 | 2027-03-17 | 2027-03-23 | 4d | 22.62d | 0d | 320,494,616.72 | 320,494,616.72 |  | Día 30 | Día 204,777777777778 | Día 201,222222222222 |
| 515 | 10.25.5 | SOLADO WP4 |  | 2d | 2027-03-30 | 2027-03-31 | 514, 466 | 2027-03-23 | 2027-03-24 | 2d | 22.62d | 0d | 94,303,618.55 | 94,303,618.55 |  | Día 28 | Día 206,555555555556 | Día 204,777777777778 |
| 516 | 10.25.6 | INSTALACIÓN DE PERNOS Y SOFT-SPOT WP4 |  | 5d | 2027-03-31 | 2027-04-06 | 515 | 2027-03-24 | 2027-04-01 | 5d | 22.62d | 0d | 179,436,034.15 | 179,436,034.15 |  | Día 30 | Día 211 | Día 206,555555555556 |
| 517 | 10.25.7 | INSTALACIÓN DE ACERO DE REFUERZO WP4 |  | 15d | 2027-04-06 | 2027-04-21 | 516 | 2027-04-01 | 2027-04-16 | 15d | 22.62d | 0d | 1,212,623,361.21 | 1,212,623,361.21 |  |  | Día 224,333333333333 | Día 211 |
| 518 | 10.25.8 | ENCOFRADO DE ZAPATA Y DE PEDESTAL WP4 |  | 3d | 2027-04-22 | 2027-04-24 | 517 | 2027-04-17 | 2027-04-20 | 3d | 52.62d | 0d |  |  |  |  | Día 227 | Día 224,333333333333 |
| 519 | 10.25.9 | HITO: ALISTAMIENTO Y MOVILIZACIÓN DE PLANTA DE CONCRETO PARA WP4 | milestone | 0d | 2027-04-21 | 2027-04-21 | 517 | 2027-04-16 | 2027-04-16 | 0d | 55.62d | 3d |  |  |  | Día 0 | Día 224,333333333333 | Día 224,333333333333 |
| 520 | 10.25.10 | FUNDIDA WP4 |  | 1d | 2027-04-24 | 2027-04-26 | 518, 519 | 2027-04-20 | 2027-04-21 | 1d | 52.62d | 0d | 1,230,815,225.95 | 1,230,815,225.95 |  |  | Día 227,888888888889 | Día 227 |
| 521 | 10.25.11 | CURADO DEL CONCRETO WP4 |  | 7d | 2027-04-26 | 2027-05-03 | 520 | 2027-04-21 | 2027-04-28 | 7d | 52.62d | 0d |  |  |  |  | Día 234,111111111111 | Día 227,888888888889 |
| 522 | 10.25.12 | INSTALACIONES ELECTRICAS Y SISTEMA PUESTA TIERRAWP4 |  | 3d | 2027-05-04 | 2027-05-06 | 521 | 2027-04-29 | 2027-05-01 | 3d | 52.62d | 0d | 52,736,347.43 | 52,736,347.43 |  | Día 28 | Día 236,777777777778 | Día 234,111111111111 |
| 523 | 10.25.13 | INSTALACION DE GROUT Y MORTERO AUTOCOMPACTANTE DE ALTA RESISTENCIA WP4 |  | 2d | 2027-05-06 | 2027-05-08 | 522 | 2027-05-01 | 2027-05-04 | 2d | 52.62d | 0d | 46,410,609.01 | 46,410,609.01 |  | Día 23 | Día 238,555555555556 | Día 236,777777777778 |
| 524 | 10.25.14 | TAPADO AREA DE CIMENTACIÓN Y CONFORMACIÓN DE PLATAFORMA WP4 |  | 10d | 2027-05-06 | 2027-05-18 | 522, 472, 473 | 2027-05-01 | 2027-05-13 | 10d | 52.62d | 0d | 1,587,346,329.55 | 1,587,346,329.55 |  | Día 23 | Día 245,666666666667 | Día 236,777777777778 |
| 525 | 10.25.15 | ESTABILIZACIÓN DE TALUDES EN PLATAFORMA Y RECONFORMACION FINAL WP4 |  | 12d | 2027-05-08 | 2027-05-22 | 523SS+2d, 474, 524SS+2d | 2027-05-04 | 2027-05-18 | 12d | 52.62d | 0d | 179,532,477.24 | 179,532,477.24 |  |  | Día 249,222222222222 | Día 238,555555555556 |
| 526 | 10.25.16 | HITO: FINALIZACION DE ACTIVIDADES EN CIMENTACION WP4 | milestone | 0d | 2027-05-22 | 2027-05-22 | 525, 509 | 2027-05-18 | 2027-05-18 | 0d | 86.62d | 8d |  |  |  | Día 0 | Día 249,222222222222 | Día 249,222222222222 |

| ID | WBS | Task | Type | Duration | Start | Finish | Predecessors | Baseline start | Baseline finish | Baseline duration | Total slack | Free slack | Cost | Baseline cost | GRUPO DE EJECUCION | Text20 | Text21 | Text30 |
| --- | --- | --- | --- | --- | --- | --- | --- | --- | --- | --- | --- | --- | --- | --- | --- | --- | --- | --- |
| 527 | 10.26 | **CIMENTACION WP2** |  | 72d | 2027-03-11 | 2027-06-01 |  | 2027-03-06 | 2027-05-26 | 72d | 18.62d |  | 5,308,872,732.05 | 5,308,872,732.05 | GRUPO 2 | Día 0 | Día 256,333333333333 | Día 192,333333333333 |
| 528 | 10.26.1 | LOCALIZACION, REPLANTEO Y DESBROCE DE AREA DE ACOPIO DE TORRE Y DE PALAS WP2 |  | 8d | 2027-03-11 | 2027-03-19 | 511, 16 | 2027-03-06 | 2027-03-15 | 8d | 18.62d | 0d | 83,271,780.88 | 83,271,780.88 |  |  | Día 199,444444444444 | Día 192,333333333333 |
| 529 | 10.26.2 | EXCAVACIÓN DE CIMENTACION WP2 |  | 7d | 2027-03-19 | 2027-03-30 | 528, 478, 512 | 2027-03-15 | 2027-03-23 | 7d | 20.62d | 0d | 312,374,505.67 | 312,374,505.67 |  | Día 23 | Día 205,666666666667 | Día 199,444444444444 |
| 530 | 10.26.3 | BANCO DE DUCTO WP2 |  | 3d | 2027-03-31 | 2027-04-02 | 529 | 2027-03-24 | 2027-03-29 | 3d | 34.62d | 0d | 9,527,825.69 | 9,527,825.69 |  |  | Día 208,333333333333 | Día 205,666666666667 |
| 531 | 10.26.4 | COMPACTACION DE SELLO DE BASE WP2 |  | 4d | 2027-04-02 | 2027-04-07 | 529, 530 | 2027-03-29 | 2027-04-02 | 4d | 34.62d | 0d | 320,494,616.72 | 320,494,616.72 |  | Día 30 | Día 211,888888888889 | Día 208,333333333333 |
| 532 | 10.26.5 | SOLADO WP2 |  | 2d | 2027-04-07 | 2027-04-09 | 531, 483 | 2027-04-02 | 2027-04-05 | 2d | 34.62d | 0d | 94,303,618.55 | 94,303,618.55 |  | Día 28 | Día 213,666666666667 | Día 211,888888888889 |
| 533 | 10.26.6 | INSTALACIÓN DE PERNOS Y SOFT-SPOT WP2 |  | 5d | 2027-04-09 | 2027-04-14 | 532 | 2027-04-05 | 2027-04-09 | 5d | 34.62d | 0d | 179,436,034.15 | 179,436,034.15 |  | Día 30 | Día 218,111111111111 | Día 213,666666666667 |
| 534 | 10.26.7 | INSTALACIÓN DE ACERO DE REFUERZO WP2 |  | 15d | 2027-04-14 | 2027-04-30 | 533 | 2027-04-09 | 2027-04-26 | 15d | 34.62d | 0d | 1,212,623,361.21 | 1,212,623,361.21 |  |  | Día 231,444444444444 | Día 218,111111111111 |
| 535 | 10.26.8 | ENCOFRADO DE ZAPATA Y DE PEDESTAL WP2 |  | 3d | 2027-04-30 | 2027-05-03 | 534 | 2027-04-26 | 2027-04-28 | 3d | 54.62d | 0d |  |  |  |  | Día 234,111111111111 | Día 231,444444444444 |
| 536 | 10.26.9 | HITO: ALISTAMIENTO Y MOVILIZACIÓN DE PLANTA DE CONCRETO PARA WP2 | milestone | 0d | 2027-04-30 | 2027-04-30 | 534 | 2027-04-26 | 2027-04-26 | 0d | 57.62d | 3d |  |  |  | Día 0 | Día 231,444444444444 | Día 231,444444444444 |
| 537 | 10.26.10 | FUNDIDA WP2 |  | 1d | 2027-05-04 | 2027-05-04 | 535, 536 | 2027-04-29 | 2027-04-29 | 1d | 54.62d | 0d | 1,230,815,225.95 | 1,230,815,225.95 |  |  | Día 235 | Día 234,111111111111 |
| 538 | 10.26.11 | CURADO DEL CONCRETO WP2 |  | 7d | 2027-05-04 | 2027-05-13 | 537 | 2027-04-29 | 2027-05-07 | 7d | 54.62d | 0d |  |  |  |  | Día 241,222222222222 | Día 235 |
| 539 | 10.26.12 | INSTALACIONES ELECTRICAS Y SISTEMA PUESTA TIERRA WP2 |  | 3d | 2027-05-13 | 2027-05-15 | 538 | 2027-05-07 | 2027-05-11 | 3d | 54.62d | 0d | 52,736,347.43 | 52,736,347.43 |  | Día 28 | Día 243,888888888889 | Día 241,222222222222 |
| 540 | 10.26.13 | INSTALACION DE GROUT Y MORTERO AUTOCOMPACTANTE DE ALTA RESISTENCIA WP2 |  | 2d | 2027-05-15 | 2027-05-18 | 539 | 2027-05-11 | 2027-05-13 | 2d | 54.62d | 0d | 46,410,609.01 | 46,410,609.01 |  | Día 23 | Día 245,666666666667 | Día 243,888888888889 |
| 541 | 10.26.14 | TAPADO AREA DE CIMENTACIÓN Y CONFORMACIÓN DE PLATAFORMA WP2 |  | 10d | 2027-05-15 | 2027-05-26 | 539, 489, 490 | 2027-05-11 | 2027-05-21 | 10d | 54.62d | 0d | 1,587,346,329.55 | 1,587,346,329.55 |  | Día 23 | Día 252,777777777778 | Día 243,888888888889 |
| 542 | 10.26.15 | ESTABILIZACIÓN DE TALUDES EN PLATAFORMA Y RECONFORMACION FINAL WP2 |  | 12d | 2027-05-18 | 2027-06-01 | 540SS+2d, 491, 541SS+2d | 2027-05-13 | 2027-05-26 | 12d | 54.62d | 0d | 179,532,477.24 | 179,532,477.24 |  |  | Día 256,333333333333 | Día 245,666666666667 |
| 543 | 10.26.16 | HITO: FINALIZACION DE ACTIVIDADES EN CIMENTACION WP2 | milestone | 0d | 2027-06-01 | 2027-06-01 | 542, 526 | 2027-05-26 | 2027-05-26 | 0d | 78.62d | 7d |  |  |  | Día 0 | Día 256,333333333333 | Día 256,333333333333 |
| 544 | 10.27 | **CIMENTACION WP43** |  | 71d | 2027-03-19 | 2027-06-09 |  | 2027-03-15 | 2027-06-04 | 72d | 18.62d |  | 5,308,872,732.05 | 5,308,872,732.05 | GRUPO 3 | Día 0 | Día 262,555555555556 | Día 199,444444444444 |
| 545 | 10.27.1 | LOCALIZACION, REPLANTEO Y DESBROCE DE AREA DE ACOPIO DE TORRE Y DE PALAS WP43 |  | 7d | 2027-03-19 | 2027-03-30 | 528, 16 | 2027-03-15 | 2027-03-24 | 8d | 18.62d | 0d | 83,271,780.88 | 83,271,780.88 |  |  | Día 205,666666666667 | Día 199,444444444444 |
| 546 | 10.27.2 | EXCAVACIÓN DE CIMENTACION WP43 |  | 7d | 2027-03-31 | 2027-04-07 | 545, 495, 529 | 2027-03-24 | 2027-04-03 | 7d | 20.62d | 0d | 312,374,505.67 | 312,374,505.67 |  | Día 23 | Día 211,888888888889 | Día 205,666666666667 |
| 547 | 10.27.3 | BANCO DE DUCTO WP43 |  | 3d | 2027-04-07 | 2027-04-09 | 546 | 2027-04-03 | 2027-04-06 | 3d | 43.62d | 0d | 9,527,825.69 | 9,527,825.69 |  |  | Día 214,555555555556 | Día 211,888888888889 |
| 548 | 10.27.4 | COMPACTACION DE SELLO DE BASE WP43 |  | 4d | 2027-04-10 | 2027-04-14 | 547 | 2027-04-07 | 2027-04-10 | 4d | 43.62d | 0d | 320,494,616.72 | 320,494,616.72 |  | Día 30 | Día 218,111111111111 | Día 214,555555555556 |
| 549 | 10.27.5 | SOLADO WP43 |  | 2d | 2027-04-14 | 2027-04-16 | 548, 500 | 2027-04-10 | 2027-04-13 | 2d | 43.62d | 0d | 94,303,618.55 | 94,303,618.55 |  | Día 28 | Día 219,888888888889 | Día 218,111111111111 |
| 550 | 10.27.6 | INSTALACIÓN DE PERNOS Y SOFT-SPOT WP43 |  | 5d | 2027-04-16 | 2027-04-21 | 549 | 2027-04-13 | 2027-04-17 | 5d | 43.62d | 0d | 179,436,034.15 | 179,436,034.15 |  | Día 30 | Día 224,333333333333 | Día 219,888888888889 |
| 551 | 10.27.7 | INSTALACIÓN DE ACERO DE REFUERZO WP43 |  | 15d | 2027-04-22 | 2027-05-07 | 550 | 2027-04-17 | 2027-05-04 | 15d | 43.62d | 0d | 1,212,623,361.21 | 1,212,623,361.21 |  |  | Día 237,666666666667 | Día 224,333333333333 |
| 552 | 10.27.8 | ENCOFRADO DE ZAPATA Y DE PEDESTAL WP43 |  | 3d | 2027-05-07 | 2027-05-12 | 551 | 2027-05-04 | 2027-05-07 | 3d | 43.62d | 0d |  |  |  |  | Día 240,333333333333 | Día 237,666666666667 |
| 553 | 10.27.9 | HITO: ALISTAMIENTO Y MOVILIZACIÓN DE PLANTA DE CONCRETO PARA WP43 | milestone | 0d | 2027-05-07 | 2027-05-07 | 551 | 2027-05-04 | 2027-05-04 | 0d | 46.62d | 3d |  |  |  | Día 0 | Día 237,666666666667 | Día 237,666666666667 |
| 554 | 10.27.10 | FUNDIDA WP43 |  | 1d | 2027-05-12 | 2027-05-13 | 552, 553 | 2027-05-07 | 2027-05-08 | 1d | 43.62d | 0d | 1,230,815,225.95 | 1,230,815,225.95 |  |  | Día 241,222222222222 | Día 240,333333333333 |
| 555 | 10.27.11 | CURADO DEL CONCRETO WP43 |  | 7d | 2027-05-13 | 2027-05-20 | 554 | 2027-05-08 | 2027-05-17 | 7d | 43.62d | 0d |  |  |  |  | Día 247,444444444444 | Día 241,222222222222 |
| 556 | 10.27.12 | INSTALACIONES ELECTRICAS Y SISTEMA PUESTA TIERRA WP43 |  | 3d | 2027-05-20 | 2027-05-24 | 555 | 2027-05-17 | 2027-05-20 | 3d | 43.62d | 0d | 52,736,347.43 | 52,736,347.43 |  | Día 28 | Día 250,111111111111 | Día 247,444444444444 |
| 557 | 10.27.13 | INSTALACION DE GROUT Y MORTERO AUTOCOMPACTANTE DE ALTA RESISTENCIA WP43 |  | 2d | 2027-05-24 | 2027-05-25 | 556 | 2027-05-20 | 2027-05-21 | 2d | 47.62d | 0d | 46,410,609.01 | 46,410,609.01 |  | Día 23 | Día 251,888888888889 | Día 250,111111111111 |
| 558 | 10.27.14 | TAPADO AREA DE CIMENTACIÓN Y CONFORMACIÓN DE PLATAFORMA WP43 |  | 10d | 2027-05-24 | 2027-06-04 | 556, 506, 507 | 2027-05-20 | 2027-06-01 | 10d | 43.62d | 0d | 1,587,346,329.55 | 1,587,346,329.55 |  | Día 23 | Día 259 | Día 250,111111111111 |
| 559 | 10.27.15 | ESTABILIZACIÓN DE TALUDES EN PLATAFORMA Y RECONFORMACION FINAL WP43 |  | 12d | 2027-05-26 | 2027-06-09 | 557SS+2d, 508, 558SS+2d | 2027-05-21 | 2027-06-04 | 12d | 47.62d | 0d | 179,532,477.24 | 179,532,477.24 |  |  | Día 262,555555555556 | Día 251,888888888889 |
| 560 | 10.27.16 | HITO: FINALIZACION DE ACTIVIDADES EN CIMENTACION WP43 | milestone | 0d | 2027-06-09 | 2027-06-09 | 559, 543 | 2027-06-04 | 2027-06-04 | 0d | 71.62d | 7d |  |  |  | Día 0 | Día 262,555555555556 | Día 262,555555555556 |

| ID | WBS | Task | Type | Duration | Start | Finish | Predecessors | Baseline start | Baseline finish | Baseline duration | Total slack | Free slack | Cost | Baseline cost | GRUPO DE EJECUCION | Text20 | Text21 | Text30 |
| --- | --- | --- | --- | --- | --- | --- | --- | --- | --- | --- | --- | --- | --- | --- | --- | --- | --- | --- |
| 561 | 10.28 | **CIMENTACION WP29** |  | 71d | 2027-03-31 | 2027-06-16 |  | 2027-03-24 | 2027-06-14 | 72d | 18.62d |  | 5,308,872,732.05 | 5,308,872,732.05 | GRUPO 1 | Día 0 | Día 268,777777777778 | Día 205,666666666667 |
| 562 | 10.28.1 | LOCALIZACION, REPLANTEO Y DESBROCE DE AREA DE ACOPIO DE TORRE Y DE PALAS WP29 |  | 7d | 2027-03-31 | 2027-04-07 | 545, 12, 13, 14 | 2027-03-24 | 2027-04-05 | 8d | 18.62d | 0d | 83,271,780.88 | 83,271,780.88 |  |  | Día 211,888888888889 | Día 205,666666666667 |
| 563 | 10.28.2 | EXCAVACIÓN DE CIMENTACION WP29 |  | 7d | 2027-04-07 | 2027-04-14 | 562, 512, 546 | 2027-04-05 | 2027-04-12 | 7d | 20.62d | 0d | 312,374,505.67 | 312,374,505.67 |  | Día 23 | Día 218,111111111111 | Día 211,888888888889 |
| 564 | 10.28.3 | BANCO DE DUCTO WP29 |  | 3d | 2027-04-14 | 2027-04-17 | 563 | 2027-04-12 | 2027-04-15 | 3d | 22.62d | 0d | 9,527,825.69 | 9,527,825.69 |  |  | Día 220,777777777778 | Día 218,111111111111 |
| 565 | 10.28.4 | COMPACTACION DE SELLO DE BASE WP29 |  | 4d | 2027-04-17 | 2027-04-21 | 564 | 2027-04-15 | 2027-04-19 | 4d | 22.62d | 0d | 320,494,616.72 | 320,494,616.72 |  | Día 30 | Día 224,333333333333 | Día 220,777777777778 |
| 566 | 10.28.5 | SOLADO WP29 |  | 2d | 2027-04-22 | 2027-04-23 | 565, 517 | 2027-04-19 | 2027-04-21 | 2d | 22.62d | 0d | 94,303,618.55 | 94,303,618.55 |  | Día 28 | Día 226,111111111111 | Día 224,333333333333 |
| 567 | 10.28.6 | INSTALACIÓN DE PERNOS Y SOFT-SPOT WP29 |  | 5d | 2027-04-23 | 2027-04-29 | 566 | 2027-04-21 | 2027-04-27 | 5d | 22.62d | 0d | 179,436,034.15 | 179,436,034.15 |  | Día 30 | Día 230,555555555556 | Día 226,111111111111 |
| 568 | 10.28.7 | INSTALACIÓN DE ACERO DE REFUERZO WP29 |  | 15d | 2027-04-29 | 2027-05-15 | 567 | 2027-04-27 | 2027-05-13 | 15d | 22.62d | 0d | 1,212,623,361.21 | 1,212,623,361.21 |  |  | Día 243,888888888889 | Día 230,555555555556 |
| 569 | 10.28.8 | ENCOFRADO DE ZAPATA Y DE PEDESTAL WP29 |  | 3d | 2027-05-15 | 2027-05-19 | 568 | 2027-05-13 | 2027-05-17 | 3d | 42.62d | 0d |  |  |  |  | Día 246,555555555556 | Día 243,888888888889 |
| 570 | 10.28.9 | HITO: ALISTAMIENTO Y MOVILIZACIÓN DE PLANTA DE CONCRETO PARA WP29 | milestone | 0d | 2027-05-15 | 2027-05-15 | 568 | 2027-05-13 | 2027-05-13 | 0d | 45.62d | 3d |  |  |  | Día 0 | Día 243,888888888889 | Día 243,888888888889 |
| 571 | 10.28.10 | FUNDIDA WP29 |  | 1d | 2027-05-19 | 2027-05-20 | 569, 570 | 2027-05-17 | 2027-05-18 | 1d | 42.62d | 0d | 1,230,815,225.95 | 1,230,815,225.95 |  |  | Día 247,444444444444 | Día 246,555555555556 |
| 572 | 10.28.11 | CURADO DEL CONCRETO WP29 |  | 7d | 2027-05-20 | 2027-05-27 | 571 | 2027-05-18 | 2027-05-25 | 7d | 42.62d | 0d |  |  |  |  | Día 253,666666666667 | Día 247,444444444444 |
| 573 | 10.28.12 | INSTALACIONES ELECTRICAS Y SISTEMA PUESTA TIERRA WP29 |  | 3d | 2027-05-27 | 2027-06-01 | 572 | 2027-05-25 | 2027-05-28 | 3d | 42.62d | 0d | 52,736,347.43 | 52,736,347.43 |  | Día 28 | Día 256,333333333333 | Día 253,666666666667 |
| 574 | 10.28.13 | INSTALACION DE GROUT Y MORTERO AUTOCOMPACTANTE DE ALTA RESISTENCIA WP29 |  | 2d | 2027-06-01 | 2027-06-03 | 573 | 2027-05-28 | 2027-06-01 | 2d | 42.62d | 0d | 46,410,609.01 | 46,410,609.01 |  | Día 23 | Día 258,111111111111 | Día 256,333333333333 |
| 575 | 10.28.14 | TAPADO AREA DE CIMENTACIÓN Y CONFORMACIÓN DE PLATAFORMA WP29 |  | 10d | 2027-06-01 | 2027-06-12 | 573, 523, 524 | 2027-05-28 | 2027-06-10 | 10d | 42.62d | 0d | 1,587,346,329.55 | 1,587,346,329.55 |  | Día 23 | Día 265,222222222222 | Día 256,333333333333 |
| 576 | 10.28.15 | ESTABILIZACIÓN DE TALUDES EN PLATAFORMA Y RECONFORMACION FINAL WP29 |  | 12d | 2027-06-03 | 2027-06-16 | 574SS+2d, 525, 575SS+2d | 2027-06-01 | 2027-06-14 | 12d | 42.62d | 0d | 179,532,477.24 | 179,532,477.24 |  |  | Día 268,777777777778 | Día 258,111111111111 |
| 577 | 10.28.16 | HITO: FINALIZACION DE ACTIVIDADES EN CIMENTACION WP29 | milestone | 0d | 2027-06-16 | 2027-06-16 | 576, 560 | 2027-06-14 | 2027-06-14 | 0d | 64.62d | 8d |  |  |  | Día 0 | Día 268,777777777778 | Día 268,777777777778 |
| 578 | 10.29 | **CIMENTACION WP30** |  | 72d | 2027-04-07 | 2027-06-25 |  | 2027-04-05 | 2027-06-23 | 72d | 18.62d |  | 5,308,872,732.05 | 5,308,872,732.05 | GRUPO 2 | Día 0 | Día 275,888888888889 | Día 211,888888888889 |
| 579 | 10.29.1 | LOCALIZACION, REPLANTEO Y DESBROCE DE AREA DE ACOPIO DE TORRE Y DE PALAS WP30 |  | 7d | 2027-04-07 | 2027-04-14 | 562, 12, 13, 14 | 2027-04-05 | 2027-04-13 | 8d | 18.62d | 0d | 83,271,780.88 | 83,271,780.88 |  |  | Día 218,111111111111 | Día 211,888888888889 |
| 580 | 10.29.2 | EXCAVACIÓN DE CIMENTACION WP30 |  | 7d | 2027-04-14 | 2027-04-21 | 579, 529, 563 | 2027-04-13 | 2027-04-20 | 7d | 20.62d | 0d | 312,374,505.67 | 312,374,505.67 |  | Día 23 | Día 224,333333333333 | Día 218,111111111111 |
| 581 | 10.29.3 | BANCO DE DUCTO WP30 |  | 3d | 2027-04-22 | 2027-04-24 | 580 | 2027-04-20 | 2027-04-23 | 3d | 35.62d | 0d | 9,527,825.69 | 9,527,825.69 |  |  | Día 227 | Día 224,333333333333 |
| 582 | 10.29.4 | COMPACTACION DE SELLO DE BASE WP30 |  | 4d | 2027-04-24 | 2027-04-29 | 581 | 2027-04-23 | 2027-04-28 | 4d | 35.62d | 1d | 320,494,616.72 | 320,494,616.72 |  | Día 30 | Día 230,555555555556 | Día 227 |
| 583 | 10.29.5 | SOLADO WP30 |  | 2d | 2027-04-30 | 2027-05-01 | 582, 534 | 2027-04-28 | 2027-04-29 | 2d | 34.62d | 0d | 94,303,618.55 | 94,303,618.55 |  | Día 28 | Día 233,222222222222 | Día 231,444444444444 |
| 584 | 10.29.6 | INSTALACIÓN DE PERNOS Y SOFT-SPOT WP30 |  | 5d | 2027-05-03 | 2027-05-07 | 583 | 2027-04-29 | 2027-05-05 | 5d | 34.62d | 0d | 179,436,034.15 | 179,436,034.15 |  | Día 30 | Día 237,666666666667 | Día 233,222222222222 |
| 585 | 10.29.7 | INSTALACIÓN DE ACERO DE REFUERZO WP30 |  | 15d | 2027-05-07 | 2027-05-25 | 584 | 2027-05-05 | 2027-05-21 | 15d | 34.62d | 0d | 1,212,623,361.21 | 1,212,623,361.21 |  |  | Día 251 | Día 237,666666666667 |
| 586 | 10.29.8 | ENCOFRADO DE ZAPATA Y DE PEDESTAL WP30 |  | 3d | 2027-05-25 | 2027-05-27 | 585 | 2027-05-21 | 2027-05-25 | 3d | 44.62d | 0d |  |  |  |  | Día 253,666666666667 | Día 251 |
| 587 | 10.29.9 | HITO: ALISTAMIENTO Y MOVILIZACIÓN DE PLANTA DE CONCRETO PARA WP30 | milestone | 0d | 2027-05-25 | 2027-05-25 | 585 | 2027-05-21 | 2027-05-21 | 0d | 47.62d | 3d |  |  |  | Día 0 | Día 251 | Día 251 |
| 588 | 10.29.10 | FUNDIDA WP30 |  | 1d | 2027-05-27 | 2027-05-28 | 586, 587 | 2027-05-25 | 2027-05-26 | 1d | 44.62d | 0d | 1,230,815,225.95 | 1,230,815,225.95 |  |  | Día 254,555555555556 | Día 253,666666666667 |
| 589 | 10.29.11 | CURADO DEL CONCRETO WP30 |  | 7d | 2027-05-28 | 2027-06-05 | 588 | 2027-05-26 | 2027-06-03 | 7d | 44.62d | 0d |  |  |  |  | Día 260,777777777778 | Día 254,555555555556 |
| 590 | 10.29.12 | INSTALACIONES ELECTRICAS Y SISTEMA PUESTA TIERRA WP30 |  | 3d | 2027-06-05 | 2027-06-10 | 589 | 2027-06-03 | 2027-06-08 | 3d | 44.62d | 0d | 52,736,347.43 | 52,736,347.43 |  | Día 28 | Día 263,444444444444 | Día 260,777777777778 |
| 591 | 10.29.13 | INSTALACION DE GROUT Y MORTERO AUTOCOMPACTANTE DE ALTA RESISTENCIA WP30 |  | 2d | 2027-06-10 | 2027-06-12 | 590 | 2027-06-08 | 2027-06-10 | 2d | 44.62d | 0d | 46,410,609.01 | 46,410,609.01 |  | Día 23 | Día 265,222222222222 | Día 263,444444444444 |
| 592 | 10.29.14 | TAPADO AREA DE CIMENTACIÓN Y CONFORMACIÓN DE PLATAFORMA WP30 |  | 10d | 2027-06-10 | 2027-06-21 | 590, 540, 541 | 2027-06-08 | 2027-06-18 | 10d | 44.62d | 0d | 1,587,346,329.55 | 1,587,346,329.55 |  | Día 23 | Día 272,333333333333 | Día 263,444444444444 |
| 593 | 10.29.15 | ESTABILIZACIÓN DE TALUDES EN PLATAFORMA Y RECONFORMACION FINAL WP30 |  | 12d | 2027-06-12 | 2027-06-25 | 591SS+2d, 542, 592SS+2d | 2027-06-10 | 2027-06-23 | 12d | 44.62d | 0d | 179,532,477.24 | 179,532,477.24 |  |  | Día 275,888888888889 | Día 265,222222222222 |
| 594 | 10.29.16 | HITO: FINALIZACION DE ACTIVIDADES EN CIMENTACION WP30 | milestone | 0d | 2027-06-25 | 2027-06-25 | 593, 577 | 2027-06-23 | 2027-06-23 | 0d | 56.62d | 6d |  |  |  | Día 0 | Día 275,888888888889 | Día 275,888888888889 |

| ID | WBS | Task | Type | Duration | Start | Finish | Predecessors | Baseline start | Baseline finish | Baseline duration | Total slack | Free slack | Cost | Baseline cost | GRUPO DE EJECUCION | Text20 | Text21 | Text30 |
| --- | --- | --- | --- | --- | --- | --- | --- | --- | --- | --- | --- | --- | --- | --- | --- | --- | --- | --- |
| 595 | 10.30 | **CIMENTACION WP31** |  | 71d | 2027-04-14 | 2027-07-01 |  | 2027-04-13 | 2027-07-01 | 72d | 18.62d |  | 5,308,872,732.05 | 5,308,872,732.05 | GRUPO 3 | Día 0 | Día 281,222222222222 | Día 218,111111111111 |
| 596 | 10.30.1 | LOCALIZACION, REPLANTEO Y DESBROCE DE AREA DE ACOPIO DE TORRE Y DE PALAS WP31 |  | 7d | 2027-04-14 | 2027-04-21 | 579, 12, 13, 14 | 2027-04-13 | 2027-04-21 | 8d | 18.62d | 0d | 83,271,780.88 | 83,271,780.88 |  |  | Día 224,333333333333 | Día 218,111111111111 |
| 597 | 10.30.2 | EXCAVACIÓN DE CIMENTACION WP31 |  | 7d | 2027-04-22 | 2027-04-29 | 596, 546, 580 | 2027-04-21 | 2027-04-28 | 7d | 20.62d | 0d | 312,374,505.67 | 312,374,505.67 |  | Día 23 | Día 230,555555555556 | Día 224,333333333333 |
| 598 | 10.30.3 | BANCO DE DUCTO WP31 |  | 3d | 2027-04-29 | 2027-05-01 | 597 | 2027-04-29 | 2027-05-01 | 3d | 20.62d | 0d | 9,527,825.69 | 9,527,825.69 |  |  | Día 233,222222222222 | Día 230,555555555556 |
| 599 | 10.30.4 | COMPACTACION DE SELLO DE BASE WP31 |  | 4d | 2027-05-03 | 2027-05-06 | 598 | 2027-05-01 | 2027-05-06 | 4d | 20.62d | 0d | 320,494,616.72 | 320,494,616.72 |  | Día 30 | Día 236,777777777778 | Día 233,222222222222 |
| 600 | 10.30.5 | SOLADO WP31 |  | 2d | 2027-05-06 | 2027-05-08 | 599 | 2027-05-06 | 2027-05-08 | 2d | 20.62d | 0d | 94,303,618.55 | 94,303,618.55 |  | Día 28 | Día 238,555555555556 | Día 236,777777777778 |
| 601 | 10.30.6 | INSTALACIÓN DE PERNOS Y SOFT-SPOT WP31 |  | 5d | 2027-05-08 | 2027-05-14 | 600 | 2027-05-08 | 2027-05-14 | 5d | 20.62d | 0d | 179,436,034.15 | 179,436,034.15 |  | Día 30 | Día 243 | Día 238,555555555556 |
| 602 | 10.30.7 | INSTALACIÓN DE ACERO DE REFUERZO WP31 |  | 15d | 2027-05-14 | 2027-06-01 | 601 | 2027-05-14 | 2027-06-01 | 15d | 20.62d | 0d | 1,212,623,361.21 | 1,212,623,361.21 |  |  | Día 256,333333333333 | Día 243 |
| 603 | 10.30.8 | ENCOFRADO DE ZAPATA Y DE PEDESTAL WP31 |  | 3d | 2027-06-01 | 2027-06-04 | 602 | 2027-06-01 | 2027-06-03 | 3d | 32.62d | 0d |  |  |  |  | Día 259 | Día 256,333333333333 |
| 604 | 10.30.9 | HITO: ALISTAMIENTO Y MOVILIZACIÓN DE PLANTA DE CONCRETO PARA WP31 | milestone | 0d | 2027-06-01 | 2027-06-01 | 602 | 2027-06-01 | 2027-06-01 | 0d | 35.62d | 3d |  |  |  | Día 0 | Día 256,333333333333 | Día 256,333333333333 |
| 605 | 10.30.10 | FUNDIDA WP31 |  | 1d | 2027-06-04 | 2027-06-04 | 603, 604 | 2027-06-03 | 2027-06-04 | 1d | 32.62d | 0d | 1,230,815,225.95 | 1,230,815,225.95 |  |  | Día 259,888888888889 | Día 259 |
| 606 | 10.30.11 | CURADO DEL CONCRETO WP31 |  | 7d | 2027-06-05 | 2027-06-14 | 605 | 2027-06-04 | 2027-06-12 | 7d | 32.62d | 0d |  |  |  |  | Día 266,111111111111 | Día 259,888888888889 |
| 607 | 10.30.12 | INSTALACIONES ELECTRICAS Y SISTEMA PUESTA TIERRA WP31 |  | 3d | 2027-06-14 | 2027-06-16 | 606 | 2027-06-12 | 2027-06-16 | 3d | 32.62d | 0d | 52,736,347.43 | 52,736,347.43 |  | Día 28 | Día 268,777777777778 | Día 266,111111111111 |
| 608 | 10.30.13 | INSTALACION DE GROUT Y MORTERO AUTOCOMPACTANTE DE ALTA RESISTENCIA WP31 |  | 2d | 2027-06-17 | 2027-06-18 | 607 | 2027-06-16 | 2027-06-18 | 2d | 38.62d | 0d | 46,410,609.01 | 46,410,609.01 |  | Día 23 | Día 270,555555555556 | Día 268,777777777778 |
| 609 | 10.30.14 | TAPADO AREA DE CIMENTACIÓN Y CONFORMACIÓN DE PLATAFORMA WP31 |  | 10d | 2027-06-17 | 2027-06-26 | 607, 557, 558 | 2027-06-16 | 2027-06-26 | 10d | 32.62d | 0d | 1,587,346,329.55 | 1,587,346,329.55 |  | Día 23 | Día 277,666666666667 | Día 268,777777777778 |
| 610 | 10.30.15 | ESTABILIZACIÓN DE TALUDES EN PLATAFORMA Y RECONFORMACION FINAL WP31 |  | 12d | 2027-06-18 | 2027-07-01 | 608SS+2d, 559, 609SS+2d | 2027-06-18 | 2027-07-01 | 12d | 38.62d | 0d | 179,532,477.24 | 179,532,477.24 |  |  | Día 281,222222222222 | Día 270,555555555556 |
| 611 | 10.30.16 | HITO: FINALIZACION DE ACTIVIDADES EN CIMENTACION WP31 | milestone | 0d | 2027-07-01 | 2027-07-01 | 610, 594 | 2027-07-01 | 2027-07-01 | 0d | 50.62d | 8d |  |  |  | Día 0 | Día 281,222222222222 | Día 281,222222222222 |
| 612 | 10.31 | **CIMENTACION WP35** |  | 72d | 2027-04-22 | 2027-07-10 |  | 2027-04-21 | 2027-07-10 | 72d | 18.62d |  | 5,308,872,732.05 | 5,308,872,732.05 | GRUPO 1 | Día 0 | Día 288,333333333333 | Día 224,333333333333 |
| 613 | 10.31.1 | LOCALIZACION, REPLANTEO Y DESBROCE DE AREA DE ACOPIO DE TORRE Y DE PALAS WP35 |  | 8d | 2027-04-22 | 2027-04-30 | 596, 18, 20, 19, 17 | 2027-04-21 | 2027-04-29 | 8d | 18.62d | 0d | 83,271,780.88 | 83,271,780.88 |  |  | Día 231,444444444444 | Día 224,333333333333 |
| 614 | 10.31.2 | EXCAVACIÓN DE CIMENTACION WP35 |  | 7d | 2027-04-30 | 2027-05-07 | 613, 563, 597 | 2027-04-29 | 2027-05-07 | 7d | 20.62d | 0d | 312,374,505.67 | 312,374,505.67 |  | Día 23 | Día 237,666666666667 | Día 231,444444444444 |
| 615 | 10.31.3 | BANCO DE DUCTO WP35 |  | 3d | 2027-05-07 | 2027-05-12 | 614 | 2027-05-07 | 2027-05-11 | 3d | 22.62d | 0d | 9,527,825.69 | 9,527,825.69 |  |  | Día 240,333333333333 | Día 237,666666666667 |
| 616 | 10.31.4 | COMPACTACION DE SELLO DE BASE WP35 |  | 4d | 2027-05-12 | 2027-05-15 | 615 | 2027-05-11 | 2027-05-15 | 4d | 22.62d | 0d | 320,494,616.72 | 320,494,616.72 |  | Día 30 | Día 243,888888888889 | Día 240,333333333333 |
| 617 | 10.31.5 | SOLADO WP35 |  | 2d | 2027-05-15 | 2027-05-18 | 616, 568 | 2027-05-15 | 2027-05-18 | 2d | 22.62d | 0d | 94,303,618.55 | 94,303,618.55 |  | Día 28 | Día 245,666666666667 | Día 243,888888888889 |
| 618 | 10.31.6 | INSTALACIÓN DE PERNOS Y SOFT-SPOT WP35 |  | 5d | 2027-05-18 | 2027-05-24 | 617 | 2027-05-18 | 2027-05-22 | 5d | 22.62d | 0d | 179,436,034.15 | 179,436,034.15 |  | Día 30 | Día 250,111111111111 | Día 245,666666666667 |
| 619 | 10.31.7 | INSTALACIÓN DE ACERO DE REFUERZO WP35 |  | 15d | 2027-05-24 | 2027-06-10 | 618 | 2027-05-22 | 2027-06-10 | 15d | 22.62d | 0d | 1,212,623,361.21 | 1,212,623,361.21 |  |  | Día 263,444444444444 | Día 250,111111111111 |
| 620 | 10.31.8 | ENCOFRADO DE ZAPATA Y DE PEDESTAL WP35 |  | 3d | 2027-06-10 | 2027-06-14 | 619 | 2027-06-10 | 2027-06-12 | 3d | 32.62d | 0d |  |  |  |  | Día 266,111111111111 | Día 263,444444444444 |
| 621 | 10.31.9 | HITO: ALISTAMIENTO Y MOVILIZACIÓN DE PLANTA DE CONCRETO PARA WP35 | milestone | 0d | 2027-06-10 | 2027-06-10 | 619 | 2027-06-10 | 2027-06-10 | 0d | 35.62d | 3d |  |  |  | Día 0 | Día 263,444444444444 | Día 263,444444444444 |
| 622 | 10.31.10 | FUNDIDA WP35 |  | 1d | 2027-06-14 | 2027-06-15 | 620, 621 | 2027-06-12 | 2027-06-14 | 1d | 32.62d | 0d | 1,230,815,225.95 | 1,230,815,225.95 |  |  | Día 267 | Día 266,111111111111 |
| 623 | 10.31.11 | CURADO DEL CONCRETO WP35 |  | 7d | 2027-06-15 | 2027-06-22 | 622 | 2027-06-14 | 2027-06-22 | 7d | 32.62d | 0d |  |  |  |  | Día 273,222222222222 | Día 267 |
| 624 | 10.31.12 | INSTALACIONES ELECTRICAS Y SISTEMA PUESTA TIERRA WP35 |  | 3d | 2027-06-22 | 2027-06-25 | 623 | 2027-06-22 | 2027-06-24 | 3d | 32.62d | 0d | 52,736,347.43 | 52,736,347.43 |  | Día 28 | Día 275,888888888889 | Día 273,222222222222 |
| 625 | 10.31.13 | INSTALACION DE GROUT Y MORTERO AUTOCOMPACTANTE DE ALTA RESISTENCIA WP35 |  | 2d | 2027-06-25 | 2027-06-26 | 624 | 2027-06-24 | 2027-06-26 | 2d | 32.62d | 0d | 46,410,609.01 | 46,410,609.01 |  | Día 23 | Día 277,666666666667 | Día 275,888888888889 |
| 626 | 10.31.14 | TAPADO AREA DE CIMENTACIÓN Y CONFORMACIÓN DE PLATAFORMA WP35 |  | 10d | 2027-06-25 | 2027-07-07 | 624, 574, 575 | 2027-06-24 | 2027-07-06 | 10d | 32.62d | 0d | 1,587,346,329.55 | 1,587,346,329.55 |  | Día 23 | Día 284,777777777778 | Día 275,888888888889 |
| 627 | 10.31.15 | ESTABILIZACIÓN DE TALUDES EN PLATAFORMA Y RECONFORMACION FINAL WP35 |  | 12d | 2027-06-28 | 2027-07-10 | 625, 576, 626SS+2d | 2027-06-26 | 2027-07-10 | 12d | 32.62d | 0d | 179,532,477.24 | 179,532,477.24 |  |  | Día 288,333333333333 | Día 277,666666666667 |
| 628 | 10.31.16 | HITO: FINALIZACION DE ACTIVIDADES EN CIMENTACION WP35 | milestone | 0d | 2027-07-10 | 2027-07-10 | 627, 611 | 2027-07-10 | 2027-07-10 | 0d | 42.62d | 8d |  |  |  | Día 0 | Día 288,333333333333 | Día 288,333333333333 |

| ID | WBS | Task | Type | Duration | Start | Finish | Predecessors | Baseline start | Baseline finish | Baseline duration | Total slack | Free slack | Cost | Baseline cost | GRUPO DE EJECUCION | Text20 | Text21 | Text30 |
| --- | --- | --- | --- | --- | --- | --- | --- | --- | --- | --- | --- | --- | --- | --- | --- | --- | --- | --- |
| 629 | 10.32 | **CIMENTACION WP34** |  | 72d | 2027-04-30 | 2027-07-21 |  | 2027-04-29 | 2027-07-21 | 72d | 18.62d |  | 5,308,872,732.05 | 5,308,872,732.05 | GRUPO 2 | Día 0 | Día 295,444444444444 | Día 231,444444444444 |
| 630 | 10.32.1 | LOCALIZACION, REPLANTEO Y DESBROCE DE AREA DE ACOPIO DE TORRE Y DE PALAS WP34 |  | 8d | 2027-04-30 | 2027-05-08 | 613, 18, 20, 19, 17 | 2027-04-29 | 2027-05-08 | 8d | 18.62d | 0d | 83,271,780.88 | 83,271,780.88 |  |  | Día 238,555555555556 | Día 231,444444444444 |
| 631 | 10.32.2 | EXCAVACIÓN DE CIMENTACION WP34 |  | 7d | 2027-05-08 | 2027-05-17 | 630, 580, 614 | 2027-05-08 | 2027-05-17 | 7d | 19.62d | 0d | 312,374,505.67 | 312,374,505.67 |  | Día 23 | Día 244,777777777778 | Día 238,555555555556 |
| 632 | 10.32.3 | BANCO DE DUCTO WP34 |  | 3d | 2027-05-17 | 2027-05-20 | 631 | 2027-05-17 | 2027-05-20 | 3d | 34.62d | 0d | 9,527,825.69 | 9,527,825.69 |  |  | Día 247,444444444444 | Día 244,777777777778 |
| 633 | 10.32.4 | COMPACTACION DE SELLO DE BASE WP34 |  | 4d | 2027-05-20 | 2027-05-25 | 632 | 2027-05-20 | 2027-05-24 | 4d | 34.62d | 0d | 320,494,616.72 | 320,494,616.72 |  | Día 30 | Día 251 | Día 247,444444444444 |
| 634 | 10.32.5 | SOLADO WP34 |  | 2d | 2027-05-25 | 2027-05-26 | 633, 585 | 2027-05-24 | 2027-05-26 | 2d | 34.62d | 0d | 94,303,618.55 | 94,303,618.55 |  | Día 28 | Día 252,777777777778 | Día 251 |
| 635 | 10.32.6 | INSTALACIÓN DE PERNOS Y SOFT-SPOT WP34 |  | 5d | 2027-05-26 | 2027-06-02 | 634 | 2027-05-26 | 2027-06-01 | 5d | 34.62d | 0d | 179,436,034.15 | 179,436,034.15 |  | Día 30 | Día 257,222222222222 | Día 252,777777777778 |
| 636 | 10.32.7 | INSTALACIÓN DE ACERO DE REFUERZO WP34 |  | 15d | 2027-06-02 | 2027-06-18 | 635 | 2027-06-02 | 2027-06-18 | 15d | 34.62d | 0d | 1,212,623,361.21 | 1,212,623,361.21 |  |  | Día 270,555555555556 | Día 257,222222222222 |
| 637 | 10.32.8 | ENCOFRADO DE ZAPATA Y DE PEDESTAL WP34 |  | 3d | 2027-06-18 | 2027-06-22 | 636 | 2027-06-18 | 2027-06-22 | 3d | 34.62d | 0d |  |  |  |  | Día 273,222222222222 | Día 270,555555555556 |
| 638 | 10.32.9 | HITO: ALISTAMIENTO Y MOVILIZACIÓN DE PLANTA DE CONCRETO PARA WP34 | milestone | 0d | 2027-06-18 | 2027-06-18 | 636 | 2027-06-18 | 2027-06-18 | 0d | 37.62d | 3d |  |  |  | Día 0 | Día 270,555555555556 | Día 270,555555555556 |
| 639 | 10.32.10 | FUNDIDA WP34 |  | 1d | 2027-06-22 | 2027-06-23 | 637, 638 | 2027-06-22 | 2027-06-23 | 1d | 34.62d | 0d | 1,230,815,225.95 | 1,230,815,225.95 |  |  | Día 274,111111111111 | Día 273,222222222222 |
| 640 | 10.32.11 | CURADO DEL CONCRETO WP34 |  | 7d | 2027-06-23 | 2027-06-30 | 639 | 2027-06-23 | 2027-06-30 | 7d | 34.62d | 0d |  |  |  |  | Día 280,333333333333 | Día 274,111111111111 |
| 641 | 10.32.12 | INSTALACIONES ELECTRICAS Y SISTEMA PUESTA TIERRA WP34 |  | 3d | 2027-06-30 | 2027-07-03 | 640 | 2027-06-30 | 2027-07-03 | 3d | 34.62d | 0d | 52,736,347.43 | 52,736,347.43 |  | Día 28 | Día 283 | Día 280,333333333333 |
| 642 | 10.32.13 | INSTALACION DE GROUT Y MORTERO AUTOCOMPACTANTE DE ALTA RESISTENCIA WP34 |  | 2d | 2027-07-03 | 2027-07-07 | 641 | 2027-07-03 | 2027-07-06 | 2d | 34.62d | 0d | 46,410,609.01 | 46,410,609.01 |  | Día 23 | Día 284,777777777778 | Día 283 |
| 643 | 10.32.14 | TAPADO AREA DE CIMENTACIÓN Y CONFORMACIÓN DE PLATAFORMA WP34 |  | 10d | 2027-07-03 | 2027-07-16 | 641, 591, 592 | 2027-07-03 | 2027-07-15 | 10d | 34.62d | 0d | 1,587,346,329.55 | 1,587,346,329.55 |  | Día 23 | Día 291,888888888889 | Día 283 |
| 644 | 10.32.15 | ESTABILIZACIÓN DE TALUDES EN PLATAFORMA Y RECONFORMACION FINAL WP34 |  | 12d | 2027-07-07 | 2027-07-21 | 642, 593, 643SS+2d | 2027-07-06 | 2027-07-21 | 12d | 34.62d | 0d | 179,532,477.24 | 179,532,477.24 |  |  | Día 295,444444444444 | Día 284,777777777778 |
| 645 | 10.32.16 | HITO: FINALIZACION DE ACTIVIDADES EN CIMENTACION WP34 | milestone | 0d | 2027-07-21 | 2027-07-21 | 644, 628 | 2027-07-21 | 2027-07-21 | 0d | 34.62d | 8d |  |  |  | Día 0 | Día 295,444444444444 | Día 295,444444444444 |
| 646 | 10.33 | **CIMENTACION WP33** |  | 72d | 2027-05-08 | 2027-07-30 |  | 2027-05-08 | 2027-07-29 | 72d | 18.62d |  | 5,308,872,732.05 | 5,308,872,732.05 | GRUPO 3 | Día 0 | Día 302,555555555556 | Día 238,555555555556 |
| 647 | 10.33.1 | LOCALIZACION, REPLANTEO Y DESBROCE DE AREA DE ACOPIO DE TORRE Y DE PALAS WP33 |  | 8d | 2027-05-08 | 2027-05-18 | 630, 18, 20, 19, 17 | 2027-05-08 | 2027-05-18 | 8d | 18.62d | 0d | 83,271,780.88 | 83,271,780.88 |  |  | Día 245,666666666667 | Día 238,555555555556 |
| 648 | 10.33.2 | EXCAVACIÓN DE CIMENTACION WP33 |  | 7d | 2027-05-18 | 2027-05-25 | 647, 597, 631 | 2027-05-18 | 2027-05-25 | 7d | 18.62d | 0d | 312,374,505.67 | 312,374,505.67 |  | Día 23 | Día 251,888888888889 | Día 245,666666666667 |
| 649 | 10.33.3 | BANCO DE DUCTO WP33 |  | 3d | 2027-05-26 | 2027-05-28 | 648 | 2027-05-25 | 2027-05-28 | 3d | 18.62d | 0d | 9,527,825.69 | 9,527,825.69 |  |  | Día 254,555555555556 | Día 251,888888888889 |
| 650 | 10.33.4 | COMPACTACION DE SELLO DE BASE WP33 |  | 4d | 2027-05-28 | 2027-06-03 | 649 | 2027-05-28 | 2027-06-02 | 4d | 18.62d | 0d | 320,494,616.72 | 320,494,616.72 |  | Día 30 | Día 258,111111111111 | Día 254,555555555556 |
| 651 | 10.33.5 | SOLADO WP33 |  | 2d | 2027-06-03 | 2027-06-04 | 650, 602 | 2027-06-02 | 2027-06-04 | 2d | 18.62d | 0d | 94,303,618.55 | 94,303,618.55 |  | Día 28 | Día 259,888888888889 | Día 258,111111111111 |
| 652 | 10.33.6 | INSTALACIÓN DE PERNOS Y SOFT-SPOT WP33 |  | 5d | 2027-06-05 | 2027-06-11 | 651 | 2027-06-04 | 2027-06-11 | 5d | 18.62d | 0d | 179,436,034.15 | 179,436,034.15 |  | Día 30 | Día 264,333333333333 | Día 259,888888888889 |
| 653 | 10.33.7 | INSTALACIÓN DE ACERO DE REFUERZO WP33 |  | 15d | 2027-06-11 | 2027-06-26 | 652 | 2027-06-11 | 2027-06-26 | 15d | 18.62d | 0d | 1,212,623,361.21 | 1,212,623,361.21 |  |  | Día 277,666666666667 | Día 264,333333333333 |
| 654 | 10.33.8 | ENCOFRADO DE ZAPATA Y DE PEDESTAL WP33 |  | 3d | 2027-06-28 | 2027-06-30 | 653 | 2027-06-26 | 2027-06-30 | 3d | 18.62d | 0d |  |  |  |  | Día 280,333333333333 | Día 277,666666666667 |
| 655 | 10.33.9 | HITO: ALISTAMIENTO Y MOVILIZACIÓN DE PLANTA DE CONCRETO PARA WP33 | milestone | 0d | 2027-06-26 | 2027-06-26 | 653 | 2027-06-26 | 2027-06-26 | 0d | 21.62d | 3d |  |  |  | Día 0 | Día 277,666666666667 | Día 277,666666666667 |
| 656 | 10.33.10 | FUNDIDA WP33 |  | 1d | 2027-06-30 | 2027-07-01 | 654, 655 | 2027-06-30 | 2027-07-01 | 1d | 18.62d | 0d | 1,230,815,225.95 | 1,230,815,225.95 |  |  | Día 281,222222222222 | Día 280,333333333333 |
| 657 | 10.33.11 | CURADO DEL CONCRETO WP33 |  | 7d | 2027-07-01 | 2027-07-09 | 656 | 2027-07-01 | 2027-07-09 | 7d | 18.62d | 0d |  |  |  |  | Día 287,444444444444 | Día 281,222222222222 |
| 658 | 10.33.12 | INSTALACIONES ELECTRICAS Y SISTEMA PUESTA TIERRA WP33 |  | 3d | 2027-07-09 | 2027-07-14 | 657 | 2027-07-09 | 2027-07-14 | 3d | 18.62d | 0d | 52,736,347.43 | 52,736,347.43 |  | Día 28 | Día 290,111111111111 | Día 287,444444444444 |
| 659 | 10.33.13 | INSTALACION DE GROUT Y MORTERO AUTOCOMPACTANTE DE ALTA RESISTENCIA WP33 |  | 2d | 2027-07-14 | 2027-07-16 | 658 | 2027-07-14 | 2027-07-15 | 2d | 26.62d | 0d | 46,410,609.01 | 46,410,609.01 |  | Día 23 | Día 291,888888888889 | Día 290,111111111111 |
| 660 | 10.33.14 | TAPADO AREA DE CIMENTACIÓN Y CONFORMACIÓN DE PLATAFORMA WP33 |  | 10d | 2027-07-14 | 2027-07-26 | 658, 608, 609 | 2027-07-14 | 2027-07-26 | 10d | 18.62d | 0d | 1,587,346,329.55 | 1,587,346,329.55 |  | Día 23 | Día 299 | Día 290,111111111111 |
| 661 | 10.33.15 | ESTABILIZACIÓN DE TALUDES EN PLATAFORMA Y RECONFORMACION FINAL WP33 |  | 12d | 2027-07-16 | 2027-07-30 | 659, 610, 660SS+2d | 2027-07-16 | 2027-07-29 | 12d | 26.62d | 0d | 179,532,477.24 | 179,532,477.24 |  |  | Día 302,555555555556 | Día 291,888888888889 |
| 662 | 10.33.16 | HITO: FINALIZACION DE ACTIVIDADES EN CIMENTACION WP33 | milestone | 0d | 2027-07-30 | 2027-07-30 | 661, 645 | 2027-07-29 | 2027-07-29 | 0d | 26.62d | 8d |  |  |  | Día 0 | Día 302,555555555556 | Día 302,555555555556 |

| ID | WBS | Task | Type | Duration | Start | Finish | Predecessors | Baseline start | Baseline finish | Baseline duration | Total slack | Free slack | Cost | Baseline cost | GRUPO DE EJECUCION | Text20 | Text21 | Text30 |
| --- | --- | --- | --- | --- | --- | --- | --- | --- | --- | --- | --- | --- | --- | --- | --- | --- | --- | --- |
| 663 | 10.34 | **CIMENTACION WP32** |  | 72d | 2027-05-18 | 2027-08-07 |  | 2027-05-18 | 2027-08-07 | 72d | 18.62d |  | 5,328,575,640.93 | 5,328,575,640.93 | GRUPO 1 | Día 0 | Día 309,666666666667 | Día 245,666666666667 |
| 664 | 10.34.1 | LOCALIZACION, REPLANTEO Y DESBROCE DE AREA DE ACOPIO DE TORRE Y DE PALAS WP32 |  | 8d | 2027-05-18 | 2027-05-26 | 647, 18, 20, 19, 17 | 2027-05-18 | 2027-05-26 | 8d | 20.62d | 0d | 83,271,780.88 | 83,271,780.88 |  |  | Día 252,777777777778 | Día 245,666666666667 |
| 665 | 10.34.2 | EXCAVACIÓN DE CIMENTACION WP32 |  | 7d | 2027-05-26 | 2027-06-04 | 664, 614 | 2027-05-26 | 2027-06-03 | 7d | 20.62d | 0d | 312,374,505.67 | 312,374,505.67 |  | Día 23 | Día 259 | Día 252,777777777778 |
| 666 | 10.34.3 | BANCO DE DUCTO WP32 |  | 3d | 2027-06-04 | 2027-06-08 | 665 | 2027-06-03 | 2027-06-08 | 3d | 20.62d | 0d | 9,527,825.69 | 9,527,825.69 |  |  | Día 261,666666666667 | Día 259 |
| 667 | 10.34.4 | COMPACTACION DE SELLO DE BASE WP32 |  | 4d | 2027-06-08 | 2027-06-12 | 666 | 2027-06-08 | 2027-06-11 | 4d | 20.62d | 0d | 320,494,616.72 | 320,494,616.72 |  | Día 30 | Día 265,222222222222 | Día 261,666666666667 |
| 668 | 10.34.5 | SOLADO WP32 |  | 2d | 2027-06-12 | 2027-06-15 | 667, 619 | 2027-06-12 | 2027-06-14 | 2d | 20.62d | 0d | 94,303,618.55 | 94,303,618.55 |  | Día 28 | Día 267 | Día 265,222222222222 |
| 669 | 10.34.6 | INSTALACIÓN DE PERNOS Y SOFT-SPOT WP32 |  | 5d | 2027-06-15 | 2027-06-19 | 668 | 2027-06-14 | 2027-06-19 | 5d | 20.62d | 0d | 179,436,034.15 | 179,436,034.15 |  | Día 30 | Día 271,444444444444 | Día 267 |
| 670 | 10.34.7 | INSTALACIÓN DE ACERO DE REFUERZO WP32 |  | 15d | 2027-06-19 | 2027-07-07 | 669 | 2027-06-19 | 2027-07-06 | 15d | 20.62d | 0d | 1,212,623,361.21 | 1,212,623,361.21 |  |  | Día 284,777777777778 | Día 271,444444444444 |
| 671 | 10.34.8 | ENCOFRADO DE ZAPATA Y DE PEDESTAL WP32 |  | 3d | 2027-07-07 | 2027-07-09 | 670 | 2027-07-06 | 2027-07-09 | 3d | 20.62d | 0d |  |  |  |  | Día 287,444444444444 | Día 284,777777777778 |
| 672 | 10.34.9 | HITO: ALISTAMIENTO Y MOVILIZACIÓN DE PLANTA DE CONCRETO PARA WP32 | milestone | 0d | 2027-07-07 | 2027-07-07 | 670 | 2027-07-06 | 2027-07-06 | 0d | 23.62d | 3d |  |  |  | Día 0 | Día 284,777777777778 | Día 284,777777777778 |
| 673 | 10.34.10 | FUNDIDA WP32 |  | 1d | 2027-07-09 | 2027-07-10 | 671, 672 | 2027-07-09 | 2027-07-10 | 1d | 20.62d | 0d | 1,230,815,225.95 | 1,230,815,225.95 |  |  | Día 288,333333333333 | Día 287,444444444444 |
| 674 | 10.34.11 | CURADO DEL CONCRETO WP32 |  | 7d | 2027-07-10 | 2027-07-21 | 673 | 2027-07-10 | 2027-07-19 | 7d | 20.62d | 0d |  |  |  |  | Día 294,555555555556 | Día 288,333333333333 |
| 675 | 10.34.12 | INSTALACIONES ELECTRICAS Y SISTEMA PUESTA TIERRA WP32 |  | 3d | 2027-07-21 | 2027-07-23 | 674 | 2027-07-19 | 2027-07-23 | 3d | 20.62d | 0d | 72,439,256.31 | 72,439,256.31 |  | Día 28 | Día 297,222222222222 | Día 294,555555555556 |
| 676 | 10.34.13 | INSTALACION DE GROUT Y MORTERO AUTOCOMPACTANTE DE ALTA RESISTENCIA WP32 |  | 2d | 2027-07-23 | 2027-07-26 | 675 | 2027-07-23 | 2027-07-26 | 2d | 20.62d | 2d | 46,410,609.01 | 46,410,609.01 |  | Día 23 | Día 299 | Día 297,222222222222 |
| 677 | 10.34.14 | TAPADO AREA DE CIMENTACIÓN Y CONFORMACIÓN DE PLATAFORMA WP32 |  | 10d | 2027-07-26 | 2027-08-05 | 675, 660, 626 | 2027-07-26 | 2027-08-05 | 10d | 18.62d | 0d | 1,587,346,329.55 | 1,587,346,329.55 |  | Día 23 | Día 307,888888888889 | Día 299 |
| 678 | 10.34.15 | ESTABILIZACIÓN DE TALUDES EN PLATAFORMA Y RECONFORMACION FINAL WP32 |  | 10d | 2027-07-28 | 2027-08-07 | 676, 627, 677SS+2d | 2027-07-28 | 2027-08-07 | 10d | 18.62d | 0d | 179,532,477.24 | 179,532,477.24 |  |  | Día 309,666666666667 | Día 300,777777777778 |
| 679 | 10.34.16 | HITO: FINALIZACION DE ACTIVIDADES EN CIMENTACION WP32 | milestone | 0d | 2027-08-07 | 2027-08-07 | 678, 662 | 2027-08-07 | 2027-08-07 | 0d | 18.62d | 0d |  |  |  | Día 0 | Día 309,666666666667 | Día 309,666666666667 |
| 680 | 10.35 | HITO 4: FIN DE CIMENTACIONES NUEVAS | milestone | 0d | 2027-08-07 | 2027-08-07 | 678, 30, 29, 661, 644, 677, 643, 679 | 2027-08-07 | 2027-08-07 | 0d | 18.62d |  |  |  |  | Día 240 | Día 309,666666666667 | Día 309,666666666667 |
| 681 | 11 | **EJECUCIÓN DE ACTIVIDADES CONFORMACIÓN DE ZODMES** |  | 301.38d | 2026-09-05 | 2027-08-07 |  | 2026-08-12 | 2027-08-05 | 321d | 0d |  | 909,298,559.99 | 909,298,559.99 |  | Día 0 | Día 309,666666666667 | Día 41,7777777777778 |
| 682 | 11.1 | CONFORMACIÓN DE ZODMES 1,3,4,6,8 |  | 120d | 2026-09-05 | 2027-01-18 | 38 | 2026-08-12 | 2026-12-22 | 120d | 0d |  | 216,499,657.14 | 216,499,657.14 |  |  | Día 148,444444444444 | Día 41,7777777777778 |
| 683 | 11.2 | CONFORMACIÓN DE ZODMES 2,5,7 |  | 100d | 2026-09-08 | 2026-12-28 | 137 | 2026-08-31 | 2026-12-19 | 100d | 107.75d | 89.12d | 129,899,794.29 | 129,899,794.29 |  | Día 23 | Día 132,666666666667 | Día 43,7777777777778 |
| 684 | 11.3 | CONFORMACIÓN DE ZODMES 9,10,11,12,14 |  | 160d | 2026-10-08 | 2027-04-07 | 205 | 2026-09-30 | 2027-03-29 | 160d | 128.88d |  | 216,499,657.14 | 216,499,657.14 |  |  | Día 211,666666666667 | Día 69,4444444444444 |
| 685 | 11.4 | CONFORMACIÓN DE ZODMES 13,15,16,18 |  | 140d | 2027-01-18 | 2027-06-22 | 273SS, 682 | 2026-12-22 | 2027-05-27 | 140d | 0d |  | 173,199,725.71 | 173,199,725.71 |  | Día 30 | Día 272,888888888889 | Día 148,444444444444 |
| 686 | 11.5 | CONFORMACIÓN DE ZODMES 17,19,20,21 |  | 110d | 2027-04-07 | 2027-08-07 | 562, 683 | 2027-04-05 | 2027-08-05 | 110d | 18.62d |  | 173,199,725.71 | 173,199,725.71 |  | Día 28 | Día 309,666666666667 | Día 211,888888888889 |

| ID | WBS | Task | Type | Duration | Start | Finish | Predecessors | Baseline start | Baseline finish | Baseline duration | Total slack | Cost | Baseline cost | Text20 | Text21 | Text30 |
| --- | --- | --- | --- | --- | --- | --- | --- | --- | --- | --- | --- | --- | --- | --- | --- | --- |
| 687 | 12 | **EJECUCIÓN DE ACTIVIDADES POR LLAMADO DE MAQUINARIA, EQUIPOS Y PERSONAL** |  | 60d | 2027-06-22 | 2027-08-28 |  | 2027-05-27 | 2027-08-04 | 60d | 0d | 11,729,331,452.1 | 11,729,331,452.1 | Día 0 | Día 326,222222222222 | Día 272,888888888889 |
| 688 | 12.1 | EQUIPOS Y/O HERRAMIENTAS POR LLLAMADO |  | 60d | 2027-06-22 | 2027-08-28 | 28, 25, 685 | 2027-05-27 | 2027-08-04 | 60d | 0d | 3,265,847,514.6 | 3,265,847,514.6 |  | Día 326,222222222222 | Día 272,888888888889 |
| 689 | 12.2 | ACTIVIDADES Y SUMINISTRO DE PERSONAL POR LLAMADO |  | 60d | 2027-06-22 | 2027-08-28 | 25, 28, 685 | 2027-05-27 | 2027-08-04 | 60d | 0d | 8,463,483,937.5 | 8,463,483,937.5 | Día 23 | Día 326,222222222222 | Día 272,888888888889 |
| 690 | 13 | HITO 5: FIN DE ACTIVIDADES DE OBRA | milestone | 0d | 2027-08-28 | 2027-08-28 | 678, 30, 29, 680, 684, 685, 686, 660, 688, 689 | 2027-08-07 | 2027-08-07 | 0d | 0d |  |  | Día 240 | Día 326,222222222222 | Día 326,222222222222 |
| 691 | 14 | **ACTIVIDADES FINALES** |  | 9d | 2027-08-28 | 2027-09-07 |  | 2027-08-07 | 2027-08-18 | 9d | 0d |  |  | Día 0 | Día 334,222222222222 | Día 326,222222222222 |
| 692 | 14.1 | DESMOVILIZACION |  | 9d | 2027-08-28 | 2027-09-07 | 690, 35 | 2027-08-07 | 2027-08-18 | 9d | 0d |  |  |  | Día 334,222222222222 | Día 326,222222222222 |
| 693 | 14.2 | CIERRES ADMINISTRATIVOS Y GESTIÓN DE ENTORNO FINAL |  | 9d | 2027-08-28 | 2027-09-07 | 690 | 2027-08-07 | 2027-08-18 | 9d | 0d |  |  |  | Día 334,222222222222 | Día 326,222222222222 |
| 694 | 14.3 | CONFORMACIÓN Y ENTREGA DE DOSSIER |  | 9d | 2027-08-28 | 2027-09-07 | 690 | 2027-08-07 | 2027-08-18 | 9d | 0d |  |  |  | Día 334,222222222222 | Día 326,222222222222 |
| 695 | 15 | HITO 6: ACTA DE TERMINACIÓN DE LA ODS | milestone | 0d | 2027-09-07 | 2027-09-07 | 678, 30, 29, 680, 692, 693, 694 | 2027-08-18 | 2027-08-18 | 0d | 0d |  |  | Día 240 | Día 334,222222222222 | Día 334,222222222222 |
